# Aditya Smelter - 180 pots expansion project

Schedule from Primavera P6, 2025-02-26 to 2028-03-31, data date 2025-10-31, A marks actual dates.
Must finish by 2028-03-31

## Calendars

- AS: Mon-Sat 08:00-12:00, 13:00-17:00; Sun off. Exceptions (off unless hours are given): 2025-05-01, 2025-06-27, 2025-08-15, 2025-08-28, 2025-09-17, 2025-10-02, 2025-10-21, 2025-11-05, 2025-12-25, 2026-01-26, 2026-03-04, 2026-05-01, 2026-07-16, 2026-08-15, 2026-08-28, 2026-09-17, 2026-10-02, 2026-11-05, 2026-12-25, 2027-01-26, 2027-02-26, 2027-03-15, 2027-05-01, 2027-08-28, 2027-09-17, 2027-10-02, 2027-10-29, 2027-11-05, 2027-12-25, 2028-01-26, 2028-02-26, 2028-03-15.

## Schedule

| ID | WBS | Activity | Type | Duration | Start | Finish | Predecessors | Complete | Remaining | Planned start | Planned finish | Total float | Free float | Text2 | Text4 |
| --- | --- | --- | --- | --- | --- | --- | --- | --- | --- | --- | --- | --- | --- | --- | --- |
|  | Pre Proj | **Pre-Project Activities** |  |  | 2025-02-26 | 2026-08-25 |  |  |  |  |  |  |  |  |  |
|  | GEN | **General activities** |  |  | 2025-02-26 | 2025-02-26 |  |  |  |  |  |  |  |  |  |
| AS1820 |  | CREC Approval | milestone | 0d | 2025-02-26 A | 2025-02-26 A |  | 100% |  |  |  |  |  | General activities | Pre-Project Activities |
|  | STAT | **Statutory activities** |  |  | 2025-02-26 | 2026-01-20 |  |  |  |  |  |  |  |  |  |
| AS5555 |  | Technical presentation with MoEF |  | 61d | 2025-02-26 A | 2025-05-08 A | AS1820 | 100% |  |  |  |  |  | Statutory activities | Pre-Project Activities |
| AS7600 |  | Railway Siding Permission |  | 156d | 2025-02-26 A | 2026-01-20 | AS1820 | 56% | 68d | 2025-02-26 | 2025-08-30 | 172d | 66d | Statutory activities | Pre-Project Activities |
| AS5556 |  | MOM from MoEF |  | 9d | 2025-05-09 A | 2025-05-19 A | AS5555 | 100% |  |  |  |  |  | Statutory activities | Pre-Project Activities |
| AS5560 |  | Environment clearance receipt | milestone | 0d | 2025-06-07 A | 2025-06-07 A | AS1820 FS+87d | 100% |  |  |  |  |  | Statutory activities | Pre-Project Activities |
| AS7540 |  | Consent To Establish (CTE) receipt | milestone | 0d | 2025-08-14 A | 2025-08-14 A | AS5560 FS+57d | 100% |  |  |  |  |  | Statutory activities | Pre-Project Activities |
|  | EN & OR | **Engineering & Ordering related activities** |  |  | 2025-02-26 | 2026-04-23 |  |  |  |  |  |  |  |  |  |
| AS1831 |  | MR for Rectifier |  | 1d | 2025-02-26 A | 2025-02-26 A | AS1820, AS7730 SS | 100% |  |  |  |  |  | Engineering & Ordering related activities | Pre-Project Activities |
| AS1833 |  | MR for GAP |  | 1d | 2025-02-26 A | 2025-02-26 A | AS1820, AS2000 SS | 100% |  |  |  |  |  | Engineering & Ordering related activities | Pre-Project Activities |
| AS1835 |  | MR for C&S of Potline and Rectifier |  | 29d | 2025-02-26 A | 2025-03-31 A | AS1820 | 100% |  |  |  |  |  | Engineering & Ordering related activities | Pre-Project Activities |
| AS1836 |  | MR for C&S of Carbon area and Cast house |  | 81d | 2025-02-26 A | 2025-07-07 A | AS1820 | 100% |  | 2025-02-26 | 2025-05-31 |  |  | Engineering & Ordering related activities | Pre-Project Activities |
| AS1837 |  | MR for Cooling tower |  | 132d | 2025-02-26 A | 2025-10-17 A | AS1820 | 100% |  | 2025-02-26 | 2025-07-31 |  |  | Engineering & Ordering related activities | Pre-Project Activities |
| AS1838 |  | MR for Alumina Handling |  | 1d | 2025-02-26 A | 2025-02-26 A | AS1820 | 100% |  |  |  |  |  | Engineering & Ordering related activities | Pre-Project Activities |
| AS1842 |  | MR for Civil & Structural (Alumina Silo) |  | 58d | 2025-02-26 A | 2025-05-05 A | AS1820 | 100% |  |  |  |  |  | Engineering & Ordering related activities | Pre-Project Activities |
| AS1844 |  | MR for Civil & Structural (Rodded Anode Storage) |  | 45d | 2025-02-26 A | 2025-04-18 A | AS1820 | 100% |  |  |  |  |  | Engineering & Ordering related activities | Pre-Project Activities |
| AS1844.01 |  | MR for Civil & Structural (Plant Buildings) |  | 121d | 2025-02-26 A | 2025-08-01 A | AS1820 | 100% |  | 2025-02-26 | 2025-07-18 |  |  | Engineering & Ordering related activities | Pre-Project Activities |
| AS1845 |  | Ordering of Area grading |  | 45d | 2025-02-26 A | 2025-04-18 A | AS1820 | 100% |  |  |  |  |  | Engineering & Ordering related activities | Pre-Project Activities |
| AS1846 |  | Ordering of Fencing for project area |  | 67d | 2025-02-26 A | 2025-05-15 A | AS1820 | 100% |  |  |  |  |  | Engineering & Ordering related activities | Pre-Project Activities |
| AS1848 |  | Ordering of Dismantling works |  | 131d | 2025-02-26 A | 2025-07-04 A | AS1820 | 100% |  | 2025-02-26 | 2025-07-30 |  |  | Engineering & Ordering related activities | Pre-Project Activities |
| AS1832 |  | MR for GTC |  | 1d | 2025-02-27 A | 2025-02-27 A | AS1820, AS1200 | 100% |  |  |  |  |  | Engineering & Ordering related activities | Pre-Project Activities |
| AS1834 |  | MR for FTC |  | 1d | 2025-02-27 A | 2025-02-27 A | AS1820, AS1280 | 100% |  |  |  |  |  | Engineering & Ordering related activities | Pre-Project Activities |
| AS1849 |  | Ordering of major packages - Rectifier |  | 79d | 2025-02-27 A | 2025-06-02 A | AS1831 | 100% |  | 2025-02-27 | 2025-05-30 |  |  | Engineering & Ordering related activities | Pre-Project Activities |
| AS1860 |  | Ordering of major packages - GAP |  | 111d | 2025-02-27 A | 2025-06-17 A | AS1833 | 100% |  | 2025-02-27 | 2025-07-08 |  |  | Engineering & Ordering related activities | Pre-Project Activities |
| AS1850 |  | Ordering of major packages - GTC |  | 107d | 2025-02-28 A | 2025-06-19 A | AS1832 | 100% |  | 2025-02-28 | 2025-07-04 |  |  | Engineering & Ordering related activities | Pre-Project Activities |
| AS1870 |  | Ordering of major packages - FTC |  | 130d | 2025-02-28 A | 2025-10-30 A | AS1834 | 100% |  | 2025-02-28 | 2025-07-31 |  |  | Engineering & Ordering related activities | Pre-Project Activities |
| AS1880 |  | Ordering of major packages - Civil & Structural (Pot line & Rectifier) |  | 103d | 2025-04-01 A | 2025-08-23 A | AS1835 | 100% |  | 2025-04-01 | 2025-07-31 |  |  | Engineering & Ordering related activities | Pre-Project Activities |
| AS1971 |  | Ordering of major packages - Civil & Structural (Rodded Anode Storage) |  | 108d | 2025-04-19 A | 2025-11-10 | AS1844 | 93% | 8d | 2025-04-19 | 2025-08-26 | 42d | 0d | Engineering & Ordering related activities | Pre-Project Activities |
| AS1901 |  | Ordering of major packages - Alumina Handling |  | 180d | 2025-04-21 A | 2025-12-02 | AS1838 | 85% | 27d | 2025-02-27 | 2025-09-30 | 124d | 0d | Engineering & Ordering related activities | Pre-Project Activities |
| AS1991 |  | Ordering of Construction Management (PMC) |  | 85d | 2025-04-21 A | 2025-09-10 A | AS1820 FS+46d | 100% |  | 2025-04-21 | 2025-07-30 |  |  | Engineering & Ordering related activities | Pre-Project Activities |
| AS1844.11 |  | MR for Ladle Tapping & Tube Cleaning Shop (LTCS) |  | 27d | 2025-04-30 A | 2025-05-31 A | AS1230 | 100% |  |  |  |  |  | Engineering & Ordering related activities | Pre-Project Activities |
| AS1941 |  | Ordering of major packages - Civil & Structural (Alumina Silo) |  | 74d | 2025-05-06 A | 2025-08-23 A | AS1842 | 100% |  | 2025-05-06 | 2025-07-31 |  |  | Engineering & Ordering related activities | Pre-Project Activities |
| AS1847 |  | Ordering of Nallah Diversion work in Rectifier Area |  | 50d | 2025-06-02 A | 2025-08-26 A | AS1820 FS+81d | 100% |  | 2025-06-02 | 2025-07-30 |  |  | Engineering & Ordering related activities | Pre-Project Activities |
| AS1890 |  | Ordering of major packages - Civil & Structural (Carbon area & Cast house) |  | 75d | 2025-06-02 A | 2025-11-10 | AS1836 | 89% | 8d | 2025-06-02 | 2025-08-30 | 10d | 0d | Engineering & Ordering related activities | Pre-Project Activities |
| AS2071 |  | Ordering of PEB Sheds (Closed) - Structural |  | 105d | 2025-06-10 A | 2025-11-14 | AS1820 | 89% | 12d | 2025-09-15 | 2026-01-20 | 53d | 29d |  |  |
| AS2001 |  | Ordering of Ladle Transfer Station (LTS) shifting |  | 47d | 2025-06-23 A | 2025-09-26 A | AS1820 FS+99d | 100% |  | 2025-06-23 | 2025-08-18 |  |  | Engineering & Ordering related activities | Pre-Project Activities |
| AS1844.51 |  | MR for Anode Handling system |  | 5d | 2025-06-24 A | 2025-06-30 A | AS1820 FS+100d | 100% |  |  |  |  |  | Engineering & Ordering related activities | Pre-Project Activities |
| AS1839 |  | MR for Anode Rodding Shop |  | 26d | 2025-07-01 A | 2025-08-12 A | AS1820, AS1290 | 100% |  | 2025-07-01 | 2025-07-30 |  |  | Engineering & Ordering related activities | Pre-Project Activities |
| AS2051 |  | Ordering of Anode Handling system |  | 108d | 2025-07-14 A | 2025-12-20 | AS1844.51 | 60% | 43d | 2025-07-01 | 2025-11-10 | 148d | 0d | Engineering & Ordering related activities | Pre-Project Activities |
| AS2011 |  | Ordering of Ladle Tapping & Tube Cleaning Shop (LTCS) (Supply+Installation) |  | 149d | 2025-08-06 A | 2025-12-20 | AS1844.11 | 71% | 43d | 2025-06-02 | 2025-11-29 | 197d | 0d | Engineering & Ordering related activities | Pre-Project Activities |
| AS2061 |  | Ordering of Alloy Storage Shed Dismantling |  | 105d | 2025-08-09 A | 2025-09-26 A | AS1820 FS+130d | 100% |  | 2025-09-15 | 2026-01-20 |  |  |  |  |
| AS1981 |  | Ordering of major packages - Civil & Structural (Plant Buildings) |  | 76d | 2025-08-14 A | 2025-11-13 | AS1844.01 FS+11d | 86% | 11d | 2025-08-14 | 2025-11-17 | -1d | 0d | Engineering & Ordering related activities | Pre-Project Activities |
| AS1911 |  | Ordering of major packages - Anode Rodding Shop |  | 79d | 2025-09-03 A | 2025-12-26 | AS1839 FS+7d | 41% | 47d | 2025-09-15 | 2025-12-19 | 68d | 0d | Engineering & Ordering related activities | Pre-Project Activities |
| AS2081 |  | Ordering of PEB Sheds (Closed) - Civil |  | 45d | 2025-10-06 A | 2025-12-18 | AS1820 FS+183d | 9% | 41d | 2025-10-15 | 2025-12-08 | 24d | 0d |  |  |
| AS1891 |  | Ordering of major packages - Cooling tower |  | 81d | 2025-11-03 | 2026-02-07 | AS1837 FS+13d |  |  |  |  | 52d | 0d | Engineering & Ordering related activities | Pre-Project Activities |
| AS1844.41 |  | MR for Electrical works tender (Supply & Service) Smelter BoP |  | 1d | 2025-11-04 | 2025-11-04 | AS1080 FS+3d, AS1090, AS1100, AS1110, AS7770 SS, AS7780 SS |  |  |  |  | 75d | 0d | Engineering & Ordering related activities | Pre-Project Activities |
| AS2041 |  | Ordering of Electrical works (Supply & Service) Smelter BoP |  | 81d | 2025-11-07 | 2026-02-11 | AS1844.41 FS+1d |  |  |  |  | 75d | 0d | Engineering & Ordering related activities | Pre-Project Activities |
| AS2091 |  | Ordering of Hatch SME deployment |  | 81d | 2025-11-14 | 2026-02-18 | AS1820 FS+216d |  |  |  |  | 10d | 1d |  |  |
| AS1844.21 |  | MR for Coke Handling System (Platform & Rake extension) |  | 3d | 2025-11-18 | 2025-11-20 | AS1240 |  |  |  |  | 192d | 0d | Engineering & Ordering related activities | Pre-Project Activities |
| AS2021 |  | Ordering of Coke Handling System (Platform & Rake extension) |  | 83d | 2025-11-21 | 2026-02-27 | AS1844.21 |  |  |  |  | 192d | 0d | Engineering & Ordering related activities | Pre-Project Activities |
| AS2101 |  | Ordering of Storage Yard (Open) & Parking Space & Open shed |  | 82d | 2025-11-22 | 2026-02-27 | AS1820 FS+223d |  |  |  |  | 148d | 49d |  |  |
| AS1844.31 |  | MR for Mechanical works tender |  | 5d | 2025-12-10 | 2025-12-15 | AS1820 FS+238d |  |  |  |  | 30d | 0d | Engineering & Ordering related activities | Pre-Project Activities |
| AS2031 |  | Ordering of Mechanical works |  | 106d | 2025-12-18 | 2026-04-23 | AS1844.31 FS+2d |  |  |  |  | 30d | 0d | Engineering & Ordering related activities | Pre-Project Activities |
| AS2031.01 |  | Ordering of Utility works (Service) |  | 52d | 2026-01-01 | 2026-03-03 | AS2850 FS+15d |  |  |  |  | 166d | 156d |  |  |

Notes:
- AS1991: Notes: LOI issued to TQ Cert Services Pvt. Ltd.
- AS1981: Notes: Order forecast date is 17-Nov-25, as per advice of Project head and lead target date is considered as 30-Sep-25.

| ID | WBS | Activity | Type | Duration | Start | Finish | Predecessors | Complete | Remaining | Planned start | Planned finish | Total float | Free float | Text2 | Text4 | Notes |
| --- | --- | --- | --- | --- | --- | --- | --- | --- | --- | --- | --- | --- | --- | --- | --- | --- |
|  | ENABL | **Site enabling activities** |  |  | 2025-02-26 | 2026-08-25 |  |  |  |  |  |  |  |  |  |  |
| AS1900 |  | Soil investigation including report submission |  | 1d | 2025-02-26 A | 2025-02-26 A | AS1820 | 100% |  |  |  |  |  | Site enabling activities | Pre-Project Activities |  |
| AS1910 |  | Topographical survey & area mark up |  | 17d | 2025-02-26 A | 2025-03-17 A | AS1820 | 100% |  |  |  |  |  | Site enabling activities | Pre-Project Activities |  |
| AS1930 |  | Construction power availability |  | 131d | 2025-02-26 A | 2025-08-07 A | AS1820 | 100% |  | 2025-02-26 | 2025-07-30 |  |  | Site enabling activities | Pre-Project Activities |  |
| AS1940 |  | Construction & drinking water availability |  | 131d | 2025-02-26 A | 2025-09-29 A | AS1820 | 100% |  | 2025-02-26 | 2025-07-30 |  |  | Site enabling activities | Pre-Project Activities |  |
| AS1920 |  | Area clearing & grading (EGL to 210 Lvl) |  | 126d | 2025-05-02 A | 2026-01-15 | AS1845 FS+10d | 49% | 64d | 2025-05-02 | 2025-09-30 | 86d | 0d | Site enabling activities | Pre-Project Activities |  |
| AS1925 |  | Fencing of project area |  | 105d | 2025-05-16 A | 2025-11-29 | AS1846 | 76% | 25d | 2025-05-16 | 2025-09-19 | 86d | 0d | Site enabling activities | Pre-Project Activities |  |
| AS1918 |  | Tree Transplantation for Pot line area |  | 61d | 2025-05-20 A | 2025-08-01 A | AS5556 | 100% |  | 2025-05-20 | 2025-07-30 |  |  | Site enabling activities | Pre-Project Activities |  |
| AS1922 |  | Area grading and handover to agency - Pot line upto 210 lvl |  | 61d | 2025-05-20 A | 2025-09-15 A | AS1920 SS, AS1918 SS | 100% |  | 2025-05-20 | 2025-07-30 |  |  | Site enabling activities | Pre-Project Activities |  |
| AS1919 |  | Tree Transplantation for Rectifier area |  | 45d | 2025-06-09 A | 2025-07-03 A | AS5556 FS+17d | 100% |  | 2025-06-09 | 2025-07-31 |  |  | Site enabling activities | Pre-Project Activities |  |
| AS1924 |  | Area development for Precast yard, Batching plant |  | 45d | 2025-06-09 A | 2025-09-10 A | AS5560 | 100% |  | 2025-06-09 | 2025-07-31 |  |  | Site enabling activities | Pre-Project Activities |  |
| AS1923 |  | Area grading and handover to agency - Rectifier upto 210 lvl |  | 57d | 2025-06-23 A | 2025-09-15 A | AS1919 SS+12d | 100% |  | 2025-06-23 | 2025-08-30 |  |  | Site enabling activities | Pre-Project Activities | Excluding nallah diversion area |
| AS1940.01 |  | Dismatling of shed & cable rack in ABF Area |  | 14d | 2025-08-09 A | 2025-11-29 | AS1848 FS+13d |  | 25d | 2025-08-13 | 2025-08-30 | 75d | 0d | Site enabling activities | Pre-Project Activities |  |
| AS1940.02 |  | Shifting of Anode in ABF area |  | 8d | 2025-08-25 A | 2025-09-15 A | AS1848 FS+40d | 100% |  | 2025-08-21 | 2025-08-30 |  |  | Site enabling activities | Pre-Project Activities |  |
| AS1940.12 |  | Area grading and handover to agency - ABF |  | 24d | 2025-08-25 A | 2025-12-01 | AS1920 SS, AS1940.01, AS1940.02 | 96% | 1d | 2025-10-14 | 2025-11-12 | 75d | 37d | Site enabling activities | Pre-Project Activities |  |
| AS1923.01 |  | Nallah Diversion in Rectifier area |  | 50d | 2025-08-26 A | 2025-11-29 | AS1923 SS+6d, AS1847 | 50% | 25d | 2025-09-15 | 2025-11-15 | 131d | 0d | Site enabling activities | Pre-Project Activities |  |
| AS1940.22 |  | Shifting of Ladle Transfer Station |  | 51d | 2025-10-31 | 2025-12-31 | AS2001 FS+26d |  |  |  |  | 101d | 0d | Site enabling activities | Pre-Project Activities |  |
| AS1940.32 |  | Construction & Readiness of PEB Sheds (Closed) |  | 208d | 2025-12-19 | 2026-08-25 | AS2071, AS2081 |  |  |  |  | 24d | 14d |  |  | 6 to 8 months for handover. |
|  | MIL | **Project Key Milestones** |  |  | 2025-08-19 | 2028-03-31 |  |  |  |  |  |  |  |  |  |  |
| AS7550 |  | Ground Breaking / Start of construction | milestone | 0d | 2025-08-19 A | 2025-08-19 A | AS7540, AS1991 | 100% |  | 2025-09-15 | 2025-09-15 |  |  |  | Project Key Milestones |  |
| AS1000 |  | 200 MW RE RTC Power | milestone | 0d | 2027-06-30 | 2027-06-30 | AS1820 FS+710d |  |  |  |  | 226d | 227d |  | Project Key Milestones |  |
| AS1020 |  | GAP-Mechanical completion | milestone | 0d | 2027-10-16 | 2027-10-16 | AS1961 |  |  |  |  | 136d | 137d |  | Project Key Milestones |  |
| AS1030 |  | GTC-Mechanical completion | milestone | 0d | 2027-10-25 | 2027-10-25 | AS1960 |  |  |  |  | 129d | 130d |  | Project Key Milestones |  |
| AS1010 |  | Rectifier-Mechanical completion | milestone | 0d | 2027-10-30 | 2027-10-30 | AS1959 |  |  |  |  | 125d | 126d |  | Project Key Milestones |  |
| AS1040 |  | Pot room-Mechanical completion | milestone | 0d | 2027-10-30 | 2027-10-30 | AS1958 |  |  |  |  | 125d | 126d |  | Project Key Milestones |  |
| AS1050 |  | First Pot Metal Out | milestone | 0d | 2027-12-31 | 2027-12-31 | AS1970 |  |  |  |  | 74d | 75d |  | Project Key Milestones |  |
| AS1060 |  | Completion of 174 nos. Pots Metal out | milestone | 0d | 2028-03-31 | 2028-03-31 | AS1980 |  |  |  |  | -1d | 0d |  | Project Key Milestones |  |

| ID | WBS | Activity | Duration | Start | Finish | Predecessors | Complete | Planned start | Planned finish | Total float | Free float | Text1 | Text4 |
| --- | --- | --- | --- | --- | --- | --- | --- | --- | --- | --- | --- | --- | --- |
|  | EN | **Engineering** |  | 2025-02-26 | 2026-08-21 |  |  |  |  |  |  |  |  |
|  | BE | **Basic Engineering** |  | 2025-02-26 | 2026-05-06 |  |  |  |  |  |  |  |  |
|  | PP | **Plot plan & Layouts** |  | 2025-03-18 | 2025-10-31 |  |  |  |  |  |  |  |  |
| AS1070 |  | Overall Plot plan | 1d | 2025-03-18 A | 2025-03-18 A | AS1820, AS1900, AS1910 | 100% |  |  |  |  | 1Engineering | Plot plan & Layouts |
| AS1080 |  | Overall Cable schedule | 30d | 2025-06-25 A | 2025-10-31 A | AS2010 SS+100d | 100% | 2025-06-25 | 2025-07-30 |  |  | 1Engineering | Plot plan & Layouts |
| AS1090 |  | Overall Lighting layout | 30d | 2025-07-14 A | 2025-07-14 A | AS1070 FS+104d | 100% | 2025-08-13 | 2025-09-19 |  |  | 1Engineering | Plot plan & Layouts |
| AS1110 |  | Overall Earthing layout | 2d | 2025-09-16 A | 2025-09-16 A | AS1070 FS+138d | 100% | 2025-09-30 | 2025-10-01 |  |  | 1Engineering | Plot plan & Layouts |
| AS1100 |  | Layout of Fire alarm and communication | 25d | 2025-09-29 A | 2025-09-30 A | AS1070 FS+163d | 100% | 2025-10-01 | 2025-10-31 |  |  | 1Engineering | Plot plan & Layouts |
|  | DBR | **Design Basis reports** |  | 2025-02-26 | 2025-03-18 |  |  |  |  |  |  |  |  |
| AS1130 |  | Aditya Aluminium Smelter expansion Process Design Basis | 1d | 2025-02-26 A | 2025-02-26 A | AS1820 | 100% |  |  |  |  | 1Engineering | Design Basis reports |
| AS1150 |  | Electrical engineering design basis | 1d | 2025-02-26 A | 2025-02-26 A | AS1820 | 100% |  |  |  |  | 1Engineering | Design Basis reports |
| AS1160 |  | Instrumentation engineering design basis | 1d | 2025-02-26 A | 2025-02-26 A | AS1820 | 100% |  |  |  |  | 1Engineering | Design Basis reports |
| AS1140 |  | General Civil engineering design basis | 1d | 2025-03-18 A | 2025-03-18 A | AS1820, AS1900, AS1910 | 100% |  |  |  |  | 1Engineering | Design Basis reports |
|  | PDS | **Process Data Sheets (PDS)** |  | 2025-02-26 | 2025-11-17 |  |  |  |  |  |  |  |  |
| AS1170 |  | PDS Alumina Handling System | 1d | 2025-02-26 A | 2025-02-26 A | AS1820 | 100% |  |  |  |  | 1Engineering | Process Data Sheets (PDS) |
| AS1180 |  | PDS Pot Shell | 1d | 2025-02-26 A | 2025-02-26 A | AS1820 | 100% |  |  |  |  | 1Engineering | Process Data Sheets (PDS) |
| AS1190 |  | PDS Pot Superstructure | 1d | 2025-02-26 A | 2025-02-26 A | AS1820 | 100% |  |  |  |  | 1Engineering | Process Data Sheets (PDS) |
| AS1200 |  | PDS Gas Treatment Centre-3 | 1d | 2025-02-26 A | 2025-02-26 A | AS1820 | 100% |  |  |  |  | 1Engineering | Process Data Sheets (PDS) |
| AS1210 |  | PDS Melting & Holding furnace | 39d | 2025-02-26 A | 2025-04-11 A | AS1820 | 100% |  |  |  |  | 1Engineering | Process Data Sheets (PDS) |
| AS1220 |  | PDS Ingot & Casting machine | 43d | 2025-02-26 A | 2025-04-16 A | AS1820 | 100% |  |  |  |  | 1Engineering | Process Data Sheets (PDS) |
| AS1230 |  | PDS Tapping & Tube cleaning shop | 54d | 2025-02-26 A | 2025-04-29 A | AS1820 | 100% |  |  |  |  | 1Engineering | Process Data Sheets (PDS) |
| AS1250 |  | PDS Raising Girder | 60d | 2025-02-26 A | 2025-05-07 A | AS1820 | 100% |  |  |  |  | 1Engineering | Process Data Sheets (PDS) |
| AS1260 |  | PDS Anode Handling System | 100d | 2025-02-26 A | 2025-06-23 A | AS1820 | 100% |  |  |  |  | 1Engineering | Process Data Sheets (PDS) |
| AS1270 |  | PDS ABF Heating regulation system | 1d | 2025-02-26 A | 2025-02-26 A | AS1820 | 100% |  |  |  |  | 1Engineering | Process Data Sheets (PDS) |
| AS1280 |  | PDS Fume Treatment Centre-3 | 1d | 2025-02-26 A | 2025-02-26 A | AS1820 | 100% |  |  |  |  | 1Engineering | Process Data Sheets (PDS) |
| AS1290 |  | PDS Anode Rodding Shop | 105d | 2025-02-26 A | 2025-06-10 A | AS1820 | 100% | 2025-02-26 | 2025-06-30 |  |  | 1Engineering | Process Data Sheets (PDS) |
| AS2000 |  | PDS Green Anode Plant 2 | 1d | 2025-02-26 A | 2025-02-26 A | AS1820 | 100% |  |  |  |  | 1Engineering | Process Data Sheets (PDS) |
| AS1240 |  | PDS CP Coke Handling System | 1d | 2025-11-17 | 2025-11-17 | AS1820 FS+218d |  |  |  | 106d | 0d | 1Engineering | Process Data Sheets (PDS) |

| ID | WBS | Activity | Duration | Start | Finish | Predecessors | Complete | Planned start | Planned finish | Total float | Free float | Text1 | Text4 |
| --- | --- | --- | --- | --- | --- | --- | --- | --- | --- | --- | --- | --- | --- |
|  | PID | **Piping & Instrument Diagrams (P&ID)** |  | 2025-03-05 | 2025-08-29 |  |  |  |  |  |  |  |  |
| AS1390 |  | P&ID Filtered water distribution | 7d | 2025-03-05 A | 2025-03-05 A | AS1820 FS+120d | 100% | 2025-08-13 | 2025-08-21 |  |  | 1Engineering | Piping & Instrument Diagrams (P&ID) |
| AS1420 |  | P&ID Overall fire water | 26d | 2025-04-23 A | 2025-04-23 A | AS1820 FS+100d | 100% | 2025-06-24 | 2025-07-24 |  |  | 1Engineering | Piping & Instrument Diagrams (P&ID) |
| AS1320 |  | P&ID Cast house cooling tower | 1d | 2025-07-18 A | 2025-07-18 A | AS1820 FS+120d | 100% | 2025-08-13 | 2025-08-13 |  |  | 1Engineering | Piping & Instrument Diagrams (P&ID) |
| AS1330 |  | P&ID Carbon area cooling tower | 1d | 2025-07-18 A | 2025-07-18 A | AS1820 FS+120d | 100% | 2025-08-13 | 2025-08-13 |  |  | 1Engineering | Piping & Instrument Diagrams (P&ID) |
| AS1360 |  | P&ID Compressed air distribution for Pot room | 1d | 2025-07-18 A | 2025-07-18 A | AS1820 FS+120d | 100% | 2025-08-13 | 2025-08-13 |  |  | 1Engineering | Piping & Instrument Diagrams (P&ID) |
| AS1370 |  | P&ID Compressed air distribution for Cast house | 1d | 2025-07-18 A | 2025-07-18 A | AS1820 FS+120d | 100% | 2025-08-13 | 2025-08-13 |  |  | 1Engineering | Piping & Instrument Diagrams (P&ID) |
| AS1380 |  | P&ID Compressed air distribution for Carbon area | 1d | 2025-07-18 A | 2025-07-18 A | AS1820 FS+120d | 100% | 2025-08-13 | 2025-08-13 |  |  | 1Engineering | Piping & Instrument Diagrams (P&ID) |
| AS1340 |  | P&ID Compressor house cooling tower | 1d | 2025-07-31 A | 2025-07-31 A | AS1820 FS+120d | 100% | 2025-08-13 | 2025-08-13 |  |  | 1Engineering | Piping & Instrument Diagrams (P&ID) |
| AS1350 |  | P&ID Compressor house | 1d | 2025-07-31 A | 2025-07-31 A | AS1820 FS+120d | 100% | 2025-08-13 | 2025-08-13 |  |  | 1Engineering | Piping & Instrument Diagrams (P&ID) |
| AS1410 |  | P&ID Natural gas distribution | 1d | 2025-08-13 A | 2025-08-29 A | AS1820 FS+120d | 100% | 2025-08-13 | 2025-08-13 |  |  | 1Engineering | Piping & Instrument Diagrams (P&ID) |
|  | SLD | **Single Line Diagrams (SLD)** |  | 2025-02-26 | 2025-07-31 |  |  |  |  |  |  |  |  |
| AS7730 |  | SLD 220 Kv Conversion substation | 3d | 2025-02-26 A | 2025-02-28 A | AS1820 | 100% |  |  |  |  | 1Engineering | Single Line Diagrams (SLD) |
| AS2010 |  | SLD Overall | 144d | 2025-02-27 A | 2025-07-03 A | AS1130 | 100% | 2025-02-27 | 2025-08-16 |  |  | 1Engineering | Single Line Diagrams (SLD) |
| AS7740 |  | SLD PTA substation (Pot room-C&D) | 42d | 2025-07-11 A | 2025-07-11 A | AS2010 | 100% | 2025-08-13 | 2025-10-04 |  |  | 1Engineering | Single Line Diagrams (SLD) |
| AS7760 |  | SLD ABF-3 substation | 3d | 2025-07-18 A | 2025-07-18 A | AS2010 | 100% | 2025-08-13 | 2025-08-16 |  |  | 1Engineering | Single Line Diagrams (SLD) |
| AS7780 |  | SLD Cast house substation | 31d | 2025-07-18 A | 2025-07-18 A | AS2010 | 100% | 2025-08-13 | 2025-09-20 |  |  | 1Engineering | Single Line Diagrams (SLD) |
| AS7770 |  | SLD Compressor house substation | 37d | 2025-07-31 A | 2025-07-31 A | AS2010 | 100% | 2025-08-13 | 2025-09-27 |  |  | 1Engineering | Single Line Diagrams (SLD) |
|  | MTO | **Material Take Off (MTO)** |  | 2025-05-12 | 2025-05-20 |  |  |  |  |  |  |  |  |
| AS2020 |  | Aluminium Bus Bars, Plates & Flexes (MTO) | 8d | 2025-05-12 A | 2025-05-20 A | AS1130, AS1070 FS+45d | 100% |  |  |  |  | 1Engineering | Material Take Off (MTO) |
|  | MR | **Material Requisitions (MR)** |  | 2025-02-26 | 2025-11-22 |  |  |  |  |  |  |  |  |
| AS2520 |  | MR for Bus bar (Supply) | 71d | 2025-02-26 A | 2025-05-20 A | AS1820 | 100% |  |  |  |  | 1Engineering | Material Requisitions (MR) |
| AS2600 |  | MR for Potline monitoring, control and supervision system (ALPSYS) | 74d | 2025-02-26 A | 2025-05-23 A | AS1820 | 100% |  |  |  |  | 1Engineering | Material Requisitions (MR) |
| AS2630 |  | MR for Furnace Tending Assembly (FTA) | 71d | 2025-02-26 A | 2025-05-20 A | AS1820 | 100% |  |  |  |  | 1Engineering | Material Requisitions (MR) |
| AS2710 |  | MR for Forced Convection Network | 10d | 2025-02-26 A | 2025-03-08 A | AS1820 | 100% |  |  |  |  | 1Engineering | Material Requisitions (MR) |
| AS2500 |  | MR for Pot shell | 1d | 2025-02-27 A | 2025-02-27 A | AS1180 | 100% |  |  |  |  | 1Engineering | Material Requisitions (MR) |
| AS2510 |  | MR for Pot super structure | 5d | 2025-02-27 A | 2025-03-04 A | AS1190 | 100% |  |  |  |  | 1Engineering | Material Requisitions (MR) |
| AS2540 |  | MR for Anode stem locking clamps | 5d | 2025-02-27 A | 2025-03-04 A | AS1190 | 100% |  |  |  |  | 1Engineering | Material Requisitions (MR) |
| AS2550 |  | MR for Anodic suspension system with jacks | 5d | 2025-02-27 A | 2025-03-04 A | AS1190 | 100% |  |  |  |  | 1Engineering | Material Requisitions (MR) |
| AS2560 |  | MR for Anodic stem sealing assemblies | 5d | 2025-02-27 A | 2025-03-04 A | AS1190 | 100% |  |  |  |  | 1Engineering | Material Requisitions (MR) |
| AS2580 |  | MR for Pot Tending Assembly | 5d | 2025-02-27 A | 2025-03-04 A | AS1190 | 100% |  |  |  |  | 1Engineering | Material Requisitions (MR) |
| AS2620 |  | MR for Hyper Dense Phase System (HDPS) | 5d | 2025-02-27 A | 2025-03-04 A | AS1170 | 100% |  |  |  |  | 1Engineering | Material Requisitions (MR) |
| AS2650 |  | MR for Environment monitoring system for Pot room, GTC, FTC | 74d | 2025-02-27 A | 2025-05-24 A | AS1130 | 100% |  |  |  |  | 1Engineering | Material Requisitions (MR) |
| AS2605 |  | MR for Pot hoods | 5d | 2025-03-31 A | 2025-04-30 A | AS1820 | 100% | 2025-09-15 | 2025-09-20 |  |  | 1Engineering | Material Requisitions (MR) |
| AS2602 |  | MR for Anode stem | 26d | 2025-04-19 A | 2025-05-20 A | AS1820 FS+45d | 100% |  |  |  |  | 1Engineering | Material Requisitions (MR) |
| AS2631 |  | MR for Fire Control Sysytem (FCS) | 2d | 2025-04-29 A | 2025-04-30 A | AS1270 FS+52d | 100% |  |  |  |  | 1Engineering | Material Requisitions (MR) |
| AS2591 |  | MR for Raising girder | 11d | 2025-05-08 A | 2025-05-20 A | AS1250 | 100% |  |  |  |  | 1Engineering | Material Requisitions (MR) |
| AS2530 |  | MR for Pot lining | 12d | 2025-05-12 A | 2025-05-12 A | AS1180 FS+120d | 100% | 2025-08-13 | 2025-08-27 |  |  | 1Engineering | Material Requisitions (MR) |
| AS2603 |  | MR for Anode bracket | 3d | 2025-06-02 A | 2025-06-04 A | AS1820 FS+81d | 100% |  |  |  |  | 1Engineering | Material Requisitions (MR) |
| AS2604 |  | MR for Anode Clad | 3d | 2025-06-02 A | 2025-06-04 A | AS1820 FS+81d | 100% |  |  |  |  | 1Engineering | Material Requisitions (MR) |
| AS2607 |  | MR for Copper Onsert Collector bars | 3d | 2025-06-02 A | 2025-06-04 A | AS1820 FS+81d | 100% |  |  |  |  | 1Engineering | Material Requisitions (MR) |
| AS2601 |  | MR for Anode Beam Rasing Frame | 5d | 2025-06-16 A | 2025-06-16 A | AS1820 FS+156d | 100% | 2025-09-01 | 2025-09-05 |  |  | 1Engineering | Material Requisitions (MR) |
| AS2610 |  | MR for EOT (Pot Line, Cast House) | 5d | 2025-06-30 A | 2025-07-04 A | AS1070, AS1820 FS+104d | 100% |  |  |  |  | 1Engineering | Material Requisitions (MR) |
| AS2606 |  | MR for Pot Roof emission sampling arrangement | 5d | 2025-07-07 A | 2025-07-23 A | AS1820 FS+130d | 100% | 2025-08-13 | 2025-08-19 |  |  | 1Engineering | Material Requisitions (MR) |
| AS2611 |  | MR for PT runway rail | 5d | 2025-07-10 A | 2025-08-22 A | AS1820 FS+113d | 100% | 2025-07-10 | 2025-07-15 |  |  | 1Engineering | Material Requisitions (MR) |
| AS7750 |  | MR for DG Sets | 5d | 2025-07-15 A | 2025-07-15 A | AS1820 | 100% | 2025-09-15 | 2025-09-20 |  |  |  |  |
| AS3750 |  | MR for Metal transport Vehicle (MTV) | 5d | 2025-07-17 A | 2025-07-17 A | AS1820 FS+185d | 100% | 2025-10-07 | 2025-10-11 |  |  | 1Engineering | Material Requisitions (MR) |
| AS5620 |  | MR for Anode transport vehicle | 5d | 2025-08-07 A | 2025-08-08 A | AS1820 FS+185d | 100% | 2025-08-08 | 2025-08-13 |  |  | 1Engineering | Material Requisitions (MR) |
| AS2720 |  | MR for Rail, Rail clamps & Thermit welding material | 5d | 2025-08-09 A | 2025-08-22 A | AS1820 FS+120d | 100% | 2025-08-13 | 2025-08-19 |  |  | 1Engineering | Material Requisitions (MR) |
| AS5890 |  | MR for Cathode clad | 2d | 2025-08-19 A | 2025-08-19 A | AS1820 FS+162d | 100% | 2025-09-08 | 2025-09-09 |  |  | 1Engineering | Material Requisitions (MR) |
| AS2730 |  | MR for Crust Bin | 4d | 2025-08-25 A | 2025-08-25 A | AS1820 FS+185d | 100% | 2025-10-15 | 2025-10-18 |  |  | 1Engineering | Material Requisitions (MR) |
| AS1640 |  | MR for ABF refractory | 3d | 2025-09-01 A | 2025-09-03 A | AS1820 FS+207d | 100% | 2025-11-03 | 2025-11-06 |  |  | 1Engineering | Material Requisitions (MR) |
| AS7430 |  | MR for Pot & Busbar insulators | 5d | 2025-09-12 A | 2025-09-12 A | AS1820 FS+130d | 100% | 2025-09-15 | 2025-09-20 |  |  |  |  |
| AS9690 |  | MR for Compressed Air System | 1d | 2025-10-06 A | 2025-10-06 A | AS1820 FS+195d | 100% | 2025-10-31 | 2025-10-31 |  |  |  |  |
| AS5670 |  | MR for Alf3 vehicle | 3d | 2025-11-01 | 2025-11-04 | AS1820 FS+206d |  |  |  | 153d | 0d | 1Engineering | Material Requisitions (MR) |
| AS5710 |  | MR for Bath Tapping Vehicle (2 Nos) | 3d | 2025-11-01 | 2025-11-04 | AS1820 FS+206d |  |  |  | 153d | 0d | 1Engineering | Material Requisitions (MR) |
| AS5850 |  | MR for THTV | 3d | 2025-11-01 | 2025-11-04 | AS1820 FS+206d |  |  |  | 153d | 0d | 1Engineering | Material Requisitions (MR) |
| AS3740 |  | MR for Bath moulds | 5d | 2025-11-04 | 2025-11-10 | AS1820 FS+208d |  |  |  | 329d | 0d | 1Engineering | Material Requisitions (MR) |
| AS3760 |  | MR for Anode pallets | 5d | 2025-11-04 | 2025-11-10 | AS1820 FS+208d |  |  |  | 331d | 0d | 1Engineering | Material Requisitions (MR) |
| AS5990 |  | MR for Metal & bath tapping tubes | 5d | 2025-11-04 | 2025-11-10 | AS1820 FS+208d |  |  |  | 409d | 0d | 1Engineering | Material Requisitions (MR) |
| AS7010 |  | MR for Metal & bath ladle | 5d | 2025-11-04 | 2025-11-10 | AS1820 FS+208d |  |  |  | 282d | 0d | 1Engineering | Material Requisitions (MR) |
| AS7020 |  | MR for Metal & bath ladle refractory lining | 5d | 2025-11-04 | 2025-11-10 | AS1820 FS+208d |  |  |  | 282d | 0d | 1Engineering | Material Requisitions (MR) |
| AS7350 |  | MR for Metal ladle lifting beam | 5d | 2025-11-04 | 2025-11-10 | AS1820 FS+208d |  |  |  | 253d | 0d | 1Engineering | Material Requisitions (MR) |
| AS7530 |  | MR for Power Rails | 3d | 2025-11-07 | 2025-11-10 | AS1820 FS+210d |  |  |  | 32d | 0d |  |  |
| AS8230 |  | MR for HVAC | 4d | 2025-11-17 | 2025-11-20 | AS1820 FS+218d |  |  |  | 40d | 0d |  |  |
| AS7910 |  | MR for Static Fire Fighting Equipment | 4d | 2025-11-19 | 2025-11-22 | AS1820 FS+220d |  |  |  | 231d | 0d |  |  |

| ID | WBS | Activity | Duration | Start | Finish | Predecessors | Complete | Remaining | Planned start | Planned finish | Total float | Free float | Text1 | Text4 | Text2 | Text3 |
| --- | --- | --- | --- | --- | --- | --- | --- | --- | --- | --- | --- | --- | --- | --- | --- | --- |
|  | LSTK | **Basic Engineering for LSTK** |  | 2025-06-26 | 2026-05-06 |  |  |  |  |  |  |  |  |  |  |  |
| AS5240 |  | Basic engineering for Rectifier | 52d | 2025-06-26 A | 2025-11-26 | AS1820, AS1849 FS+22d | 58% | 22d | 2025-06-26 | 2025-08-27 | -1d | 0d | 1Engineering | Basic Engineering for LSTK |  |  |
| AS5230 |  | Basic engineering for GTC | 100d | 2025-07-05 A | 2026-02-04 | AS1820, AS1850 | 20% | 80d | 2025-07-05 | 2025-11-04 | 28d | 0d | 1Engineering | Basic Engineering for LSTK |  |  |
| AS5250 |  | Basic engineering for GAP | 100d | 2025-07-09 A | 2026-02-16 | AS1820, AS1860 | 10% | 90d | 2025-07-09 | 2025-11-08 | 10d | 0d | 1Engineering | Basic Engineering for LSTK |  |  |
| AS5590 |  | Basic engineering for FTC | 156d | 2025-10-31 | 2026-05-06 | AS1870 |  |  |  |  | 13d | 0d | 1Engineering | Basic Engineering for LSTK |  |  |
| AS6300 |  | Basic engineering for ARS | 100d | 2025-12-27 | 2026-04-24 | AS1911 |  |  |  |  | 124d | 0d | 1Engineering | Basic Engineering for LSTK |  |  |
|  | DE | **Detail Engineering** |  | 2025-02-26 | 2026-08-21 |  |  |  |  |  |  |  |  |  |  |  |
|  | AH | **Alumina handling** |  | 2025-06-19 | 2026-07-22 |  |  |  |  |  |  |  |  |  |  |  |
|  | AH | **Alumina handling (Connecting with existing) Silo-1 to Silo-3** |  | 2026-04-07 | 2026-07-22 |  |  |  |  |  |  |  |  |  |  |  |
|  | ME | **Mechanical** |  | 2026-04-07 | 2026-05-19 |  |  |  |  |  |  |  |  |  |  |  |
| AS2030 |  | Mechanical GA of Alumina handling | 15d | 2026-04-07 | 2026-04-23 | AS1070 FS+130d, AS1130, AS1901 FS+104d |  |  |  |  | 190d | 0d | 1Detail Engineering | Alumina handling | Alumina handling (Connecting with existing) Silo-1 to Silo-3 | 1Mech |
| AS3180 |  | Piping layout drawing of Alumina handling | 21d | 2026-04-24 | 2026-05-19 | AS2030 |  |  |  |  | 411d | 382d | 1Detail Engineering | Alumina handling | Alumina handling (Connecting with existing) Silo-1 to Silo-3 | 1Mech |
|  | STR | **Structural** |  | 2026-04-24 | 2026-07-22 |  |  |  |  |  |  |  |  |  |  |  |
| AS3190 |  | Structural GA of Alumina handling | 45d | 2026-04-24 | 2026-06-16 | AS2030 |  |  |  |  | 190d | 0d | 1Detail Engineering | Alumina handling | Alumina handling (Connecting with existing) Silo-1 to Silo-3 | 3Str |
| AS5320 |  | Structural fabrication drawings of Alumina handling | 30d | 2026-06-17 | 2026-07-22 | AS3190, AS1901 |  |  |  |  | 190d | 172d | 1Detail Engineering | Alumina handling | Alumina handling (Connecting with existing) Silo-1 to Silo-3 | 3Str |
|  | EI | **E&I** |  | 2026-04-24 | 2026-06-06 |  |  |  |  |  |  |  |  |  |  |  |
| AS3200 |  | Cable schedule of Alumina handling | 7d | 2026-04-24 | 2026-05-02 | AS2030 |  |  |  |  | 317d | 0d | 1Detail Engineering | Alumina handling | Alumina handling (Connecting with existing) Silo-1 to Silo-3 | 4EI |
| AS3990 |  | Cable tray layout of Alumina handling | 14d | 2026-05-04 | 2026-05-19 | AS3200 |  |  |  |  | 317d | 0d | 1Detail Engineering | Alumina handling | Alumina handling (Connecting with existing) Silo-1 to Silo-3 | 4EI |
| AS4000 |  | Earthing & Lightening protection layout of Alumina handling | 30d | 2026-05-04 | 2026-06-06 | AS3990 SS |  |  |  |  | 317d | 299d | 1Detail Engineering | Alumina handling | Alumina handling (Connecting with existing) Silo-1 to Silo-3 | 4EI |
| AS4010 |  | Lighting layout of Alumina handling | 21d | 2026-05-04 | 2026-05-27 | AS3990 SS |  |  |  |  | 326d | 308d | 1Detail Engineering | Alumina handling | Alumina handling (Connecting with existing) Silo-1 to Silo-3 | 4EI |
|  | SI3 | **Silo-3** |  | 2025-06-19 | 2026-02-09 |  |  |  |  |  |  |  |  |  |  |  |
|  | ME | **Mechanical** |  | 2025-06-19 | 2025-07-07 |  |  |  |  |  |  |  |  |  |  |  |
| AS2040 |  | Mechanical GA of Silo-3 | 15d | 2025-06-19 A | 2025-07-07 A | AS1070 FS+78d, AS1130 | 100% |  |  |  |  |  | 1Detail Engineering | Alumina handling | Silo-3 | 1Mech |
|  | CIVIL | **Civil** |  | 2025-06-24 | 2026-01-03 |  |  |  |  |  |  |  |  |  |  |  |
| AS4840 |  | GA & Sectional details of Alumina Silo-3 | 15d | 2025-06-24 A | 2025-09-30 A | AS3210, AS1140 | 100% |  | 2025-08-25 | 2025-09-11 |  |  | 1Detail Engineering | Alumina handling | Silo-3 | 2Civ |
| AS5730 |  | Reinforcement details of Alumina Silo-3 | 15d | 2025-06-24 A | 2026-01-03 | AS4840 |  | 15d | 2025-09-12 | 2025-09-30 | 81d | 63d | 1Detail Engineering | Alumina handling | Silo-3 | 2Civ |

| ID | WBS | Activity | Duration | Start | Finish | Predecessors | Complete | Remaining | Planned start | Planned finish | Total float | Free float | Text1 | Text2 | Text3 | Text4 |
| --- | --- | --- | --- | --- | --- | --- | --- | --- | --- | --- | --- | --- | --- | --- | --- | --- |
|  | STR | **Structural** |  | 2025-07-08 | 2026-01-21 |  |  |  |  |  |  |  |  |  |  |  |
| AS3210 |  | Structural GA of Silo-3 | 15d | 2025-07-08 A | 2025-12-16 | AS2040 |  | 39d | 2025-07-08 | 2025-07-24 | 18d | 0d | 1Detail Engineering | Silo-3 | 3Str | Alumina handling |
| AS4850 |  | Structural fabrication drawings of Silo-3 | 30d | 2025-12-17 | 2026-01-21 | AS3210 |  |  |  |  | 82d | 0d | 1Detail Engineering | Silo-3 | 3Str | Alumina handling |
|  | EI | **E&I** |  | 2025-12-26 | 2026-02-09 |  |  |  |  |  |  |  |  |  |  |  |
| AS3220 |  | Cable schedule of Silo-3 | 7d | 2025-12-26 | 2026-01-02 | AS2040 FS+140d |  |  |  |  | 494d | 0d | 1Detail Engineering | Silo-3 | 4EI | Alumina handling |
| AS4020 |  | Cable tray layout of Silo-3 | 14d | 2026-01-03 | 2026-01-19 | AS3220 |  |  |  |  | 494d | 0d | 1Detail Engineering | Silo-3 | 4EI | Alumina handling |
| AS4030 |  | Earthing & Lightening protection layout of Silo-3 | 30d | 2026-01-03 | 2026-02-07 | AS4020 SS |  |  |  |  | 495d | 446d | 1Detail Engineering | Silo-3 | 4EI | Alumina handling |
| AS4040 |  | Lighting layout of Silo-3 | 21d | 2026-01-15 | 2026-02-09 | AS4020 SS+10d |  |  |  |  | 494d | 445d | 1Detail Engineering | Silo-3 | 4EI | Alumina handling |
|  | SI4 | **Silo-4 (upto civil foundation)** |  | 2026-01-07 | 2026-04-06 |  |  |  |  |  |  |  |  |  |  |  |
|  | ME | **Mechanical** |  | 2026-01-07 | 2026-01-23 |  |  |  |  |  |  |  |  |  |  |  |
| AS3230 |  | Mechanical GA of Alumina Silo-4 | 15d | 2026-01-07 | 2026-01-23 | AS2040 FS+150d |  |  |  |  | 499d | 0d | 1Detail Engineering | Silo-4 (upto civil foundation) | 1Mech | Alumina handling |
|  | CIVIL | **Civil** |  | 2026-01-24 | 2026-04-06 |  |  |  |  |  |  |  |  |  |  |  |
| AS4540 |  | GA & Sectional details of Alumina Silo-4 | 30d | 2026-01-24 | 2026-02-28 | AS3230 |  |  |  |  | 499d | 0d | 1Detail Engineering | Silo-4 (upto civil foundation) | 2Civ | Alumina handling |
| AS5330 |  | Reinforcement details of Alumina Silo-4 | 30d | 2026-03-02 | 2026-04-06 | AS4540 |  |  |  |  | 499d | 500d | 1Detail Engineering | Silo-4 (upto civil foundation) | 2Civ | Alumina handling |
|  | PB | **Potline building** |  | 2025-04-18 | 2025-12-15 |  |  |  |  |  |  |  |  |  |  |  |
|  | ME | **Mechanical** |  | 2025-04-18 | 2025-11-26 |  |  |  |  |  |  |  |  |  |  |  |
| AS2050 |  | Mechanical GA of Pot line building | 12d | 2025-04-18 A | 2025-05-02 A | AS1070 FS+26d, AS1130 | 100% |  |  |  |  |  | 1Detail Engineering | Potline building | 1Mech | Potline building |
| AS3240 |  | Piping layout drawing of Pot line | 21d | 2025-11-01 | 2025-11-26 | AS2050 FS+150d |  |  |  |  | 247d | 237d | 1Detail Engineering | Potline building | 1Mech | Potline building |
|  | CIVIL | **Civil** |  | 2025-06-18 | 2025-11-15 |  |  |  |  |  |  |  |  |  |  |  |
| AS5940 |  | GA & Sectional details of potline building | 15d | 2025-06-18 A | 2025-07-05 A | AS3250, AS1140 | 100% |  |  |  |  |  | 1Detail Engineering | Potline building | 2Civ | Potline building |
| AS9180 |  | Reinforcement details of potline building | 46d | 2025-07-07 A | 2025-11-15 | AS5940 | 72% | 13d | 2025-07-07 | 2025-08-30 | 13d | 0d | 1Detail Engineering | Potline building | 2Civ | Potline building |
| AS9420 |  | Rebar MTO | 1d | 2025-08-29 A | 2025-08-29 A | AS9180 SS+45d | 100% |  | 2025-08-30 | 2025-08-30 |  |  | 1Detail Engineering | Potline building | 2Civ | Potline building |
|  | STR | **Structural** |  | 2025-05-03 | 2025-08-29 |  |  |  |  |  |  |  |  |  |  |  |
| AS3250 |  | Structural GA of Pot line building | 39d | 2025-05-03 A | 2025-06-17 A | AS2050 | 100% |  |  |  |  |  | 1Detail Engineering | Potline building | 3Str | Potline building |
| AS6550 |  | Structural MTO | 5d | 2025-08-29 A | 2025-08-29 A | AS3250 FS+56d | 100% |  | 2025-08-25 | 2025-08-30 |  |  | 1Detail Engineering | Potline building | 3Str | Potline building |
| AS6740 |  | Sheeting MTO | 5d | 2025-08-29 A | 2025-08-29 A | AS3250 FS+56d | 100% |  | 2025-08-25 | 2025-08-30 |  |  | 1Detail Engineering | Potline building | 3Str | Potline building |

Notes:
- AS9420: Notes: EIL will not issue separate MTO. Actual updated as completed since morethan 50% of concrete qty received
- AS6550: Notes: EIL will not issue separate MTO. Actual updated as completed since more than 50% of concrete qty received.

| ID | WBS | Activity | Duration | Start | Finish | Predecessors | Complete | Remaining | Planned start | Planned finish | Total float | Free float | Text1 | Text2 | Text3 | Text4 |
| --- | --- | --- | --- | --- | --- | --- | --- | --- | --- | --- | --- | --- | --- | --- | --- | --- |
|  | EI | **E&I** |  | 2025-07-09 | 2025-12-15 |  |  |  |  |  |  |  |  |  |  |  |
| AS4050 |  | Cable tray layout of Pot room | 14d | 2025-07-09 A | 2025-11-26 | AS3260 |  | 14d | 2025-08-27 | 2025-09-12 | 123d | 0d | 1Detail Engineering | Potline building | 4EI | Potline building |
| AS3260 |  | Cable schedule of Pot room | 7d | 2025-11-01 | 2025-11-10 | AS2050 FS+150d |  |  |  |  | 123d | 0d | 1Detail Engineering | Potline building | 4EI | Potline building |
| AS4060 |  | Earthing & Lightening protection layout of Pot room | 30d | 2025-11-11 | 2025-12-15 | AS4050 SS |  |  |  |  | 123d | 72d | 1Detail Engineering | Potline building | 4EI | Potline building |
| AS4070 |  | Lighting layout of Pot room | 21d | 2025-11-11 | 2025-12-04 | AS4050 SS |  |  |  |  | 132d | 81d | 1Detail Engineering | Potline building | 4EI | Potline building |
|  | PS | **Pot Shell** |  | 2025-02-26 | 2025-02-26 |  |  |  |  |  |  |  |  |  |  |  |
|  | ME | **Mechanical** |  | 2025-02-26 | 2025-02-26 |  |  |  |  |  |  |  |  |  |  |  |
| AS2060 |  | Mechanical GA of Pot Shell | 15d | 2025-02-26 A | 2025-02-26 A | AS1180 FS+131d | 100% |  | 2025-08-13 | 2025-09-01 |  |  | 1Detail Engineering | Pot Shell | 1Mech | Pot Shell |
|  | PSS | **Pot Super structure** |  | 2025-02-26 | 2025-02-26 |  |  |  |  |  |  |  |  |  |  |  |
|  | ME | **Mechanical** |  | 2025-02-26 | 2025-02-26 |  |  |  |  |  |  |  |  |  |  |  |
| AS2070 |  | Mechanical GA of Pot Super Structure | 15d | 2025-02-26 A | 2025-02-26 A | AS1130, AS1190 FS+131d | 100% |  | 2025-08-13 | 2025-09-01 |  |  | 1Detail Engineering | Pot Super structure | 1Mech | Pot Super structure |
|  | BUS | **Busbars** |  | 2025-09-13 | 2025-09-15 |  |  |  |  |  |  |  |  |  |  |  |
|  | EI | **E&I** |  | 2025-09-13 | 2025-09-15 |  |  |  |  |  |  |  |  |  |  |  |
| AS2080 |  | Fabrication drawing of Busbars | 26d | 2025-09-13 A | 2025-09-15 A | AS1130 FS+150d | 100% |  | 2025-09-15 | 2025-10-16 |  |  | 1Detail Engineering | Busbars | 4EI | Busbars |
|  | PA | **Potline Auxiliaries** |  | 2025-04-28 | 2026-05-27 |  |  |  |  |  |  |  |  |  |  |  |
|  | M&P | **PTA Maintenance and PTA Parking bay** |  | 2025-04-28 | 2026-02-17 |  |  |  |  |  |  |  |  |  |  |  |
|  | ME | **Mechanical** |  | 2025-04-28 | 2025-04-28 |  |  |  |  |  |  |  |  |  |  |  |
| AS2090 |  | Mechanical GA of PTA Maintenance and PTA Parking bay | 15d | 2025-04-28 A | 2025-04-28 A | AS1070 FS+110d | 100% |  | 2025-08-13 | 2025-09-01 |  |  | 1Detail Engineering | PTA Maintenance and PTA Parking bay | 1Mech | Potline Auxiliaries |
|  | CIVIL | **Civil** |  | 2025-12-08 | 2026-02-17 |  |  |  |  |  |  |  |  |  |  |  |
| AS4860 |  | GA & Sectional details of PTA Maintenance and PTA Parking bay | 30d | 2025-12-08 | 2026-01-12 | AS3270 |  |  |  |  | 100d | 0d | 1Detail Engineering | PTA Maintenance and PTA Parking bay | 2Civ | Potline Auxiliaries |
| AS5410 |  | Reinforcement details of PTA Maintenance and PTA Parking bay | 30d | 2026-01-13 | 2026-02-17 | AS4860 |  |  |  |  | 100d | 0d | 1Detail Engineering | PTA Maintenance and PTA Parking bay | 2Civ | Potline Auxiliaries |
|  | STR | **Structural** |  | 2025-11-01 | 2026-01-30 |  |  |  |  |  |  |  |  |  |  |  |
| AS3270 |  | Structural GA of PTA Maintenance and PTA Parking bay | 30d | 2025-11-01 | 2025-12-06 | AS2090 FS+154d |  |  |  |  | 100d | 0d | 1Detail Engineering | PTA Maintenance and PTA Parking bay | 3Str | Potline Auxiliaries |
| AS4870 |  | Structural fabrication drawings of PTA Maintenance and PTA Parking bay | 45d | 2025-12-08 | 2026-01-30 | AS3270 |  |  |  |  | 206d | 67d | 1Detail Engineering | PTA Maintenance and PTA Parking bay | 3Str | Potline Auxiliaries |

| ID | WBS | Activity | Duration | Start | Finish | Predecessors | Complete | Remaining | Planned start | Planned finish | Total float | Free float | Text1 | Text2 | Text3 | Text4 |
| --- | --- | --- | --- | --- | --- | --- | --- | --- | --- | --- | --- | --- | --- | --- | --- | --- |
|  | EI | **E&I** |  | 2025-12-03 | 2026-02-04 |  |  |  |  |  |  |  |  |  |  |  |
| AS3280 |  | Cable schedule of PTA Maintenance and PTA Parking bay | 23d | 2025-12-03 | 2025-12-30 | AS2090 FS+180d |  |  |  |  | 475d | 0d | 1Detail Engineering | PTA Maintenance and PTA Parking bay | 4EI | Potline Auxiliaries |
| AS4080 |  | Cable tray layout of PTA Maintenance and PTA Parking bay | 14d | 2025-12-31 | 2026-01-15 | AS3280 |  |  |  |  | 475d | 0d | 1Detail Engineering | PTA Maintenance and PTA Parking bay | 4EI | Potline Auxiliaries |
| AS4090 |  | Earthing layout of PTA Maintenance and PTA Parking bay | 30d | 2025-12-31 | 2026-02-04 | AS4080 SS |  |  |  |  | 475d | 435d | 1Detail Engineering | PTA Maintenance and PTA Parking bay | 4EI | Potline Auxiliaries |
| AS4100 |  | Lighting layout of PTA Maintenance and PTA Parking bay | 21d | 2025-12-31 | 2026-01-23 | AS4080 SS |  |  |  |  | 484d | 444d | 1Detail Engineering | PTA Maintenance and PTA Parking bay | 4EI | Potline Auxiliaries |
|  | SS | **PTA Sub-station** |  | 2025-07-31 | 2026-01-10 |  |  |  |  |  |  |  |  |  |  |  |
|  | CIVIL | **Civil** |  | 2025-08-26 | 2026-01-10 |  |  |  |  |  |  |  |  |  |  |  |
| AS9090 |  | GA & Sectional details of PTA Sub-station | 30d | 2025-08-26 A | 2025-12-05 | AS7740 FS+88d |  | 30d | 2025-10-28 | 2025-12-02 | 79d | 0d | 1Detail Engineering | PTA Sub-station | 2Civ | Potline Auxiliaries |
| AS9700 |  | Reinforcement details of PTA Sub-station | 30d | 2025-08-26 A | 2026-01-10 | AS9090 |  | 30d | 2025-12-03 | 2026-01-07 | 79d | 0d | 1Detail Engineering | PTA Sub-station | 2Civ | Potline Auxiliaries |
|  | EI | **E&I** |  | 2025-07-31 | 2026-01-10 |  |  |  |  |  |  |  |  |  |  |  |
| AS9710 |  | Cable schedule of PTA Sub-station | 7d | 2025-07-31 A | 2025-07-31 A | AS9100 | 100% |  | 2025-12-03 | 2025-12-10 |  |  | 1Detail Engineering | PTA Sub-station | 4EI | Potline Auxiliaries |
| AS9770 |  | Cable tray layout of PTA Sub-station | 14d | 2025-07-31 A | 2025-07-31 A | AS9710 | 100% |  | 2025-12-11 | 2025-12-27 |  |  | 1Detail Engineering | PTA Sub-station | 4EI | Potline Auxiliaries |
| AS9100 |  | Equipment layout of PTA Sub-station | 30d | 2025-10-31 | 2025-12-05 | AS9090 SS, AS1150, AS1160 |  |  |  |  | 291d | 0d | 1Detail Engineering | PTA Sub-station | 4EI | Potline Auxiliaries |
| AS9780 |  | Earthing layout of PTA Sub-station | 30d | 2025-12-06 | 2026-01-10 | AS9770 SS |  |  |  |  | 291d | 251d | 1Detail Engineering | PTA Sub-station | 4EI | Potline Auxiliaries |
| AS9790 |  | Lighting layout of PTA Sub-station | 21d | 2025-12-06 | 2025-12-31 | AS9770 SS |  |  |  |  | 348d | 308d | 1Detail Engineering | PTA Sub-station | 4EI | Potline Auxiliaries |
|  | PCR | **Process control room (addition in existing facilities)** |  | 2026-01-15 | 2026-04-04 |  |  |  |  |  |  |  |  |  |  |  |
|  | CIVIL | **Civil** |  | 2026-01-15 | 2026-03-27 |  |  |  |  |  |  |  |  |  |  |  |
| AS2100 |  | GA & Sectional details of Process control room | 30d | 2026-01-15 | 2026-02-19 | AS1130, AS2010, AS2600, AS3791 |  |  |  |  | 354d | 0d | 1Detail Engineering | Process control room (addition in existing facilities) | 2Civ | Potline Auxiliaries |
| AS4550 |  | Reinforcement details of Process control room | 30d | 2026-02-20 | 2026-03-27 | AS2100 |  |  |  |  | 354d | 0d | 1Detail Engineering | Process control room (addition in existing facilities) | 2Civ | Potline Auxiliaries |
|  | EI | **E&I** |  | 2026-01-15 | 2026-04-04 |  |  |  |  |  |  |  |  |  |  |  |
| AS2110 |  | Equipment layout of Process control room | 30d | 2026-01-15 | 2026-02-19 | AS2100 SS |  |  |  |  | 425d | 0d | 1Detail Engineering | Process control room (addition in existing facilities) | 4EI | Potline Auxiliaries |
| AS4560 |  | Cable schedule of Process control room | 7d | 2026-02-20 | 2026-02-27 | AS2110 |  |  |  |  | 425d | 0d | 1Detail Engineering | Process control room (addition in existing facilities) | 4EI | Potline Auxiliaries |
| AS4780 |  | Cable tray layout of Process control room | 14d | 2026-02-28 | 2026-03-17 | AS4560 |  |  |  |  | 425d | 0d | 1Detail Engineering | Process control room (addition in existing facilities) | 4EI | Potline Auxiliaries |
| AS4790 |  | Earthing layout of Process control room | 30d | 2026-02-28 | 2026-04-04 | AS4780 SS |  |  |  |  | 425d | 297d | 1Detail Engineering | Process control room (addition in existing facilities) | 4EI | Potline Auxiliaries |

| ID | WBS | Activity | Duration | Start | Finish | Predecessors | Complete | Planned start | Planned finish | Total float | Free float | Text1 | Text2 | Text3 | Text4 |
| --- | --- | --- | --- | --- | --- | --- | --- | --- | --- | --- | --- | --- | --- | --- | --- |
|  | SSD | **Sub soil drainage system for Pot room** |  | 2025-05-20 | 2025-08-29 |  |  |  |  |  |  |  |  |  |  |
|  | CIVIL | **Civil** |  | 2025-05-20 | 2025-08-29 |  |  |  |  |  |  |  |  |  |  |
| AS3890 |  | GA & Sectional details of Sub soil drainage system for Pot room | 30d | 2025-05-20 A | 2025-06-23 A | AS1070 FS+52d | 100% |  |  |  |  | 1Detail Engineering | Sub soil drainage system for Pot room | 2Civ | Potline Auxiliaries |
| AS5150 |  | Reinforcement details of Sub soil drainage system for Pot room | 30d | 2025-06-24 A | 2025-08-29 A | AS3890 | 100% | 2025-06-24 | 2025-07-29 |  |  | 1Detail Engineering | Sub soil drainage system for Pot room | 2Civ | Potline Auxiliaries |
|  | OU | **Other utilities (DG Shed, Rest Rooms)** |  | 2025-09-29 | 2026-05-27 |  |  |  |  |  |  |  |  |  |  |
|  | 2 | **Mechanical** |  | 2026-02-10 | 2026-02-26 |  |  |  |  |  |  |  |  |  |  |
| A1300 |  | Mechanical GA of DG shed | 15d | 2026-02-10 | 2026-02-26 | AS1070 FS+250d, AS9970 SS |  |  |  | 329d | 0d | 1Detail Engineering | Other utilities (DG Shed, Rest Rooms) | 1Mech | Potline Auxiliaries |
|  | CIVIL | **Civil** |  | 2026-03-18 | 2026-05-27 |  |  |  |  |  |  |  |  |  |  |
| AS2130 |  | GA & Sectional details of DG shed | 15d | 2026-03-18 | 2026-04-03 | AS1070 FS+156d, A1280 |  |  |  | 329d | 0d | 1Detail Engineering | Other utilities (DG Shed, Rest Rooms) | 2Civ | Potline Auxiliaries |
| AS2140 |  | GA & Sectional details of Rest rooms | 30d | 2026-03-18 | 2026-04-21 | AS1070 FS+156d, AS2130 SS |  |  |  | 329d | 0d | 1Detail Engineering | Other utilities (DG Shed, Rest Rooms) | 2Civ | Potline Auxiliaries |
| AS4570 |  | Reinforcement details of DG shed | 15d | 2026-04-04 | 2026-04-21 | AS2130 |  |  |  | 359d | 150d | 1Detail Engineering | Other utilities (DG Shed, Rest Rooms) | 2Civ | Potline Auxiliaries |
| AS4580 |  | Reinforcement details of Rest rooms | 30d | 2026-04-22 | 2026-05-27 | AS2140 |  |  |  | 329d | 120d | 1Detail Engineering | Other utilities (DG Shed, Rest Rooms) | 2Civ | Potline Auxiliaries |
|  | 1 | **Structural** |  | 2026-02-27 | 2026-04-21 |  |  |  |  |  |  |  |  |  |  |
| A1280 |  | Structural GA of DG Shed | 15d | 2026-02-27 | 2026-03-17 | A1300 |  |  |  | 329d | 0d | 1Detail Engineering | Other utilities (DG Shed, Rest Rooms) | 3Str | Potline Auxiliaries |
| A1290 |  | Structural fabrication drawings of DG Shed | 30d | 2026-03-18 | 2026-04-21 | A1280 |  |  |  | 411d | 202d | 1Detail Engineering | Other utilities (DG Shed, Rest Rooms) | 3Str | Potline Auxiliaries |
|  | EI | **E&I** |  | 2025-09-29 | 2026-04-29 |  |  |  |  |  |  |  |  |  |  |
| AS2150 |  | Cable schedule of DG shed | 7d | 2025-09-29 A | 2025-09-29 A | AS2130 SS | 100% | 2026-03-18 | 2026-03-25 |  |  | 1Detail Engineering | Other utilities (DG Shed, Rest Rooms) | 4EI | Potline Auxiliaries |
| AS2880 |  | Cable tray layout of DG shed | 14d | 2025-09-29 A | 2025-09-29 A | AS2150 | 100% | 2026-03-26 | 2026-04-10 |  |  | 1Detail Engineering | Other utilities (DG Shed, Rest Rooms) | 4EI | Potline Auxiliaries |
| AS2890 |  | Earthing layout of DG shed | 15d | 2025-09-29 A | 2025-09-29 A | AS2880 SS | 100% | 2026-03-18 | 2026-04-03 |  |  | 1Detail Engineering | Other utilities (DG Shed, Rest Rooms) | 4EI | Potline Auxiliaries |
| AS2900 |  | Lighting layout of DG shed | 21d | 2025-09-29 A | 2025-09-29 A | AS2880 SS | 100% | 2026-03-18 | 2026-04-10 |  |  | 1Detail Engineering | Other utilities (DG Shed, Rest Rooms) | 4EI | Potline Auxiliaries |
| AS2160 |  | Cable schedule of Rest rooms | 7d | 2026-03-18 | 2026-03-25 | AS2140 SS |  |  |  | 404d | 0d | 1Detail Engineering | Other utilities (DG Shed, Rest Rooms) | 4EI | Potline Auxiliaries |
| AS2910 |  | Cable tray layout of Rest rooms | 14d | 2026-03-26 | 2026-04-10 | AS2160 |  |  |  | 404d | 0d | 1Detail Engineering | Other utilities (DG Shed, Rest Rooms) | 4EI | Potline Auxiliaries |
| AS2920 |  | Earthing layout of Rest rooms | 30d | 2026-03-26 | 2026-04-29 | AS2910 SS |  |  |  | 404d | 195d | 1Detail Engineering | Other utilities (DG Shed, Rest Rooms) | 4EI | Potline Auxiliaries |
| AS2930 |  | Lighting layout of Rest rooms | 21d | 2026-03-26 | 2026-04-18 | AS2910 SS |  |  |  | 413d | 204d | 1Detail Engineering | Other utilities (DG Shed, Rest Rooms) | 4EI | Potline Auxiliaries |

| ID | WBS | Activity | Duration | Start | Finish | Predecessors | Complete | Planned start | Planned finish | Total float | Free float | Text1 | Text2 | Text3 | Notes |
| --- | --- | --- | --- | --- | --- | --- | --- | --- | --- | --- | --- | --- | --- | --- | --- |
|  | CSS-220 | **Conversion sub-station (220 kv switchyard and Rectifier Substation) excluding C&S** |  | 2025-08-13 | 2026-03-14 |  |  |  |  |  |  |  |  |  |  |
|  | RG | **Rectifier Groups** |  | 2025-11-27 | 2026-02-14 |  |  |  |  |  |  |  |  |  |  |
|  | CIV | **Civil** |  | 2025-11-27 | 2025-12-15 |  |  |  |  |  |  |  |  |  |  |
| AS7920 |  | GA & Sectional details of Rectifier Groups | 16d | 2025-11-27 | 2025-12-15 | AS5240 |  |  |  | 44d | 0d | 1Detail Engineering | Rectifier Group | 2Civ | As per mail dated 22.09.25 from Project Lead |
| AS8040 |  | Rebar MTO | 16d | 2025-11-27 | 2025-12-15 | AS7920 SS |  |  |  | 118d | 74d | 1Detail Engineering | Rectifier Group | 2Civ |  |
|  | EI | **E&I** |  | 2025-11-27 | 2026-02-14 |  |  |  |  |  |  |  |  |  |  |
| AS7930 |  | Equipment layout of Rectifier Groups | 30d | 2025-11-27 | 2026-01-01 | AS7920 SS |  |  |  | 344d | 0d | 1Detail Engineering | Rectifier Group | 4EI |  |
| AS8700 |  | Cable schedule of Rectifier Groups | 7d | 2026-01-02 | 2026-01-09 | AS7930 |  |  |  | 344d | 0d | 1Detail Engineering | Rectifier Group | 4EI |  |
| AS8970 |  | Cable tray layout of Rectifier Groups | 14d | 2026-01-10 | 2026-01-27 | AS8700 |  |  |  | 344d | 0d | 1Detail Engineering | Rectifier Group | 4EI |  |
| AS8980 |  | Earthing layout of Rectifier Groups | 30d | 2026-01-10 | 2026-02-14 | AS8970 SS |  |  |  | 344d | 345d | 1Detail Engineering | Rectifier Group | 4EI |  |
| AS8990 |  | Lighting layout of Rectifier Groups | 21d | 2026-01-10 | 2026-02-04 | AS8970 SS |  |  |  | 353d | 354d | 1Detail Engineering | Rectifier Group | 4EI |  |
|  | 220kv | **220 kV Sub-station** |  | 2025-08-13 | 2025-12-13 |  |  |  |  |  |  |  |  |  |  |
|  | CIVIL | **Civil** |  | 2025-10-31 | 2025-11-08 |  |  |  |  |  |  |  |  |  |  |
| AS7940 |  | GA & Sectional details of 220 kV Sub-station | 7d | 2025-10-31 | 2025-11-08 | AS5240 SS+97d |  |  |  | 5d | 0d | 1Detail Engineering | 220 kV Sub-station | 2Civ | As per mail dated 22.09.25 from Project Lead |
| AS8710 |  | Rebar MTO | 7d | 2025-10-31 | 2025-11-08 | AS7940 SS |  |  |  | 29d | 30d | 1Detail Engineering | 220 kV Sub-station | 2Civ |  |
|  | EI | **E&I** |  | 2025-08-13 | 2025-12-13 |  |  |  |  |  |  |  |  |  |  |
| AS7950 |  | Equipment layout of 220 kV Sub-station | 30d | 2025-08-13 A | 2025-08-13 A | AS7940 SS | 100% | 2025-10-24 | 2025-11-28 |  |  | 1Detail Engineering | 220 kV Sub-station | 4EI |  |
| AS8720 |  | Cable schedule of 220 kV Sub-station | 7d | 2025-10-31 | 2025-11-08 | AS7950 FS+60d |  |  |  | 352d | 0d | 1Detail Engineering | 220 kV Sub-station | 4EI |  |
| AS9000 |  | Cable tray layout of 220 kV Sub-station | 14d | 2025-11-10 | 2025-11-25 | AS8720 |  |  |  | 352d | 0d | 1Detail Engineering | 220 kV Sub-station | 4EI |  |
| AS9010 |  | Earthing layout of 220 kV Sub-station | 30d | 2025-11-10 | 2025-12-13 | AS9000 SS |  |  |  | 352d | 353d | 1Detail Engineering | 220 kV Sub-station | 4EI |  |
| AS9020 |  | Lighting layout of 220 kV Sub-station | 21d | 2025-11-10 | 2025-12-03 | AS9000 SS |  |  |  | 361d | 362d | 1Detail Engineering | 220 kV Sub-station | 4EI |  |
|  | 1 | **Sub station(GIS)** |  | 2025-11-27 | 2026-02-14 |  |  |  |  |  |  |  |  |  |  |
|  | CIV | **Civil** |  | 2025-11-27 | 2026-01-13 |  |  |  |  |  |  |  |  |  |  |
| AS13071 |  | GA & Sectional details of Sub station (GIS) | 40d | 2025-11-27 | 2026-01-13 | AS5240 |  |  |  | 136d | 0d | 1Detail Engineering | Sub station(GIS) | 2Civ | As per mail dated 22.09.25 from Project Lead |
| AS13131 |  | Rebar MTO | 40d | 2025-11-27 | 2026-01-13 | AS13071 SS |  |  |  | 160d | 24d | 1Detail Engineering | Sub station(GIS) | 2Civ |  |

Notes:
- AS7920: Text4: Conversion sub-station (220 kv switchyard and Rectifier Substation) excluding C&S
- AS8040: Text4: Conversion sub-station (220 kv switchyard and Rectifier Substation) excluding C&S
- AS7930: Text4: Conversion sub-station (220 kv switchyard and Rectifier Substation) excluding C&S
- AS8700: Text4: Conversion sub-station (220 kv switchyard and Rectifier Substation) excluding C&S
- AS8970: Text4: Conversion sub-station (220 kv switchyard and Rectifier Substation) excluding C&S
- AS8980: Text4: Conversion sub-station (220 kv switchyard and Rectifier Substation) excluding C&S
- AS8990: Text4: Conversion sub-station (220 kv switchyard and Rectifier Substation) excluding C&S
- AS7940: Text4: Conversion sub-station (220 kv switchyard and Rectifier Substation) excluding C&S
- AS8710: Text4: Conversion sub-station (220 kv switchyard and Rectifier Substation) excluding C&S
- AS7950: Text4: Conversion sub-station (220 kv switchyard and Rectifier Substation) excluding C&S
- AS8720: Text4: Conversion sub-station (220 kv switchyard and Rectifier Substation) excluding C&S
- AS9000: Text4: Conversion sub-station (220 kv switchyard and Rectifier Substation) excluding C&S
- AS9010: Text4: Conversion sub-station (220 kv switchyard and Rectifier Substation) excluding C&S
- AS9020: Text4: Conversion sub-station (220 kv switchyard and Rectifier Substation) excluding C&S
- AS13071: Text4: Conversion sub-station (220 kv switchyard and Rectifier Substation) excluding C&S
- AS13131: Text4: Conversion sub-station (220 kv switchyard and Rectifier Substation) excluding C&S

| ID | WBS | Activity | Duration | Start | Finish | Predecessors | Complete | Remaining | Planned start | Planned finish | Total float | Free float | Text1 | Text2 | Text3 |
| --- | --- | --- | --- | --- | --- | --- | --- | --- | --- | --- | --- | --- | --- | --- | --- |
|  | EI | **E&I** |  | 2025-11-27 | 2026-02-14 |  |  |  |  |  |  |  |  |  |  |
| AS13081 |  | Equipment layout of Sub station (GIS) | 30d | 2025-11-27 | 2026-01-01 | AS13071 SS |  |  |  |  | 412d | 0d | 1Detail Engineering | Sub station(GIS) | 4EI |
| AS13101 |  | Cable schedule of Sub station (GIS) | 7d | 2026-01-02 | 2026-01-09 | AS13081 |  |  |  |  | 412d | 0d | 1Detail Engineering | Sub station(GIS) | 4EI |
| AS13091 |  | Cable tray layout of Sub station (GIS) | 14d | 2026-01-10 | 2026-01-27 | AS13101 |  |  |  |  | 412d | 0d | 1Detail Engineering | Sub station(GIS) | 4EI |
| AS13111 |  | Earthing layout of Sub station (GIS) | 30d | 2026-01-10 | 2026-02-14 | AS13091 SS |  |  |  |  | 412d | 276d | 1Detail Engineering | Sub station(GIS) | 4EI |
| AS13121 |  | Lighting layout of Sub station (GIS) | 21d | 2026-01-10 | 2026-02-04 | AS13091 SS |  |  |  |  | 421d | 285d | 1Detail Engineering | Sub station(GIS) | 4EI |
|  | 2 | **Bus bar** |  | 2025-11-27 | 2026-03-14 |  |  |  |  |  |  |  |  |  |  |
|  | CIV | **Civil** |  | 2025-11-27 | 2026-03-14 |  |  |  |  |  |  |  |  |  |  |
| AS13141 |  | GA & Sectional details of Bus bar | 90d | 2025-11-27 | 2026-03-14 | AS5240 |  |  |  |  | 48d | 0d | 1Detail Engineering | Bus bar | 2Civ |
|  | EI | **E&I** |  | 2025-11-27 | 2026-01-01 |  |  |  |  |  |  |  |  |  |  |
| AS13151 |  | Drawing of Bus bar | 30d | 2025-11-27 | 2026-01-01 | AS13141 SS |  |  |  |  | 397d | 349d | 1Detail Engineering | Bus bar | 4EI |
|  | GTC | **Gas Treatment Center (GTC-3) & Alumina transportation from GTC-1 to GTC-3** |  | 2025-08-05 | 2026-05-04 |  |  |  |  |  |  |  |  |  |  |
|  | GTC3 | **Gas Treatment Center (GTC-3)** |  | 2025-08-05 | 2026-04-04 |  |  |  |  |  |  |  |  |  |  |
|  | ME | **Mechanical** |  | 2025-08-05 | 2026-01-28 |  |  |  |  |  |  |  |  |  |  |
| AS5380 |  | Mechanical GA of GTC-3 | 19d | 2025-08-05 A | 2025-11-17 | AS5230 SS+72d | 26% | 14d | 2025-08-14 | 2025-09-06 | 32d | 0d | 1Detail Engineering | Gas Treatment Center (GTC-3) | 1Mech |
| AS7610 |  | Piping layout drawing of GTC-3 | 60d | 2025-11-18 | 2026-01-28 | AS5380 |  |  |  |  | 350d | 322d | 1Detail Engineering | Gas Treatment Center (GTC-3) | 1Mech |
|  | CIVIL | **Civil** |  | 2025-12-18 | 2026-02-18 |  |  |  |  |  |  |  |  |  |  |
| AS9190 |  | GA & Sectional details of GTC-3 | 26d | 2025-12-18 | 2026-01-17 | AS7620 |  |  |  |  | 72d | 0d | 1Detail Engineering | Gas Treatment Center (GTC-3) | 2Civ |
| AS10040 |  | Reinforcement details of GTC-3 | 26d | 2026-01-19 | 2026-02-18 | AS9190 |  |  |  |  | 72d | 0d | 1Detail Engineering | Gas Treatment Center (GTC-3) | 2Civ |
|  | STR | **Structural** |  | 2025-11-18 | 2026-04-04 |  |  |  |  |  |  |  |  |  |  |
| AS7620 |  | Structural GA of GTC-3 | 26d | 2025-11-18 | 2025-12-17 | AS5380 |  |  |  |  | 72d | 0d | 1Detail Engineering | Gas Treatment Center (GTC-3) | 3Str |
| AS9200 |  | Structural fabrication drawings of GTC-3 | 90d | 2025-12-18 | 2026-04-04 | AS7620 |  |  |  |  | 84d | 0d | 1Detail Engineering | Gas Treatment Center (GTC-3) | 3Str |
|  | EI | **E&I** |  | 2025-11-18 | 2026-02-13 |  |  |  |  |  |  |  |  |  |  |
| AS7630 |  | Cable schedule of GTC-3 | 14d | 2025-11-18 | 2025-12-03 | AS5380 |  |  |  |  | 342d | 0d | 1Detail Engineering | Gas Treatment Center (GTC-3) | 4EI |
| AS7960 |  | Cable tray layout of GTC-3 | 28d | 2025-12-04 | 2026-01-06 | AS7630 |  |  |  |  | 342d | 0d | 1Detail Engineering | Gas Treatment Center (GTC-3) | 4EI |
| AS7970 |  | Earthing layout of GTC-3 | 60d | 2025-12-04 | 2026-02-13 | AS7960 SS |  |  |  |  | 342d | 314d | 1Detail Engineering | Gas Treatment Center (GTC-3) | 4EI |
| AS7980 |  | Lighting layout of GTC-3 | 42d | 2025-12-04 | 2026-01-22 | AS7960 SS |  |  |  |  | 360d | 332d | 1Detail Engineering | Gas Treatment Center (GTC-3) | 4EI |

Notes:
- AS13081: Text4: Conversion sub-station (220 kv switchyard and Rectifier Substation) excluding C&S
- AS13101: Text4: Conversion sub-station (220 kv switchyard and Rectifier Substation) excluding C&S
- AS13091: Text4: Conversion sub-station (220 kv switchyard and Rectifier Substation) excluding C&S
- AS13111: Text4: Conversion sub-station (220 kv switchyard and Rectifier Substation) excluding C&S
- AS13121: Text4: Conversion sub-station (220 kv switchyard and Rectifier Substation) excluding C&S
- AS13141: Text4: Conversion sub-station (220 kv switchyard and Rectifier Substation) excluding C&S
- AS13151: Text4: Conversion sub-station (220 kv switchyard and Rectifier Substation) excluding C&S
- AS5380: Text4: Gas Treatment Center (GTC-3) & Alumina transportation from GTC-1 to GTC-3
- AS7610: Text4: Gas Treatment Center (GTC-3) & Alumina transportation from GTC-1 to GTC-3
- AS9190: Text4: Gas Treatment Center (GTC-3) & Alumina transportation from GTC-1 to GTC-3
- AS10040: Text4: Gas Treatment Center (GTC-3) & Alumina transportation from GTC-1 to GTC-3
- AS7620: Text4: Gas Treatment Center (GTC-3) & Alumina transportation from GTC-1 to GTC-3
- AS9200: Text4: Gas Treatment Center (GTC-3) & Alumina transportation from GTC-1 to GTC-3
- AS7630: Text4: Gas Treatment Center (GTC-3) & Alumina transportation from GTC-1 to GTC-3
- AS7960: Text4: Gas Treatment Center (GTC-3) & Alumina transportation from GTC-1 to GTC-3
- AS7970: Text4: Gas Treatment Center (GTC-3) & Alumina transportation from GTC-1 to GTC-3
- AS7980: Text4: Gas Treatment Center (GTC-3) & Alumina transportation from GTC-1 to GTC-3

| ID | WBS | Activity | Duration | Start | Finish | Predecessors | Total float | Free float | Text1 | Text3 |
| --- | --- | --- | --- | --- | --- | --- | --- | --- | --- | --- |
|  | GTC31-3 | **Alumina transportation from GTC-1 (Connecting with existing) to GTC-3** |  | 2025-11-25 | 2026-03-28 |  |  |  |  |  |
|  | ME | **Mechanical** |  | 2025-11-25 | 2025-12-11 |  |  |  |  |  |
| AS5790 |  | Mechanical GA of Alumina transportation from GTC-1 to GTC-3 | 15d | 2025-11-25 | 2025-12-11 | AS5380 SS+90d | 396d | 0d | 1Detail Engineering | 1Mech |
|  | STR | **Structural** |  | 2025-12-12 | 2026-03-12 |  |  |  |  |  |
| AS6090 |  | Structural GA of Alumina transportation from GTC-1 to GTC-3 | 30d | 2025-12-12 | 2026-01-16 | AS5790 | 396d | 0d | 1Detail Engineering | 3Str |
| AS7650 |  | Structural fabrication drawings of Alumina transportation from GTC-1 to GTC-3 | 45d | 2026-01-17 | 2026-03-12 | AS6090 | 396d | 294d | 1Detail Engineering | 3Str |
|  | EI | **E&I** |  | 2026-02-13 | 2026-03-28 |  |  |  |  |  |
| AS6100 |  | Cable schedule of Alumina transportation from GTC-1 to GTC-3 | 7d | 2026-02-13 | 2026-02-20 | AS5790 FS+52d | 445d | 0d | 1Detail Engineering | 4EI |
| AS6820 |  | Cable tray layout of Alumina transportation from GTC-1 to GTC-3 | 14d | 2026-02-21 | 2026-03-10 | AS6100 | 445d | 0d | 1Detail Engineering | 4EI |
| AS6830 |  | Earthing layout of Alumina transportation from GTC-1 to GTC-3 | 30d | 2026-02-21 | 2026-03-28 | AS6820 SS | 445d | 332d | 1Detail Engineering | 4EI |
| AS6840 |  | Lighting layout of Alumina transportation from GTC-1 to GTC-3 | 21d | 2026-02-21 | 2026-03-18 | AS6820 SS | 454d | 341d | 1Detail Engineering | 4EI |
|  | CHI | **Chimney** |  | 2025-11-25 | 2026-05-04 |  |  |  |  |  |
|  | ME | **Mechanical** |  | 2025-11-25 | 2025-12-02 |  |  |  |  |  |
| AS5800 |  | Mechanical GA of Chimney | 7d | 2025-11-25 | 2025-12-02 | AS5380 SS+90d | 32d | 0d | 1Detail Engineering | 1Mech |
|  | CIV | **Civil** |  | 2025-12-03 | 2026-01-13 |  |  |  |  |  |
| AS6110 |  | GA & Sectional details of Chimney | 15d | 2025-12-03 | 2025-12-19 | AS5800 | 32d | 0d | 1Detail Engineering | 2Civ |
| AS7660 |  | Reinforcement details of Chimney | 30d | 2025-12-09 | 2026-01-13 | AS6110 SS+5d | 32d | 0d | 1Detail Engineering | 2Civ |
|  | EI | **E&I** |  | 2026-03-21 | 2026-05-04 |  |  |  |  |  |
| AS6120 |  | Cable schedule of Chimney | 7d | 2026-03-21 | 2026-03-28 | AS5800 FS+90d | 404d | 0d | 1Detail Engineering | 4EI |
| AS6850 |  | Cable tray layout of Chimney | 14d | 2026-03-30 | 2026-04-14 | AS6120 | 404d | 0d | 1Detail Engineering | 4EI |
| AS6860 |  | Earthing layout of Chimney | 30d | 2026-03-30 | 2026-05-04 | AS6850 SS | 404d | 372d | 1Detail Engineering | 4EI |
| AS6870 |  | Lighting layout of Chimney | 21d | 2026-03-30 | 2026-04-22 | AS6850 SS | 413d | 381d | 1Detail Engineering | 4EI |
|  | SS | **GTC Sub-station** |  | 2025-09-30 | 2026-02-20 |  |  |  |  |  |
|  | CIV | **Civil** |  | 2025-11-06 | 2025-12-12 |  |  |  |  |  |
| AS5390 |  | GA & Sectional details of GTC Sub-station | 17d | 2025-11-06 | 2025-11-25 | AS5380 SS, AS5230 SS+100d | 77d | 0d | 1Detail Engineering | 2Civ |
| AS5820 |  | Reinforcement details of GTC Sub-station | 15d | 2025-11-26 | 2025-12-12 | AS5390 | 77d | 0d | 1Detail Engineering | 2Civ |

Notes:
- AS5790: Text2: Alumina transportation from GTC-1 (Connecting with existing) to GTC-3 / Text4: Gas Treatment Center (GTC-3) & Alumina transportation from GTC-1 to GTC-3
- AS6090: Text2: Alumina transportation from GTC-1 (Connecting with existing) to GTC-3 / Text4: Gas Treatment Center (GTC-3) & Alumina transportation from GTC-1 to GTC-3
- AS7650: Text2: Alumina transportation from GTC-1 (Connecting with existing) to GTC-3 / Text4: Gas Treatment Center (GTC-3) & Alumina transportation from GTC-1 to GTC-3
- AS6100: Text2: Alumina transportation from GTC-1 (Connecting with existing) to GTC-3 / Text4: Gas Treatment Center (GTC-3) & Alumina transportation from GTC-1 to GTC-3
- AS6820: Text2: Alumina transportation from GTC-1 (Connecting with existing) to GTC-3 / Text4: Gas Treatment Center (GTC-3) & Alumina transportation from GTC-1 to GTC-3
- AS6830: Text2: Alumina transportation from GTC-1 (Connecting with existing) to GTC-3 / Text4: Gas Treatment Center (GTC-3) & Alumina transportation from GTC-1 to GTC-3
- AS6840: Text2: Alumina transportation from GTC-1 (Connecting with existing) to GTC-3 / Text4: Gas Treatment Center (GTC-3) & Alumina transportation from GTC-1 to GTC-3
- AS5800: Text2: Chimney / Text4: Gas Treatment Center (GTC-3) & Alumina transportation from GTC-1 to GTC-3
- AS6110: Text2: Chimney / Text4: Gas Treatment Center (GTC-3) & Alumina transportation from GTC-1 to GTC-3
- AS7660: Text2: Chimney / Text4: Gas Treatment Center (GTC-3) & Alumina transportation from GTC-1 to GTC-3
- AS6120: Text2: Chimney / Text4: Gas Treatment Center (GTC-3) & Alumina transportation from GTC-1 to GTC-3
- AS6850: Text2: Chimney / Text4: Gas Treatment Center (GTC-3) & Alumina transportation from GTC-1 to GTC-3
- AS6860: Text2: Chimney / Text4: Gas Treatment Center (GTC-3) & Alumina transportation from GTC-1 to GTC-3
- AS6870: Text2: Chimney / Text4: Gas Treatment Center (GTC-3) & Alumina transportation from GTC-1 to GTC-3
- AS5390: Text2: GTC Sub-station / Text4: Gas Treatment Center (GTC-3) & Alumina transportation from GTC-1 to GTC-3
- AS5820: Text2: GTC Sub-station / Text4: Gas Treatment Center (GTC-3) & Alumina transportation from GTC-1 to GTC-3

| ID | WBS | Activity | Duration | Start | Finish | Predecessors | Complete | Planned start | Planned finish | Total float | Free float | Text1 | Text2 | Text3 |
| --- | --- | --- | --- | --- | --- | --- | --- | --- | --- | --- | --- | --- | --- | --- |
|  | EI | **E&I** |  | 2025-09-30 | 2026-02-20 |  |  |  |  |  |  |  |  |  |
| AS5830 |  | Cable schedule of GTC Sub-station | 7d | 2025-09-30 A | 2025-09-30 A | AS5400 | 100% | 2026-01-16 | 2026-01-23 |  |  | 1Detail Engineering | GTC Sub-station | 4EI |
| AS5910 |  | Cable tray layout of GTC Sub-station | 14d | 2025-09-30 A | 2025-09-30 A | AS5830 | 100% | 2026-01-24 | 2026-02-10 |  |  | 1Detail Engineering | GTC Sub-station | 4EI |
| AS5400 |  | Equipment layout of GTC Sub-station | 30d | 2025-12-11 | 2026-01-15 | AS5390 SS+30d |  |  |  | 331d | 0d | 1Detail Engineering | GTC Sub-station | 4EI |
| AS5920 |  | Earthing layout of GTC Sub-station | 30d | 2026-01-16 | 2026-02-20 | AS5910 SS |  |  |  | 331d | 265d | 1Detail Engineering | GTC Sub-station | 4EI |
| AS5930 |  | Lighting layout of GTC Sub-station | 21d | 2026-01-16 | 2026-02-10 | AS5910 SS |  |  |  | 340d | 274d | 1Detail Engineering | GTC Sub-station | 4EI |
|  | HDPS | **Hyper Density Phase System (HDPS)** |  | 2025-11-14 | 2025-11-20 |  |  |  |  |  |  |  |  |  |
|  | ME | **MECH** |  | 2025-11-14 | 2025-11-20 |  |  |  |  |  |  |  |  |  |
| AS5810 |  | Mechanical GA of HDPS | 6d | 2025-11-14 | 2025-11-20 | AS5380 SS+26d, AS2050 FS+104d, AS3810 |  |  |  | 22d | 0d | 1Detail Engineering | Hyper Density Phase System (HDPS) | 1Mech |
|  | ACF | **Additional casting facilities** |  | 2025-07-01 | 2026-05-12 |  |  |  |  |  |  |  |  |  |
|  | CHS | **Cast house shed** |  | 2025-07-01 | 2026-04-15 |  |  |  |  |  |  |  |  |  |
|  | ME | **Mechanical** |  | 2025-07-01 | 2025-11-29 |  |  |  |  |  |  |  |  |  |
| AS2170 |  | Mechanical GA of Cast house shed | 15d | 2025-07-01 A | 2025-07-31 A | AS1070 FS+130d | 100% | 2025-09-01 | 2025-09-18 |  |  | 1Detail Engineering | Cast house shed | 1Mech |
| AS3290 |  | Piping layout drawing of Cast house shed | 21d | 2025-11-06 | 2025-11-29 | AS2170 FS+78d |  |  |  | 407d | 377d | 1Detail Engineering | Cast house shed | 1Mech |
|  | CIVIL | **Civil** |  | 2025-12-26 | 2026-04-15 |  |  |  |  |  |  |  |  |  |
| AS4880 |  | GA & Sectional details of Cast house shed | 30d | 2025-12-26 | 2026-01-30 | AS3300, AS1140 |  |  |  | 118d | 0d | 1Detail Engineering | Cast house shed | 2Civ |
| AS5420 |  | Reinforcement details of Cast house shed | 30d | 2026-01-31 | 2026-03-07 | AS4880 |  |  |  | 118d | 49d | 1Detail Engineering | Cast house shed | 2Civ |
| AS6530 |  | GA & Sectional details of equipment foundation | 15d | 2026-03-30 | 2026-04-15 | AS3010 FS+78d, AS3020 FS+78d |  |  |  | 85d | 0d | 1Detail Engineering | Cast house shed | 2Civ |
|  | STR | **Structural** |  | 2025-11-20 | 2026-02-17 |  |  |  |  |  |  |  |  |  |
| AS3300 |  | Structural GA of Cast house shed | 30d | 2025-11-20 | 2025-12-24 | AS2170 FS+90d |  |  |  | 81d | 0d | 1Detail Engineering | Cast house shed | 3Str |
| AS4890 |  | Structural fabrication drawings of Cast house shed | 45d | 2025-12-26 | 2026-02-17 | AS3300 |  |  |  | 81d | 39d | 1Detail Engineering | Cast house shed | 3Str |
|  | EI | **E&I** |  | 2025-12-06 | 2026-01-19 |  |  |  |  |  |  |  |  |  |
| AS3310 |  | Cable schedule of Cast house shed | 7d | 2025-12-06 | 2025-12-13 | AS2170 FS+104d |  |  |  | 487d | 0d | 1Detail Engineering | Cast house shed | 4EI |
| AS4110 |  | Cable tray layout of Cast house shed | 14d | 2025-12-15 | 2025-12-31 | AS3310 |  |  |  | 487d | 0d | 1Detail Engineering | Cast house shed | 4EI |
| AS4120 |  | Earthing layout of Cast house shed | 30d | 2025-12-15 | 2026-01-19 | AS4110 SS |  |  |  | 487d | 457d | 1Detail Engineering | Cast house shed | 4EI |
| AS4130 |  | Lighting layout of Cast house shed | 21d | 2025-12-15 | 2026-01-08 | AS4110 SS |  |  |  | 496d | 466d | 1Detail Engineering | Cast house shed | 4EI |

Notes:
- AS5830: Text4: Gas Treatment Center (GTC-3) & Alumina transportation from GTC-1 to GTC-3
- AS5910: Text4: Gas Treatment Center (GTC-3) & Alumina transportation from GTC-1 to GTC-3
- AS5400: Text4: Gas Treatment Center (GTC-3) & Alumina transportation from GTC-1 to GTC-3
- AS5920: Text4: Gas Treatment Center (GTC-3) & Alumina transportation from GTC-1 to GTC-3
- AS5930: Text4: Gas Treatment Center (GTC-3) & Alumina transportation from GTC-1 to GTC-3
- AS5810: Text4: Gas Treatment Center (GTC-3) & Alumina transportation from GTC-1 to GTC-3
- AS2170: Text4: Additional casting facilities
- AS3290: Text4: Additional casting facilities
- AS4880: Text4: Additional casting facilities
- AS5420: Text4: Additional casting facilities
- AS6530: Text4: Additional casting facilities
- AS3300: Text4: Additional casting facilities
- AS4890: Text4: Additional casting facilities
- AS3310: Text4: Additional casting facilities
- AS4110: Text4: Additional casting facilities
- AS4120: Text4: Additional casting facilities
- AS4130: Text4: Additional casting facilities

| ID | WBS | Activity | Duration | Start | Finish | Predecessors | Total float | Free float | Text1 | Text2 | Text3 | Text4 |
| --- | --- | --- | --- | --- | --- | --- | --- | --- | --- | --- | --- | --- |
|  | CW | **Cast house cooling water** |  | 2026-03-12 | 2026-05-12 |  |  |  |  |  |  |  |
|  | ME | **Mechanical** |  | 2026-03-12 | 2026-04-22 |  |  |  |  |  |  |  |
| AS2180 |  | Mechanical GA of Cast house cooling water | 15d | 2026-03-12 | 2026-03-28 | AS1070, AS1891 FS+26d | 173d | 0d | 1Detail Engineering | Cast house cooling water | 1Mech | Additional casting facilities |
| AS3320 |  | Piping layout drawing of Cast house cooling water | 21d | 2026-03-30 | 2026-04-22 | AS2180 | 173d | 0d | 1Detail Engineering | Cast house cooling water | 1Mech | Additional casting facilities |
|  | CIVIL | **Civil** |  | 2026-03-30 | 2026-04-22 |  |  |  |  |  |  |  |
| AS3330 |  | GA & Sectional details of Cast house cooling water | 15d | 2026-03-30 | 2026-04-15 | AS2180 | 225d | 0d | 1Detail Engineering | Cast house cooling water | 2Civ | Additional casting facilities |
| AS4900 |  | Reinforcement details of Cast house cooling water | 6d | 2026-04-16 | 2026-04-22 | AS3330 | 225d | 0d | 1Detail Engineering | Cast house cooling water | 2Civ | Additional casting facilities |
|  | STR | **Structural** |  | 2026-03-30 | 2026-04-23 |  |  |  |  |  |  |  |
| AS3340 |  | Structural GA of Cast house cooling water | 15d | 2026-03-30 | 2026-04-15 | AS2180 | 224d | 0d | 1Detail Engineering | Cast house cooling water | 3Str | Additional casting facilities |
| AS4910 |  | Structural fabrication drawings of Cast house cooling water | 7d | 2026-04-16 | 2026-04-23 | AS3340 | 224d | 0d | 1Detail Engineering | Cast house cooling water | 3Str | Additional casting facilities |
|  | EI | **E&I** |  | 2026-03-30 | 2026-05-12 |  |  |  |  |  |  |  |
| AS3350 |  | Cable schedule of Cast house cooling water | 7d | 2026-03-30 | 2026-04-06 | AS2180 | 391d | 0d | 1Detail Engineering | Cast house cooling water | 4EI | Additional casting facilities |
| AS4140 |  | Cable tray layout of Cast house cooling water | 14d | 2026-04-07 | 2026-04-22 | AS3350 | 391d | 0d | 1Detail Engineering | Cast house cooling water | 4EI | Additional casting facilities |
| AS4150 |  | Earthing layout of Cast house cooling water | 30d | 2026-04-07 | 2026-05-12 | AS4140 SS | 391d | 218d | 1Detail Engineering | Cast house cooling water | 4EI | Additional casting facilities |
| AS4160 |  | Lighting layout of Cast house cooling water | 21d | 2026-04-07 | 2026-04-30 | AS4140 SS | 400d | 227d | 1Detail Engineering | Cast house cooling water | 4EI | Additional casting facilities |
|  | CR | **Cast house control room (addition in existing facilities)** |  | 2025-11-27 | 2026-02-14 |  |  |  |  |  |  |  |
|  | CIVIL | **Civil** |  | 2025-11-27 | 2026-02-06 |  |  |  |  |  |  |  |
| AS7790 |  | GA & Sectional details of Cast house control room | 30d | 2025-11-27 | 2026-01-01 | AS2010 FS+120d | 498d | 0d | 1Detail Engineering | Cast house control room (addition in existing facilities) | 2Civ | Additional casting facilities |
| AS8610 |  | Reinforcement details of Cast house control room | 30d | 2026-01-02 | 2026-02-06 | AS7790 | 498d | 0d | 1Detail Engineering | Cast house control room (addition in existing facilities) | 2Civ | Additional casting facilities |
|  | EI | **E&I** |  | 2025-11-27 | 2026-02-14 |  |  |  |  |  |  |  |
| AS7800 |  | Equipment layout of Cast house control room | 30d | 2025-11-27 | 2026-01-01 | AS7790 SS, AS1150, AS1160 | 503d | 0d | 1Detail Engineering | Cast house control room (addition in existing facilities) | 4EI | Additional casting facilities |
| AS8620 |  | Cable schedule of GTC Cast house control room | 7d | 2026-01-02 | 2026-01-09 | AS7800 | 503d | 0d | 1Detail Engineering | Cast house control room (addition in existing facilities) | 4EI | Additional casting facilities |
| AS8840 |  | Cable tray layout of Cast house control room | 14d | 2026-01-10 | 2026-01-27 | AS8620 | 503d | 0d | 1Detail Engineering | Cast house control room (addition in existing facilities) | 4EI | Additional casting facilities |
| AS8850 |  | Earthing layout of GTC Cast house control room | 30d | 2026-01-10 | 2026-02-14 | AS8840 SS | 503d | 253d | 1Detail Engineering | Cast house control room (addition in existing facilities) | 4EI | Additional casting facilities |
| AS8860 |  | Lighting layout of GTC Cast house control room | 21d | 2026-01-10 | 2026-02-04 | AS8840 SS | 512d | 262d | 1Detail Engineering | Cast house control room (addition in existing facilities) | 4EI | Additional casting facilities |

| ID | WBS | Activity | Duration | Start | Finish | Predecessors | Complete | Remaining | Planned start | Planned finish | Total float | Free float | Text1 | Text3 | Text4 |
| --- | --- | --- | --- | --- | --- | --- | --- | --- | --- | --- | --- | --- | --- | --- | --- |
|  | LTTC | **Ladle & Tapping tube cleaning (addition in existing facilities)** |  | 2025-09-26 | 2026-03-21 |  |  |  |  |  |  |  |  |  |  |
|  | ME | **Mechanical** |  | 2025-12-22 | 2026-02-03 |  |  |  |  |  |  |  |  |  |  |
| AS2190 |  | Mechanical GA of LTCS | 15d | 2025-12-22 | 2026-01-08 | AS1070, AS2011 |  |  |  |  | 226d | 0d | 1Detail Engineering | 1Mech | Additional casting facilities |
| AS3360 |  | Piping layout drawing of LTCS | 21d | 2026-01-09 | 2026-02-03 | AS2190 |  |  |  |  | 447d | 250d | 1Detail Engineering | 1Mech | Additional casting facilities |
|  | CIVIL | **Civil** |  | 2025-09-26 | 2026-02-13 |  |  |  |  |  |  |  |  |  |  |
| AS4920 |  | GA & Sectional details of LTCS | 15d | 2025-09-26 A | 2026-01-28 | AS3370 | 100% | 0d | 2026-01-27 | 2026-02-12 | 282d | 0d | 1Detail Engineering | 2Civ | Additional casting facilities |
| AS5430 |  | Reinforcement details of LTCS | 15d | 2025-09-26 A | 2026-02-13 | AS4920 |  | 15d | 2026-02-13 | 2026-03-02 | 282d | 0d | 1Detail Engineering | 2Civ | Additional casting facilities |
|  | STR | **Structural** |  | 2026-01-09 | 2026-03-21 |  |  |  |  |  |  |  |  |  |  |
| AS3370 |  | Structural GA of LTCS | 15d | 2026-01-09 | 2026-01-27 | AS2190 |  |  |  |  | 226d | 0d | 1Detail Engineering | 3Str | Additional casting facilities |
| AS4930 |  | Structural fabrication drawings of LTCS | 45d | 2026-01-28 | 2026-03-21 | AS3370 |  |  |  |  | 226d | 24d | 1Detail Engineering | 3Str | Additional casting facilities |
|  | EI | **E&I** |  | 2026-01-09 | 2026-02-21 |  |  |  |  |  |  |  |  |  |  |
| AS3380 |  | Cable schedule of LTCS | 7d | 2026-01-09 | 2026-01-16 | AS2190 |  |  |  |  | 457d | 0d | 1Detail Engineering | 4EI | Additional casting facilities |
| AS4170 |  | Cable tray layout of LTCS | 14d | 2026-01-17 | 2026-02-03 | AS3380 |  |  |  |  | 457d | 0d | 1Detail Engineering | 4EI | Additional casting facilities |
| AS4180 |  | Earthing layout of LTCS | 30d | 2026-01-17 | 2026-02-21 | AS4170 SS |  |  |  |  | 457d | 260d | 1Detail Engineering | 4EI | Additional casting facilities |
| AS4190 |  | Lighting layout of LTCS | 21d | 2026-01-17 | 2026-02-11 | AS4170 SS |  |  |  |  | 466d | 269d | 1Detail Engineering | 4EI | Additional casting facilities |
|  | REL | **Relocation of existing Alloy shed** |  | 2025-10-31 | 2026-03-30 |  |  |  |  |  |  |  |  |  |  |
|  | ME | **Mechanical** |  | 2025-10-31 | 2025-11-12 |  |  |  |  |  |  |  |  |  |  |
| AS2200 |  | Mechanical GA of Alloy shed | 10d | 2025-10-31 | 2025-11-12 | AS1070 FS+185d |  |  |  |  | 69d | 0d | 1Detail Engineering | 1Mech | Additional casting facilities |
|  | CIVIL | **Civil** |  | 2025-11-13 | 2025-11-29 |  |  |  |  |  |  |  |  |  |  |
| AS4940 |  | GA & Sectional details of Alloy shed | 15d | 2025-11-13 | 2025-11-29 | AS3390 SS |  |  |  |  | 69d | 0d | 1Detail Engineering | 2Civ | Additional casting facilities |
| AS5440 |  | Reinforcement details of Alloy shed | 15d | 2025-11-13 | 2025-11-29 | AS4940 SS |  |  |  |  | 69d | 0d | 1Detail Engineering | 2Civ | Additional casting facilities |
|  | STR | **Structural** |  | 2025-11-13 | 2026-01-05 |  |  |  |  |  |  |  |  |  |  |
| AS3390 |  | Structural GA of Alloy shed | 15d | 2025-11-13 | 2025-11-29 | AS2200 |  |  |  |  | 69d | 0d | 1Detail Engineering | 3Str | Additional casting facilities |
| AS4950 |  | Structural fabrication drawings of Alloy shed | 30d | 2025-12-01 | 2026-01-05 | AS3390 |  |  |  |  | 289d | 0d | 1Detail Engineering | 3Str | Additional casting facilities |

Notes:
- AS2190: Text2: Ladle & Tapping tube cleaning (addition in existing facilities)
- AS3360: Text2: Ladle & Tapping tube cleaning (addition in existing facilities)
- AS4920: Text2: Ladle & Tapping tube cleaning (addition in existing facilities)
- AS5430: Text2: Ladle & Tapping tube cleaning (addition in existing facilities)
- AS3370: Text2: Ladle & Tapping tube cleaning (addition in existing facilities)
- AS4930: Text2: Ladle & Tapping tube cleaning (addition in existing facilities)
- AS3380: Text2: Ladle & Tapping tube cleaning (addition in existing facilities)
- AS4170: Text2: Ladle & Tapping tube cleaning (addition in existing facilities)
- AS4180: Text2: Ladle & Tapping tube cleaning (addition in existing facilities)
- AS4190: Text2: Ladle & Tapping tube cleaning (addition in existing facilities)
- AS2200: Text2: Relocation of existing Alloy shed
- AS4940: Text2: Relocation of existing Alloy shed
- AS5440: Text2: Relocation of existing Alloy shed
- AS3390: Text2: Relocation of existing Alloy shed
- AS4950: Text2: Relocation of existing Alloy shed

| ID | WBS | Activity | Duration | Start | Finish | Predecessors | Total float | Free float | Text1 | Text2 | Text3 | Text4 |
| --- | --- | --- | --- | --- | --- | --- | --- | --- | --- | --- | --- | --- |
|  | EI | **E&I** |  | 2026-02-14 | 2026-03-30 |  |  |  |  |  |  |  |
| AS3400 |  | Cable schedule of Alloy shed | 7d | 2026-02-14 | 2026-02-21 | AS2200 FS+78d | 453d | 0d | 1Detail Engineering | Relocation of existing Alloy shed | 4EI | Additional casting facilities |
| AS4200 |  | Cable tray layout of Alloy shed | 14d | 2026-02-23 | 2026-03-11 | AS3400 | 453d | 0d | 1Detail Engineering | Relocation of existing Alloy shed | 4EI | Additional casting facilities |
| AS4210 |  | Earthing layout of Alloy shed | 30d | 2026-02-23 | 2026-03-30 | AS4200 SS | 453d | 164d | 1Detail Engineering | Relocation of existing Alloy shed | 4EI | Additional casting facilities |
| AS4220 |  | Lighting layout of Alloy shed | 21d | 2026-02-23 | 2026-03-19 | AS4200 SS | 462d | 173d | 1Detail Engineering | Relocation of existing Alloy shed | 4EI | Additional casting facilities |
|  | SS | **Cast house sub station (addition in existing facilities)** |  | 2026-01-09 | 2026-03-30 |  |  |  |  |  |  |  |
|  | CIVIL | **Civil** |  | 2026-01-09 | 2026-03-21 |  |  |  |  |  |  |  |
| AS8670 |  | GA & Sectional details of Cast house sub station | 30d | 2026-01-09 | 2026-02-13 | AS7780 FS+75d, AS3010 FS+12d | 448d | 0d | 1Detail Engineering | Cast house sub station (addition in existing facilities) | 2Civ | Additional casting facilities |
| AS9470 |  | Reinforcement details of Cast house sub station | 30d | 2026-02-14 | 2026-03-21 | AS8670 | 448d | 0d | 1Detail Engineering | Cast house sub station (addition in existing facilities) | 2Civ | Additional casting facilities |
|  | EI | **E&I** |  | 2026-01-09 | 2026-03-30 |  |  |  |  |  |  |  |
| AS8680 |  | Equipment layout of Cast house sub station | 30d | 2026-01-09 | 2026-02-13 | AS8670 SS, AS1160, AS1150 | 453d | 0d | 1Detail Engineering | Cast house sub station (addition in existing facilities) | 4EI | Additional casting facilities |
| AS9480 |  | Cable schedule of Cast house sub station | 7d | 2026-02-14 | 2026-02-21 | AS8680 | 453d | 0d | 1Detail Engineering | Cast house sub station (addition in existing facilities) | 4EI | Additional casting facilities |
| AS9650 |  | Cable tray layout of Cast house sub station | 14d | 2026-02-23 | 2026-03-11 | AS9480 | 453d | 0d | 1Detail Engineering | Cast house sub station (addition in existing facilities) | 4EI | Additional casting facilities |
| AS9660 |  | Earthing layout of Cast house sub station | 30d | 2026-02-23 | 2026-03-30 | AS9650 SS | 453d | 217d | 1Detail Engineering | Cast house sub station (addition in existing facilities) | 4EI | Additional casting facilities |
| AS9670 |  | Lighting layout of Cast house sub station | 21d | 2026-02-23 | 2026-03-19 | AS9650 SS | 462d | 226d | 1Detail Engineering | Cast house sub station (addition in existing facilities) | 4EI | Additional casting facilities |
|  | CPCH | **Coke Handling System (Platform & Rake extension)** |  | 2026-02-19 | 2026-04-30 |  |  |  |  |  |  |  |
|  | ME | **Mechanical** |  | 2026-02-19 | 2026-04-02 |  |  |  |  |  |  |  |
| AS2210 |  | Mechanical GA of Coke handling | 15d | 2026-02-19 | 2026-03-09 | AS1070, AS1240 FS+78d | 106d | 0d | 1Detail Engineering | Coke Handling System (Platform & Rake extension) | 1Mech | Coke Handling System (Platform & Rake extension) |
| AS3410 |  | Piping layout drawing of Coke handling | 21d | 2026-03-10 | 2026-04-02 | AS2210 | 424d | 318d | 1Detail Engineering | Coke Handling System (Platform & Rake extension) | 1Mech | Coke Handling System (Platform & Rake extension) |
|  | CIVIL | **Civil** |  | 2026-03-27 | 2026-04-09 |  |  |  |  |  |  |  |
| AS4960 |  | GA & Sectional details of Coke handling | 12d | 2026-03-27 | 2026-04-09 | AS3420 | 106d | 0d | 1Detail Engineering | Coke Handling System (Platform & Rake extension) | 2Civ | Coke Handling System (Platform & Rake extension) |
| AS5450 |  | Reinforcement details of Coke handling | 12d | 2026-03-27 | 2026-04-09 | AS4960 SS | 106d | 0d | 1Detail Engineering | Coke Handling System (Platform & Rake extension) | 2Civ | Coke Handling System (Platform & Rake extension) |
|  | STR | **Structural** |  | 2026-03-10 | 2026-04-30 |  |  |  |  |  |  |  |
| AS3420 |  | Structural GA of Coke handling | 15d | 2026-03-10 | 2026-03-26 | AS2210 | 106d | 0d | 1Detail Engineering | Coke Handling System (Platform & Rake extension) | 3Str | Coke Handling System (Platform & Rake extension) |
| AS4970 |  | Structural fabrication drawings of Coke handling | 30d | 2026-03-27 | 2026-04-30 | AS3420 | 244d | 138d | 1Detail Engineering | Coke Handling System (Platform & Rake extension) | 3Str | Coke Handling System (Platform & Rake extension) |

| ID | WBS | Activity | Duration | Start | Finish | Predecessors | Remaining | Planned start | Planned finish | Total float | Free float | Text1 | Text2 | Text3 | Text4 |
| --- | --- | --- | --- | --- | --- | --- | --- | --- | --- | --- | --- | --- | --- | --- | --- |
|  | EI | **E&I** |  | 2026-03-10 | 2026-04-10 |  |  |  |  |  |  |  |  |  |  |
| AS3430 |  | Cable schedule of Coke handling | 7d | 2026-03-10 | 2026-03-17 | AS2210 |  |  |  | 443d | 0d | 1Detail Engineering | Coke Handling System (Platform & Rake extension) | 4EI | Coke Handling System (Platform & Rake extension) |
| AS4230 |  | Cable tray layout of Coke handling | 14d | 2026-03-18 | 2026-04-02 | AS3430 |  |  |  | 443d | 0d | 1Detail Engineering | Coke Handling System (Platform & Rake extension) | 4EI | Coke Handling System (Platform & Rake extension) |
| AS4240 |  | Earthing layout of Coke handling | 15d | 2026-03-18 | 2026-04-03 | AS4230 SS |  |  |  | 449d | 343d | 1Detail Engineering | Coke Handling System (Platform & Rake extension) | 4EI | Coke Handling System (Platform & Rake extension) |
| AS4250 |  | Lighting layout of Coke handling | 21d | 2026-03-18 | 2026-04-10 | AS4230 SS |  |  |  | 443d | 337d | 1Detail Engineering | Coke Handling System (Platform & Rake extension) | 4EI | Coke Handling System (Platform & Rake extension) |
|  | GAP | **Green Anode Plant (GAP)** |  | 2025-08-08 | 2026-05-12 |  |  |  |  |  |  |  |  |  |  |
|  | MB | **GAP Main building** |  | 2025-08-08 | 2026-05-02 |  |  |  |  |  |  |  |  |  |  |
|  | ME | **Mechanical** |  | 2025-08-08 | 2026-03-02 |  |  |  |  |  |  |  |  |  |  |
| AS6050 |  | Mechanical GA of GAP | 13d | 2025-08-08 A | 2025-12-23 | AS5250 SS+68d | 45d | 2025-10-01 | 2025-10-16 | 10d | 0d | 1Detail Engineering | Green Anode Plant (GAP) | 1Mech | Green Anode Plant (GAP) |
| AS7670 |  | Piping layout drawing of GAP | 57d | 2025-12-24 | 2026-03-02 | AS6050 |  |  |  | 191d | 181d | 1Detail Engineering | Green Anode Plant (GAP) | 1Mech | Green Anode Plant (GAP) |
|  | CIVIL | **Civil** |  | 2025-12-05 | 2025-12-26 |  |  |  |  |  |  |  |  |  |  |
| AS8550 |  | GA & Sectional details of GAP | 13d | 2025-12-05 | 2025-12-19 | AS6050 SS+96d |  |  |  | 46d | 0d | 1Detail Engineering | Green Anode Plant (GAP) | 2Civ | Green Anode Plant (GAP) |
| AS9210 |  | Reinforcement details of GAP | 18d | 2025-12-05 | 2025-12-26 | AS8550 SS |  |  |  | 46d | 17d | 1Detail Engineering | Green Anode Plant (GAP) | 2Civ | Green Anode Plant (GAP) |
|  | STR | **Structural** |  | 2026-01-23 | 2026-05-02 |  |  |  |  |  |  |  |  |  |  |
| AS7680 |  | Structural GA of GAP | 31d | 2026-01-23 | 2026-02-28 | AS6050 FS+25d |  |  |  | 24d | 0d | 1Detail Engineering | Green Anode Plant (GAP) | 3Str | Green Anode Plant (GAP) |
| AS8560 |  | Structural fabrication drawings of GAP | 52d | 2026-03-02 | 2026-05-02 | AS7680 |  |  |  | 24d | 0d | 1Detail Engineering | Green Anode Plant (GAP) | 3Str | Green Anode Plant (GAP) |
|  | EI | **E&I** |  | 2026-01-31 | 2026-04-14 |  |  |  |  |  |  |  |  |  |  |
| AS7690 |  | Cable schedule of GAP | 7d | 2026-01-31 | 2026-02-07 | AS6050 FS+31d |  |  |  | 181d | 0d | 1Detail Engineering | Green Anode Plant (GAP) | 4EI | Green Anode Plant (GAP) |
| AS7810 |  | Cable tray layout of GAP | 14d | 2026-02-09 | 2026-02-24 | AS7690 |  |  |  | 181d | 0d | 1Detail Engineering | Green Anode Plant (GAP) | 4EI | Green Anode Plant (GAP) |
| AS7820 |  | Earthing layout of GAP | 30d | 2026-02-09 | 2026-03-16 | AS7810 SS |  |  |  | 206d | 196d | 1Detail Engineering | Green Anode Plant (GAP) | 4EI | Green Anode Plant (GAP) |
| AS7830 |  | Lighting layout of GAP | 21d | 2026-03-21 | 2026-04-14 | AS7810 FS+20d |  |  |  | 181d | 171d | 1Detail Engineering | Green Anode Plant (GAP) | 4EI | Green Anode Plant (GAP) |
|  | SS | **Sub-Station for GAP** |  | 2025-11-15 | 2026-02-03 |  |  |  |  |  |  |  |  |  |  |
|  | CIVIL | **Civil** |  | 2025-11-15 | 2025-12-10 |  |  |  |  |  |  |  |  |  |  |
| AS7580 |  | GA & Sectional details of Sub-Station for GAP | 22d | 2025-11-15 | 2025-12-10 | AS6050 SS+79d |  |  |  | 29d | 0d | 1Detail Engineering | Sub-Station for GAP | 2Civ | Green Anode Plant (GAP) |
| AS8390 |  | Reinforcement details of Sub-Station for GAP | 22d | 2025-11-15 | 2025-12-10 | AS7580 SS |  |  |  | 29d | 0d | 1Detail Engineering | Sub-Station for GAP | 2Civ | Green Anode Plant (GAP) |

| ID | WBS | Activity | Duration | Start | Finish | Predecessors | Total float | Free float | Text1 | Text2 | Text3 | Text4 |
| --- | --- | --- | --- | --- | --- | --- | --- | --- | --- | --- | --- | --- |
|  | EI | **E&I** |  | 2025-11-15 | 2026-02-03 |  |  |  |  |  |  |  |
| AS7590 |  | Equipment layout of Sub-Station for GAP | 30d | 2025-11-15 | 2025-12-19 | AS7580 SS | 240d | 0d | 1Detail Engineering | Sub-Station for GAP | 4EI | Green Anode Plant (GAP) |
| AS8400 |  | Cable schedule of Sub-Station for GAP | 7d | 2025-12-20 | 2025-12-29 | AS7590 | 240d | 0d | 1Detail Engineering | Sub-Station for GAP | 4EI | Green Anode Plant (GAP) |
| AS8580 |  | Cable tray layout of Sub-Station for GAP | 14d | 2025-12-30 | 2026-01-14 | AS8400 | 240d | 0d | 1Detail Engineering | Sub-Station for GAP | 4EI | Green Anode Plant (GAP) |
| AS8590 |  | Earthing layout of Sub-Station for GAP | 30d | 2025-12-30 | 2026-02-03 | AS8580 SS | 240d | 211d | 1Detail Engineering | Sub-Station for GAP | 4EI | Green Anode Plant (GAP) |
| AS8600 |  | Lighting layout of Sub-Station for GAP | 21d | 2025-12-30 | 2026-01-22 | AS8580 SS | 249d | 220d | 1Detail Engineering | Sub-Station for GAP | 4EI | Green Anode Plant (GAP) |
|  | HTM | **Heat transfer medium (HTM) plant** |  | 2025-11-11 | 2026-03-16 |  |  |  |  |  |  |  |
|  | ME | **Mechanical** |  | 2025-11-11 | 2025-12-22 |  |  |  |  |  |  |  |
| AS6060 |  | Mechanical GA of HTM | 15d | 2025-11-11 | 2025-11-27 | AS6050 SS+75d | 61d | 0d | 1Detail Engineering | Heat transfer medium (HTM) plant | 1Mech | Green Anode Plant (GAP) |
| AS7300 |  | Piping layout drawing of HTM | 21d | 2025-11-28 | 2025-12-22 | AS6060 | 332d | 276d | 1Detail Engineering | Heat transfer medium (HTM) plant | 1Mech | Green Anode Plant (GAP) |
|  | CIVIL | **Civil** |  | 2026-01-03 | 2026-03-16 |  |  |  |  |  |  |  |
| AS1720 |  | GA & Sectional details of HTM | 30d | 2026-01-03 | 2026-02-07 | AS7310 | 61d | 0d | 1Detail Engineering | Heat transfer medium (HTM) plant | 2Civ | Green Anode Plant (GAP) |
| AS4530 |  | Reinforcement details of HTM | 30d | 2026-02-09 | 2026-03-16 | AS1720 | 61d | 5d | 1Detail Engineering | Heat transfer medium (HTM) plant | 2Civ | Green Anode Plant (GAP) |
|  | STR | **Structural** |  | 2025-11-28 | 2026-02-25 |  |  |  |  |  |  |  |
| AS7310 |  | Structural GA of HTM | 30d | 2025-11-28 | 2026-01-02 | AS6060 | 61d | 0d | 1Detail Engineering | Heat transfer medium (HTM) plant | 3Str | Green Anode Plant (GAP) |
| AS7990 |  | Structural fabrication drawings of HTM | 45d | 2026-01-03 | 2026-02-25 | AS7310 | 79d | 55d | 1Detail Engineering | Heat transfer medium (HTM) plant | 3Str | Green Anode Plant (GAP) |
|  | EI | **E&I** |  | 2025-11-28 | 2026-01-10 |  |  |  |  |  |  |  |
| AS7320 |  | Cable schedule of HTM | 7d | 2025-11-28 | 2025-12-05 | AS6060 | 367d | 0d | 1Detail Engineering | Heat transfer medium (HTM) plant | 4EI | Green Anode Plant (GAP) |
| AS7500 |  | Cable tray layout of HTM | 14d | 2025-12-06 | 2025-12-22 | AS7320 | 367d | 0d | 1Detail Engineering | Heat transfer medium (HTM) plant | 4EI | Green Anode Plant (GAP) |
| AS7510 |  | Earthing layout of HTM | 30d | 2025-12-06 | 2026-01-10 | AS7500 SS | 367d | 311d | 1Detail Engineering | Heat transfer medium (HTM) plant | 4EI | Green Anode Plant (GAP) |
| AS7520 |  | Lighting layout of HTM | 21d | 2025-12-06 | 2025-12-31 | AS7500 SS | 376d | 320d | 1Detail Engineering | Heat transfer medium (HTM) plant | 4EI | Green Anode Plant (GAP) |
|  | CT2 | **Cooling Tower-2 (addition in existing facilities)** |  | 2026-03-12 | 2026-05-12 |  |  |  |  |  |  |  |
|  | ME | **Mechanical** |  | 2026-03-12 | 2026-04-22 |  |  |  |  |  |  |  |
| AS2220 |  | Mechanical GA of Cooling Tower-2 | 15d | 2026-03-12 | 2026-03-28 | AS1070, AS1891 FS+26d | 113d | 0d | 1Detail Engineering | Cooling Tower-2 (addition in existing facilities) | 1Mech | Green Anode Plant (GAP) |
| AS3440 |  | Piping layout drawing of Cooling Tower-2 | 21d | 2026-03-30 | 2026-04-22 | AS2220 | 356d | 276d | 1Detail Engineering | Cooling Tower-2 (addition in existing facilities) | 1Mech | Green Anode Plant (GAP) |

| ID | WBS | Activity | Duration | Start | Finish | Predecessors | Total float | Free float | Text1 | Text3 | Text4 |
| --- | --- | --- | --- | --- | --- | --- | --- | --- | --- | --- | --- |
|  | CIVIL | **Civil** |  | 2026-03-30 | 2026-05-04 |  |  |  |  |  |  |
| AS3450 |  | GA & Sectional details of Cooling Tower-2 | 15d | 2026-03-30 | 2026-04-15 | AS2220 | 113d | 0d | 1Detail Engineering | 2Civ | Green Anode Plant (GAP) |
| AS4980 |  | Reinforcement details of Cooling Tower-2 | 15d | 2026-04-16 | 2026-05-04 | AS3450 | 113d | 0d | 1Detail Engineering | 2Civ | Green Anode Plant (GAP) |
|  | EI | **E&I** |  | 2026-03-30 | 2026-05-12 |  |  |  |  |  |  |
| AS3460 |  | Cable schedule of Cooling Tower-2 | 7d | 2026-03-30 | 2026-04-06 | AS2220 | 340d | 0d | 1Detail Engineering | 4EI | Green Anode Plant (GAP) |
| AS4260 |  | Cable tray layout of Cooling Tower-2 | 14d | 2026-04-07 | 2026-04-22 | AS3460 | 340d | 0d | 1Detail Engineering | 4EI | Green Anode Plant (GAP) |
| AS4270 |  | Earthing layout of Cooling Tower-2 | 30d | 2026-04-07 | 2026-05-12 | AS4260 SS | 340d | 260d | 1Detail Engineering | 4EI | Green Anode Plant (GAP) |
| AS4280 |  | Lighting layout of Cooling Tower-2 | 21d | 2026-04-07 | 2026-04-30 | AS4260 SS | 349d | 269d | 1Detail Engineering | 4EI | Green Anode Plant (GAP) |
|  | EF | **Connection with existing facilities (Pitch Tank, Butt Silo, Coke Silo)** |  | 2025-12-24 | 2026-03-10 |  |  |  |  |  |  |
|  | ME | **Mechanical** |  | 2025-12-24 | 2026-01-17 |  |  |  |  |  |  |
| AS7700 |  | Interconnection detail with existing Pitch tank | 21d | 2025-12-24 | 2026-01-17 | AS6050 | 305d | 0d | 1Detail Engineering | 1Mech | Green Anode Plant (GAP) |
| AS7710 |  | Interconnection detail with existing Butt silo | 21d | 2025-12-24 | 2026-01-17 | AS6050 | 315d | 0d | 1Detail Engineering | 1Mech | Green Anode Plant (GAP) |
| AS7720 |  | Interconnection detail with existing Coke silo | 21d | 2025-12-24 | 2026-01-17 | AS6050 | 315d | 0d | 1Detail Engineering | 1Mech | Green Anode Plant (GAP) |
|  | CIVIL | **Civil** |  | 2026-02-13 | 2026-03-10 |  |  |  |  |  |  |
| AS8730 |  | Civil work addition/modification in existing Pitch Tank | 21d | 2026-02-13 | 2026-03-10 | AS8290 | 305d | 0d | 1Detail Engineering | 2Civ | Green Anode Plant (GAP) |
| AS8740 |  | Civil work addition/modification in existing Butt silo | 21d | 2026-02-13 | 2026-03-10 | AS8300 | 315d | 10d | 1Detail Engineering | 2Civ | Green Anode Plant (GAP) |
| AS8750 |  | Civil work addition/modification in existing Coke silo | 21d | 2026-02-13 | 2026-03-10 | AS8310 | 315d | 10d | 1Detail Engineering | 2Civ | Green Anode Plant (GAP) |
|  | STR | **Structural** |  | 2026-01-19 | 2026-02-12 |  |  |  |  |  |  |
| AS8290 |  | Structural work addition/modification in existing Pitch Tank | 21d | 2026-01-19 | 2026-02-12 | AS7700 | 305d | 0d | 1Detail Engineering | 3Str | Green Anode Plant (GAP) |
| AS8300 |  | Structural work addition/modification in existing Butt silo | 21d | 2026-01-19 | 2026-02-12 | AS7710 | 315d | 0d | 1Detail Engineering | 3Str | Green Anode Plant (GAP) |
| AS8310 |  | Structural work addition/modification in existing Coke silo | 21d | 2026-01-19 | 2026-02-12 | AS7720 | 315d | 0d | 1Detail Engineering | 3Str | Green Anode Plant (GAP) |
|  | EI | **E&I** |  | 2026-01-19 | 2026-02-04 |  |  |  |  |  |  |
| AS8320 |  | E&I work addition/modification in existing Pitch Tank | 14d | 2026-01-19 | 2026-02-04 | AS7700 | 421d | 116d | 1Detail Engineering | 4EI | Green Anode Plant (GAP) |
| AS8330 |  | E&I work addition/modification in existing Butt silo | 14d | 2026-01-19 | 2026-02-04 | AS7710 | 421d | 116d | 1Detail Engineering | 4EI | Green Anode Plant (GAP) |
| AS8340 |  | E&I work addition/modification in existing Coke silo | 14d | 2026-01-19 | 2026-02-04 | AS7720 | 421d | 116d | 1Detail Engineering | 4EI | Green Anode Plant (GAP) |

Notes:
- AS3450: Text2: Cooling Tower-2 (addition in existing facilities)
- AS4980: Text2: Cooling Tower-2 (addition in existing facilities)
- AS3460: Text2: Cooling Tower-2 (addition in existing facilities)
- AS4260: Text2: Cooling Tower-2 (addition in existing facilities)
- AS4270: Text2: Cooling Tower-2 (addition in existing facilities)
- AS4280: Text2: Cooling Tower-2 (addition in existing facilities)
- AS7700: Text2: Connection with existing facilities (Pitch Tank, Butt Silo, Coke Silo)
- AS7710: Text2: Connection with existing facilities (Pitch Tank, Butt Silo, Coke Silo)
- AS7720: Text2: Connection with existing facilities (Pitch Tank, Butt Silo, Coke Silo)
- AS8730: Text2: Connection with existing facilities (Pitch Tank, Butt Silo, Coke Silo)
- AS8740: Text2: Connection with existing facilities (Pitch Tank, Butt Silo, Coke Silo)
- AS8750: Text2: Connection with existing facilities (Pitch Tank, Butt Silo, Coke Silo)
- AS8290: Text2: Connection with existing facilities (Pitch Tank, Butt Silo, Coke Silo)
- AS8300: Text2: Connection with existing facilities (Pitch Tank, Butt Silo, Coke Silo)
- AS8310: Text2: Connection with existing facilities (Pitch Tank, Butt Silo, Coke Silo)
- AS8320: Text2: Connection with existing facilities (Pitch Tank, Butt Silo, Coke Silo)
- AS8330: Text2: Connection with existing facilities (Pitch Tank, Butt Silo, Coke Silo)
- AS8340: Text2: Connection with existing facilities (Pitch Tank, Butt Silo, Coke Silo)

| ID | WBS | Activity | Duration | Start | Finish | Predecessors | Complete | Remaining | Planned start | Planned finish | Total float | Free float | Text1 | Text2 | Text3 | Text4 |
| --- | --- | --- | --- | --- | --- | --- | --- | --- | --- | --- | --- | --- | --- | --- | --- | --- |
|  | ABF | **Anode Baking Furnace (ABF)** |  | 2025-04-29 | 2026-04-18 |  |  |  |  |  |  |  |  |  |  |  |
|  | ABFS | **ABF Shed Building structure** |  | 2025-04-29 | 2026-02-09 |  |  |  |  |  |  |  |  |  |  |  |
|  | ME | **Mechanical** |  | 2025-04-29 | 2025-11-26 |  |  |  |  |  |  |  |  |  |  |  |
| AS2230 |  | Mechanical GA of ABF Shed | 18d | 2025-04-29 A | 2025-05-20 A | AS1270 FS+52d | 100% |  |  |  |  |  | 1Detail Engineering | Anode Baking Furnace (ABF) | 1Mech | Anode Baking Furnace (ABF) |
| AS3470 |  | Piping layout drawing of ABF Shed | 21d | 2025-11-01 | 2025-11-26 | AS2230 FS+135d |  |  |  |  | 465d | 431d | 1Detail Engineering | Anode Baking Furnace (ABF) | 1Mech | Anode Baking Furnace (ABF) |
|  | CIVIL | **Civil** |  | 2025-11-18 | 2026-01-28 |  |  |  |  |  |  |  |  |  |  |  |
| AS4990 |  | GA & Sectional details of ABF Shed | 30d | 2025-11-18 | 2025-12-22 | AS3480, AS1140 |  |  |  |  | 179d | 0d | 1Detail Engineering | Anode Baking Furnace (ABF) | 2Civ | Anode Baking Furnace (ABF) |
| AS5460 |  | Reinforcement details of ABF Shed | 30d | 2025-12-23 | 2026-01-28 | AS4990 |  |  |  |  | 179d | 0d | 1Detail Engineering | Anode Baking Furnace (ABF) | 2Civ | Anode Baking Furnace (ABF) |
|  | STR | **Structural** |  | 2025-05-21 | 2026-02-09 |  |  |  |  |  |  |  |  |  |  |  |
| AS3480 |  | Structural GA of ABF Shed | 61d | 2025-05-21 A | 2025-11-17 | AS2230 | 77% | 14d | 2025-05-21 | 2025-07-31 | 40d | 0d | 1Detail Engineering | Anode Baking Furnace (ABF) | 3Str | Anode Baking Furnace (ABF) |
| AS5000 |  | Structural fabrication drawings of ABF Shed | 50d | 2025-12-11 | 2026-02-09 | AS3480, AS1890 FS+26d |  |  |  |  | 20d | 0d | 1Detail Engineering | Anode Baking Furnace (ABF) | 3Str | Anode Baking Furnace (ABF) |
|  | EI | **E&I** |  | 2025-11-01 | 2025-12-15 |  |  |  |  |  |  |  |  |  |  |  |
| AS3490 |  | Cable schedule of ABF Shed | 7d | 2025-11-01 | 2025-11-10 | AS2230 FS+135d |  |  |  |  | 460d | 0d | 1Detail Engineering | Anode Baking Furnace (ABF) | 4EI | Anode Baking Furnace (ABF) |
| AS4290 |  | Cable tray layout of ABF Shed | 14d | 2025-11-11 | 2025-11-26 | AS3490 |  |  |  |  | 460d | 0d | 1Detail Engineering | Anode Baking Furnace (ABF) | 4EI | Anode Baking Furnace (ABF) |
| AS4300 |  | Earthing layout of ABF Shed | 30d | 2025-11-11 | 2025-12-15 | AS4290 SS |  |  |  |  | 460d | 426d | 1Detail Engineering | Anode Baking Furnace (ABF) | 4EI | Anode Baking Furnace (ABF) |
| AS4310 |  | Lighting layout of ABF Shed | 21d | 2025-11-11 | 2025-12-04 | AS4290 SS |  |  |  |  | 469d | 435d | 1Detail Engineering | Anode Baking Furnace (ABF) | 4EI | Anode Baking Furnace (ABF) |
|  | F | **Furnace** |  | 2025-06-20 | 2025-12-13 |  |  |  |  |  |  |  |  |  |  |  |
|  | ME | **Mechanical** |  | 2025-06-20 | 2025-12-03 |  |  |  |  |  |  |  |  |  |  |  |
| AS3500 |  | Mechanical GA of Furnace | 15d | 2025-06-20 A | 2025-07-08 A | AS2230 FS+26d | 100% |  |  |  |  |  | 1Detail Engineering | Furnace | 1Mech | Anode Baking Furnace (ABF) |
| AS4590 |  | Piping layout drawing of Furnace | 21d | 2025-11-10 | 2025-12-03 | AS3500 FS+100d |  |  |  |  | 383d | 353d | 1Detail Engineering | Furnace | 1Mech | Anode Baking Furnace (ABF) |
|  | CIVIL | **Civil** |  | 2025-08-01 | 2025-08-30 |  |  |  |  |  |  |  |  |  |  |  |
| AS5340 |  | GA & Sectional details of Furnace | 30d | 2025-08-01 A | 2025-08-30 A | AS4600 | 100% |  | 2025-08-13 | 2025-09-19 |  |  | 1Detail Engineering | Furnace | 2Civ | Anode Baking Furnace (ABF) |
| AS5740 |  | Reinforcement details of Furnace | 30d | 2025-08-01 A | 2025-08-30 A | AS5340 | 100% |  | 2025-08-13 | 2025-09-19 |  |  | 1Detail Engineering | Furnace | 2Civ | Anode Baking Furnace (ABF) |
|  | STR | **Structural** |  | 2025-07-09 | 2025-08-12 |  |  |  |  |  |  |  |  |  |  |  |
| AS4600 |  | Structural GA of Furnace | 30d | 2025-07-09 A | 2025-08-12 A | AS3500 | 100% |  |  |  |  |  | 1Detail Engineering | Furnace | 3Str | Anode Baking Furnace (ABF) |

| ID | WBS | Activity | Duration | Start | Finish | Predecessors | Complete | Remaining | Planned start | Planned finish | Total float | Free float | Text1 | Text2 | Text3 | Text4 |
| --- | --- | --- | --- | --- | --- | --- | --- | --- | --- | --- | --- | --- | --- | --- | --- | --- |
|  | REF | **Refractory** |  | 2025-08-01 | 2025-11-17 |  |  |  |  |  |  |  |  |  |  |  |
| AS4610 |  | Refractory details of Furnace | 30d | 2025-08-01 A | 2025-11-17 | AS3500 FS+30d | 53% | 14d | 2025-08-13 | 2025-09-19 | 164d | 11d | 1Detail Engineering | Furnace | 5Refr | Anode Baking Furnace (ABF) |
|  | EI | **E&I** |  | 2025-10-31 | 2025-12-13 |  |  |  |  |  |  |  |  |  |  |  |
| AS4620 |  | Cable schedule of Furnace | 7d | 2025-10-31 | 2025-11-08 | AS3500 FS+90d |  |  |  |  | 452d | 0d | 1Detail Engineering | Furnace | 4EI | Anode Baking Furnace (ABF) |
| AS4800 |  | Cable tray layout of Furnace | 14d | 2025-11-10 | 2025-11-25 | AS4620 |  |  |  |  | 452d | 0d | 1Detail Engineering | Furnace | 4EI | Anode Baking Furnace (ABF) |
| AS4810 |  | Earthing layout of Furnace | 30d | 2025-11-10 | 2025-12-13 | AS4800 SS |  |  |  |  | 452d | 422d | 1Detail Engineering | Furnace | 4EI | Anode Baking Furnace (ABF) |
| AS4820 |  | Lighting layout of Furnace | 21d | 2025-11-10 | 2025-12-03 | AS4800 SS |  |  |  |  | 461d | 431d | 1Detail Engineering | Furnace | 4EI | Anode Baking Furnace (ABF) |
|  | SS | **Sub-station for ABF** |  | 2025-08-21 | 2026-01-19 |  |  |  |  |  |  |  |  |  |  |  |
|  | CIVIL | **Civil** |  | 2025-08-21 | 2025-11-28 |  |  |  |  |  |  |  |  |  |  |  |
| AS8870 |  | GA & Sectional details of Sub-Station for ABF | 12d | 2025-08-21 A | 2025-11-14 | AS7760 FS+39d |  | 12d | 2025-09-04 | 2025-09-18 | 68d | 0d | 1Detail Engineering | Sub-station for ABF | 2Civ | Anode Baking Furnace (ABF) |
| AS9620 |  | Reinforcement details of Sub-Station for ABF | 12d | 2025-08-21 A | 2025-11-28 | AS8870 |  | 12d | 2025-09-19 | 2025-10-03 | 68d | 30d | 1Detail Engineering | Sub-station for ABF | 2Civ | Anode Baking Furnace (ABF) |
|  | EI | **E&I** |  | 2025-10-31 | 2026-01-19 |  |  |  |  |  |  |  |  |  |  |  |
| AS8880 |  | Equipment layout of Sub-Station for ABF | 30d | 2025-10-31 | 2025-12-05 | AS8870 SS+50d |  |  |  |  | 358d | 0d | 1Detail Engineering | Sub-station for ABF | 4EI | Anode Baking Furnace (ABF) |
| AS9630 |  | Cable schedule of Sub-Station for ABF | 7d | 2025-12-06 | 2025-12-13 | AS8880 |  |  |  |  | 358d | 0d | 1Detail Engineering | Sub-station for ABF | 4EI | Anode Baking Furnace (ABF) |
| AS9730 |  | Cable tray layout of Sub-Station for ABF | 14d | 2025-12-15 | 2025-12-31 | AS9630 |  |  |  |  | 358d | 0d | 1Detail Engineering | Sub-station for ABF | 4EI | Anode Baking Furnace (ABF) |
| AS9740 |  | Earthing layout of Sub-Station for ABF | 30d | 2025-12-15 | 2026-01-19 | AS9730 SS |  |  |  |  | 358d | 308d | 1Detail Engineering | Sub-station for ABF | 4EI | Anode Baking Furnace (ABF) |
| AS9750 |  | Lighting layout of Sub-Station for ABF | 21d | 2025-12-15 | 2026-01-08 | AS9730 SS |  |  |  |  | 367d | 317d | 1Detail Engineering | Sub-station for ABF | 4EI | Anode Baking Furnace (ABF) |
|  | BR | **Blower Room (addition in existing facilities)** |  | 2025-12-02 | 2026-01-20 |  |  |  |  |  |  |  |  |  |  |  |
|  | ME | **Mechanical** |  | 2025-12-02 | 2025-12-26 |  |  |  |  |  |  |  |  |  |  |  |
| AS3520 |  | Interconnection detail with existing Blower room | 21d | 2025-12-02 | 2025-12-26 | AS2230 FS+160d |  |  |  |  | 397d | 0d | 1Detail Engineering | Blower Room (addition in existing facilities) | 1Mech | Anode Baking Furnace (ABF) |
|  | CIVIL | **Civil** |  | 2025-12-27 | 2026-01-20 |  |  |  |  |  |  |  |  |  |  |  |
| AS4660 |  | Civil work addition/modification in existing Blower room | 21d | 2025-12-27 | 2026-01-20 | AS3520 |  |  |  |  | 397d | 359d | 1Detail Engineering | Blower Room (addition in existing facilities) | 2Civ | Anode Baking Furnace (ABF) |
|  | EI | **E&I** |  | 2025-12-27 | 2026-01-12 |  |  |  |  |  |  |  |  |  |  |  |
| AS4670 |  | E&I work addition/modification in existing Blower room | 14d | 2025-12-27 | 2026-01-12 | AS3520 |  |  |  |  | 508d | 418d | 1Detail Engineering | Blower Room (addition in existing facilities) | 4EI | Anode Baking Furnace (ABF) |

| ID | WBS | Activity | Duration | Start | Finish | Predecessors | Complete | Planned start | Planned finish | Total float | Free float | Text1 | Text3 | Text4 |
| --- | --- | --- | --- | --- | --- | --- | --- | --- | --- | --- | --- | --- | --- | --- |
|  | SSD | **Sub soil drainage system for ABF** |  | 2025-08-01 | 2025-08-09 |  |  |  |  |  |  |  |  |  |
|  | ME | **Mechanical** |  | 2025-08-01 | 2025-08-09 |  |  |  |  |  |  |  |  |  |
| AS3510 |  | Mechanical GA of Sub soil drainage system for ABF | 15d | 2025-08-01 A | 2025-08-09 A | AS2230 FS+52d | 100% | 2025-08-13 | 2025-09-01 |  |  | 1Detail Engineering | 1Mech | Anode Baking Furnace (ABF) |
|  | CIVIL | **Civil** |  | 2025-08-01 | 2025-08-09 |  |  |  |  |  |  |  |  |  |
| AS4640 |  | GA & Sectional details of Sub soil drainage system for ABF | 15d | 2025-08-01 A | 2025-08-09 A | AS3510 | 100% | 2025-09-02 | 2025-09-19 |  |  | 1Detail Engineering | 2Civ | Anode Baking Furnace (ABF) |
| AS5360 |  | Reinforcement details of Sub soil drainage system for ABF | 15d | 2025-08-01 A | 2025-08-09 A | AS4640 | 100% | 2025-09-20 | 2025-10-08 |  |  | 1Detail Engineering | 2Civ | Anode Baking Furnace (ABF) |
|  | ARAD | **Air Receiver & Air dryer (addition in existing facilities)** |  | 2025-12-02 | 2026-01-20 |  |  |  |  |  |  |  |  |  |
|  | ME | **Mechanical** |  | 2025-12-02 | 2025-12-26 |  |  |  |  |  |  |  |  |  |
| AS3550 |  | Interconnection detail with existing Air Receiver | 21d | 2025-12-02 | 2025-12-26 | AS2230 FS+160d |  |  |  | 449d | 0d | 1Detail Engineering | 1Mech | Anode Baking Furnace (ABF) |
| AS3560 |  | Interconnection detail with existing Air dryer | 21d | 2025-12-02 | 2025-12-26 | AS2230 FS+160d |  |  |  | 449d | 0d | 1Detail Engineering | 1Mech | Anode Baking Furnace (ABF) |
|  | CIVIL | **Civil** |  | 2025-12-27 | 2026-01-20 |  |  |  |  |  |  |  |  |  |
| AS4720 |  | Civil work addition/modification in existing Air Receiver | 21d | 2025-12-27 | 2026-01-20 | AS3550 |  |  |  | 449d | 411d | 1Detail Engineering | 2Civ | Anode Baking Furnace (ABF) |
| AS4730 |  | Civil work addition/modification in existing Air dryer | 21d | 2025-12-27 | 2026-01-20 | AS3560 |  |  |  | 449d | 411d | 1Detail Engineering | 2Civ | Anode Baking Furnace (ABF) |
|  | EI | **E&I** |  | 2025-12-27 | 2026-01-12 |  |  |  |  |  |  |  |  |  |
| AS4740 |  | E&I work addition/modification in existing Air Receiver | 14d | 2025-12-27 | 2026-01-12 | AS3550 |  |  |  | 508d | 470d | 1Detail Engineering | 4EI | Anode Baking Furnace (ABF) |
| AS4750 |  | E&I work addition/modification in existing Air dryer | 14d | 2025-12-27 | 2026-01-12 | AS3560 |  |  |  | 508d | 470d | 1Detail Engineering | 4EI | Anode Baking Furnace (ABF) |
|  | CAS | **Compressed Air Station & Compressor Control Room (addition in existing facilities)** |  | 2025-11-26 | 2026-01-14 |  |  |  |  |  |  |  |  |  |
|  | ME | **Mechanical** |  | 2025-11-26 | 2025-12-26 |  |  |  |  |  |  |  |  |  |
| AS3530 |  | Interconnection detail with existing Compressed Air Station | 21d | 2025-11-26 | 2025-12-19 | AS2230 FS+155d |  |  |  | 428d | 0d | 1Detail Engineering | 1Mech | Anode Baking Furnace (ABF) |
| AS3540 |  | Interconnection detail with existing Compressor Control Room | 21d | 2025-12-02 | 2025-12-26 | AS2230 FS+160d |  |  |  | 508d | 0d | 1Detail Engineering | 1Mech | Anode Baking Furnace (ABF) |
|  | CIVIL | **Civil** |  | 2025-12-20 | 2026-01-14 |  |  |  |  |  |  |  |  |  |
| AS4680 |  | Civil work addition/modification in existing Compressed Air Station | 21d | 2025-12-20 | 2026-01-14 | AS3530 |  |  |  | 428d | 390d | 1Detail Engineering | 2Civ | Anode Baking Furnace (ABF) |
| AS4690 |  | Civil work addition/modification in existing Compressor Control Room | 21d | 2025-12-20 | 2026-01-14 | AS3530 |  |  |  | 428d | 390d | 1Detail Engineering | 2Civ | Anode Baking Furnace (ABF) |
|  | EI | **E&I** |  | 2025-12-20 | 2026-01-12 |  |  |  |  |  |  |  |  |  |
| AS4700 |  | E&I work addition/modification in existing Compressed Air Station | 14d | 2025-12-20 | 2026-01-06 | AS3530 |  |  |  | 513d | 449d | 1Detail Engineering | 4EI | Anode Baking Furnace (ABF) |
| AS4710 |  | E&I work addition/modification in existing Compressor Control Room | 14d | 2025-12-27 | 2026-01-12 | AS3540 |  |  |  | 508d | 444d | 1Detail Engineering | 4EI | Anode Baking Furnace (ABF) |

Notes:
- AS3510: Text2: Sub soil drainage system for ABF
- AS4640: Text2: Sub soil drainage system for ABF
- AS5360: Text2: Sub soil drainage system for ABF
- AS3550: Text2: Air Receiver & Air dryer (addition in existing facilities)
- AS3560: Text2: Air Receiver & Air dryer (addition in existing facilities)
- AS4720: Text2: Air Receiver & Air dryer (addition in existing facilities)
- AS4730: Text2: Air Receiver & Air dryer (addition in existing facilities)
- AS4740: Text2: Air Receiver & Air dryer (addition in existing facilities)
- AS4750: Text2: Air Receiver & Air dryer (addition in existing facilities)
- AS3530: Text2: Compressed Air Station & Compressor Control Room (addition in existing facilities)
- AS3540: Text2: Compressed Air Station & Compressor Control Room (addition in existing facilities)
- AS4680: Text2: Compressed Air Station & Compressor Control Room (addition in existing facilities)
- AS4690: Text2: Compressed Air Station & Compressor Control Room (addition in existing facilities)
- AS4700: Text2: Compressed Air Station & Compressor Control Room (addition in existing facilities)
- AS4710: Text2: Compressed Air Station & Compressor Control Room (addition in existing facilities)

| ID | WBS | Activity | Duration | Start | Finish | Predecessors | Total float | Free float | Text1 | Text2 | Text3 | Text4 |
| --- | --- | --- | --- | --- | --- | --- | --- | --- | --- | --- | --- | --- |
|  | MCC | **MCC Room (addition in existing facilities)** |  | 2026-01-27 | 2026-03-09 |  |  |  |  |  |  |  |
|  | CIVIL | **Civil** |  | 2026-01-27 | 2026-02-19 |  |  |  |  |  |  |  |
| AS9640 |  | Civil work addition/modification in existing MCC room | 21d | 2026-01-27 | 2026-02-19 | AS8870 FS+60d | 436d | 0d | 1Detail Engineering | MCC Room (addition in existing facilities) | 2Civ | Anode Baking Furnace (ABF) |
|  | EI | **E&I** |  | 2026-02-20 | 2026-03-09 |  |  |  |  |  |  |  |
| AS9840 |  | E&I work addition/modification in existing MCC room | 14d | 2026-02-20 | 2026-03-09 | AS9640 | 448d | 372d | 1Detail Engineering | MCC Room (addition in existing facilities) | 4EI | Anode Baking Furnace (ABF) |
|  | CT3 | **Cooling Tower-3 (addition in existing facilities)** |  | 2026-03-12 | 2026-04-18 |  |  |  |  |  |  |  |
|  | ME | **Mechanical** |  | 2026-03-12 | 2026-03-25 |  |  |  |  |  |  |  |
| AS3570 |  | Interconnection detail with existing CT-3 | 12d | 2026-03-12 | 2026-03-25 | AS2230, AS1891 FS+26d | 179d | 0d | 1Detail Engineering | Cooling Tower-3 (addition in existing facilities) | 1Mech | Anode Baking Furnace (ABF) |
|  | CIVIL | **Civil** |  | 2026-03-26 | 2026-04-18 |  |  |  |  |  |  |  |
| AS4760 |  | Civil work addition/modification in existing CT-3 | 21d | 2026-03-26 | 2026-04-18 | AS3570 | 179d | 0d | 1Detail Engineering | Cooling Tower-3 (addition in existing facilities) | 2Civ | Anode Baking Furnace (ABF) |
|  | EI | **E&I** |  | 2026-03-26 | 2026-04-10 |  |  |  |  |  |  |  |
| AS4770 |  | E&I work addition/modification in existing CT-3 | 14d | 2026-03-26 | 2026-04-10 | AS3570 | 394d | 342d | 1Detail Engineering | Cooling Tower-3 (addition in existing facilities) | 4EI | Anode Baking Furnace (ABF) |
|  | FTC | **Fume Treatment Centre (FTC)** |  | 2026-03-06 | 2026-08-21 |  |  |  |  |  |  |  |
|  | ME | **Mechanical** |  | 2026-03-06 | 2026-04-22 |  |  |  |  |  |  |  |
| AS8790 |  | Mechanical GA of FTC | 15d | 2026-03-06 | 2026-03-23 | AS5590 SS+104d | 54d | 0d | 1Detail Engineering | Fume Treatment Centre (FTC) | 1Mech | Fume Treatment Centre (FTC) |
| AS9800 |  | Piping layout drawing of FTC | 26d | 2026-03-24 | 2026-04-22 | AS8790 | 180d | 167d | 1Detail Engineering | Fume Treatment Centre (FTC) | 1Mech | Fume Treatment Centre (FTC) |
|  | CIVIL | **Civil** |  | 2026-04-10 | 2026-05-06 |  |  |  |  |  |  |  |
| AS10020 |  | GA & Sectional details of FTC | 7d | 2026-04-10 | 2026-04-17 | AS9810 | 54d | 0d | 1Detail Engineering | Fume Treatment Centre (FTC) | 2Civ | Fume Treatment Centre (FTC) |
| AS10550 |  | Reinforcement details of FTC | 15d | 2026-04-18 | 2026-05-06 | AS10020 | 54d | 0d | 1Detail Engineering | Fume Treatment Centre (FTC) | 2Civ | Fume Treatment Centre (FTC) |
|  | STR | **Structural** |  | 2026-03-24 | 2026-04-17 |  |  |  |  |  |  |  |
| AS9810 |  | Structural GA of FTC | 15d | 2026-03-24 | 2026-04-09 | AS8790 | 54d | 0d | 1Detail Engineering | Fume Treatment Centre (FTC) | 3Str | Fume Treatment Centre (FTC) |
| AS10030 |  | Structural fabrication drawings of FTC | 7d | 2026-04-10 | 2026-04-17 | AS9810 | 80d | 0d | 1Detail Engineering | Fume Treatment Centre (FTC) | 3Str | Fume Treatment Centre (FTC) |
|  | EI | **E&I** |  | 2026-07-08 | 2026-08-21 |  |  |  |  |  |  |  |
| AS9820 |  | Cable schedule of FTC | 7d | 2026-07-08 | 2026-07-15 | AS8790 FS+90d | 167d | 0d | 1Detail Engineering | Fume Treatment Centre (FTC) | 4EI | Fume Treatment Centre (FTC) |
| AS9850 |  | Cable tray layout of FTC | 14d | 2026-07-17 | 2026-08-01 | AS9820 | 167d | 0d | 1Detail Engineering | Fume Treatment Centre (FTC) | 4EI | Fume Treatment Centre (FTC) |
| AS9860 |  | Earthing layout of FTC | 30d | 2026-07-17 | 2026-08-21 | AS9850 SS | 167d | 154d | 1Detail Engineering | Fume Treatment Centre (FTC) | 4EI | Fume Treatment Centre (FTC) |
| AS9870 |  | Lighting layout of FTC | 21d | 2026-07-17 | 2026-08-10 | AS9850 SS | 176d | 163d | 1Detail Engineering | Fume Treatment Centre (FTC) | 4EI | Fume Treatment Centre (FTC) |

| ID | WBS | Activity | Duration | Start | Finish | Predecessors | Total float | Free float | Text1 | Text3 |
| --- | --- | --- | --- | --- | --- | --- | --- | --- | --- | --- |
|  | GBAH | **Green and baked anode handling system and anode cleaning system** |  | 2026-01-01 | 2026-03-31 |  |  |  |  |  |
|  | ME | **Mechanical** |  | 2026-01-01 | 2026-02-12 |  |  |  |  |  |
| AS2240 |  | Mechanical GA of Anode handling and storage system | 15d | 2026-01-01 | 2026-01-17 | AS1260 FS+156d | 117d | 0d | 1Detail Engineering | 1Mech |
| AS3580 |  | Piping layout drawing of Anode handling and storage system | 21d | 2026-01-19 | 2026-02-12 | AS2240 | 416d | 299d | 1Detail Engineering | 1Mech |
|  | CIVIL | **Civil** |  | 2026-02-06 | 2026-03-13 |  |  |  |  |  |
| AS5010 |  | GA & Sectional details of Anode handling and storage system | 15d | 2026-02-06 | 2026-02-23 | AS3590 | 132d | 0d | 1Detail Engineering | 2Civ |
| AS5470 |  | Reinforcement details of Anode handling and storage system | 15d | 2026-02-24 | 2026-03-13 | AS5010 | 132d | 0d | 1Detail Engineering | 2Civ |
|  | STR | **Structural** |  | 2026-01-19 | 2026-03-31 |  |  |  |  |  |
| AS3590 |  | Structural GA of Anode handling and storage system | 15d | 2026-01-19 | 2026-02-05 | AS2240 | 117d | 0d | 1Detail Engineering | 3Str |
| AS5020 |  | Structural fabrication drawings of Anode handling and storage system | 45d | 2026-02-06 | 2026-03-31 | AS3590 | 117d | 0d | 1Detail Engineering | 3Str |
|  | EI | **E&I** |  | 2026-01-19 | 2026-03-03 |  |  |  |  |  |
| AS3600 |  | Cable schedule of Anode handling and storage system | 7d | 2026-01-19 | 2026-01-27 | AS2240 | 426d | 0d | 1Detail Engineering | 4EI |
| AS4320 |  | Cable tray layout of Anode handling and storage system | 14d | 2026-01-28 | 2026-02-12 | AS3600 | 426d | 0d | 1Detail Engineering | 4EI |
| AS4330 |  | Earthing layout of Anode handling and storage system | 30d | 2026-01-28 | 2026-03-03 | AS4320 SS | 426d | 309d | 1Detail Engineering | 4EI |
| AS4340 |  | Lighting layout of Anode handling and storage system | 21d | 2026-01-28 | 2026-02-20 | AS4320 SS | 435d | 318d | 1Detail Engineering | 4EI |
|  | ARS | **Anode Rodding Shop** |  | 2025-07-04 | 2026-07-27 |  |  |  |  |  |
|  | ARSEF | **Anode Rodding Shop (addition in existing facilities)** |  | 2026-04-25 | 2026-07-27 |  |  |  |  |  |
|  | ME | **Mechanical** |  | 2026-04-25 | 2026-06-25 |  |  |  |  |  |
| AS2250 |  | Interconnection detail with existing ARS | 26d | 2026-04-25 | 2026-05-26 | AS1290 FS+156d, AS6300 | 124d | 0d | 1Detail Engineering | 1Mech |
| AS3900 |  | Piping interconnection detail with existing ARS | 26d | 2026-05-27 | 2026-06-25 | AS2250 | 176d | 134d | 1Detail Engineering | 1Mech |
|  | CIVIL | **Civil** |  | 2026-05-27 | 2026-07-27 |  |  |  |  |  |
| AS4830 |  | Civil work addition/modification in existing ARS | 52d | 2026-05-27 | 2026-07-27 | AS2250 | 124d | 82d | 1Detail Engineering | 2Civ |
|  | STR | **Structural** |  |  |  |  |  |  |  |  |
|  | EI | **E&I** |  | 2026-05-27 | 2026-06-25 |  |  |  |  |  |
| AS3920 |  | E&I work addition/modification in existing ARS | 26d | 2026-05-27 | 2026-06-25 | AS2250 | 202d | 160d | 1Detail Engineering | 4EI |

Notes:
- AS2240: Text2: Green and baked anode handling system and anode cleaning system / Text4: Green and baked anode handling system and anode cleaning system
- AS3580: Text2: Green and baked anode handling system and anode cleaning system / Text4: Green and baked anode handling system and anode cleaning system
- AS5010: Text2: Green and baked anode handling system and anode cleaning system / Text4: Green and baked anode handling system and anode cleaning system
- AS5470: Text2: Green and baked anode handling system and anode cleaning system / Text4: Green and baked anode handling system and anode cleaning system
- AS3590: Text2: Green and baked anode handling system and anode cleaning system / Text4: Green and baked anode handling system and anode cleaning system
- AS5020: Text2: Green and baked anode handling system and anode cleaning system / Text4: Green and baked anode handling system and anode cleaning system
- AS3600: Text2: Green and baked anode handling system and anode cleaning system / Text4: Green and baked anode handling system and anode cleaning system
- AS4320: Text2: Green and baked anode handling system and anode cleaning system / Text4: Green and baked anode handling system and anode cleaning system
- AS4330: Text2: Green and baked anode handling system and anode cleaning system / Text4: Green and baked anode handling system and anode cleaning system
- AS4340: Text2: Green and baked anode handling system and anode cleaning system / Text4: Green and baked anode handling system and anode cleaning system
- AS2250: Text2: Anode Rodding Shop (addition in existing facilities) / Text4: Anode Rodding Shop
- AS3900: Text2: Anode Rodding Shop (addition in existing facilities) / Text4: Anode Rodding Shop
- AS4830: Text2: Anode Rodding Shop (addition in existing facilities) / Text4: Anode Rodding Shop
- AS3920: Text2: Anode Rodding Shop (addition in existing facilities) / Text4: Anode Rodding Shop

| ID | WBS | Activity | Duration | Start | Finish | Predecessors | Complete | Planned start | Planned finish | Total float | Free float | Text1 | Text2 | Text3 | Text4 |
| --- | --- | --- | --- | --- | --- | --- | --- | --- | --- | --- | --- | --- | --- | --- | --- |
|  | SS | **Sub-station for ARS (addition in existing facilities)** |  | 2026-05-27 | 2026-07-06 |  |  |  |  |  |  |  |  |  |  |
|  | CIVIL | **Civil** |  | 2026-05-27 | 2026-06-19 |  |  |  |  |  |  |  |  |  |  |
| AS7840 |  | Civil work addition/modification in existing Sub-station for ARS | 21d | 2026-05-27 | 2026-06-19 | AS2250, AS2010 |  |  |  | 370d | 0d | 1Detail Engineering | Sub-station for ARS (addition in existing facilities) | 2Civ | Anode Rodding Shop |
|  | EI | **E&I** |  | 2026-06-20 | 2026-07-06 |  |  |  |  |  |  |  |  |  |  |
| AS8520 |  | E&I work addition/modification in existing Sub-station for ARS | 14d | 2026-06-20 | 2026-07-06 | AS7840 |  |  |  | 370d | 99d | 1Detail Engineering | Sub-station for ARS (addition in existing facilities) | 4EI | Anode Rodding Shop |
|  | AASS | **Rodded Anode Assembly storage shed** |  | 2025-07-04 | 2026-02-11 |  |  |  |  |  |  |  |  |  |  |
|  | ME | **Mechanical** |  | 2025-07-04 | 2025-07-23 |  |  |  |  |  |  |  |  |  |  |
| AS2260 |  | Mechanical GA of Rodded Anode Assembly storage shed | 12d | 2025-07-04 A | 2025-07-23 A | AS1070 FS+90d | 100% | 2025-07-04 | 2025-07-17 |  |  | 1Detail Engineering | Rodded Anode Assembly storage shed | 1Mech | Anode Rodding Shop |
|  | CIVIL | **Civil** |  | 2025-07-24 | 2025-08-01 |  |  |  |  |  |  |  |  |  |  |
| AS5030 |  | GA & Sectional details of Rodded Anode Assembly storage shed | 12d | 2025-07-24 A | 2025-08-01 A | AS3610 | 100% | 2025-09-02 | 2025-09-15 |  |  | 1Detail Engineering | Rodded anode assembly & storage shed | 2Civ | Anode Rodding Shop |
| AS5480 |  | Reinforcement details of Rodded Anode Assembly storage shed | 12d | 2025-07-24 A | 2025-08-01 A | AS5030 | 100% | 2025-09-16 | 2025-09-30 |  |  | 1Detail Engineering | Rodded anode assembly & storage shed | 2Civ | Anode Rodding Shop |
|  | STR | **Structural** |  | 2025-08-01 | 2026-01-27 |  |  |  |  |  |  |  |  |  |  |
| AS3610 |  | Structural GA of Rodded Anode Assembly storage shed | 12d | 2025-08-01 A | 2025-08-05 A | AS2260 | 100% | 2025-08-18 | 2025-09-01 |  |  | 1Detail Engineering | Rodded anode assembly & storage shed | 3Str | Anode Rodding Shop |
| AS5040 |  | Structural fabrication drawings of Rodded Anode Assembly storage shed | 39d | 2025-12-11 | 2026-01-27 | AS3610, AS1971 FS+26d |  |  |  | 42d | 0d | 1Detail Engineering | Rodded anode assembly & storage shed | 3Str | Anode Rodding Shop |
|  | EI | **E&I** |  | 2025-09-30 | 2026-02-11 |  |  |  |  |  |  |  |  |  |  |
| AS4370 |  | Lighting layout of Rodded Anode Assembly storage shed | 21d | 2025-09-30 A | 2025-09-30 A | AS4350 SS | 100% | 2026-01-07 | 2026-01-31 |  |  | 1Detail Engineering | Rodded anode assembly & storage shed | 4EI | Anode Rodding Shop |
| AS3620 |  | Cable schedule of Rodded Anode Assembly storage shed | 7d | 2025-12-30 | 2026-01-06 | AS2260 FS+130d |  |  |  | 466d | 0d | 1Detail Engineering | Rodded anode assembly & storage shed | 4EI | Anode Rodding Shop |
| AS4350 |  | Cable tray layout of Rodded Anode Assembly storage shed | 14d | 2026-01-07 | 2026-01-22 | AS3620 |  |  |  | 466d | 0d | 1Detail Engineering | Rodded anode assembly & storage shed | 4EI | Anode Rodding Shop |
| AS4360 |  | Earthing layout of Rodded Anode Assembly storage shed | 30d | 2026-01-07 | 2026-02-11 | AS4350 SS |  |  |  | 466d | 131d | 1Detail Engineering | Rodded anode assembly & storage shed | 4EI | Anode Rodding Shop |
|  | UTI | **Utilities & Offsite activities** |  | 2025-07-07 | 2026-05-09 |  |  |  |  |  |  |  |  |  |  |
|  | DS-PH | **Sub soil drainage system & pump house** |  | 2025-11-04 | 2026-05-09 |  |  |  |  |  |  |  |  |  |  |
|  | ME | **Mechanical** |  | 2025-11-04 | 2026-03-20 |  |  |  |  |  |  |  |  |  |  |
| AS2270 |  | Mechanical GA of Sub soil drainage sump & pump house | 15d | 2025-11-04 | 2025-11-21 | AS1070 FS+190d |  |  |  | 259d | 0d | 1Detail Engineering | Sub soil drainage system & pump house | 1Mech | Utilities & Offsite activities |
| AS3630 |  | Piping layout drawing of Sub soil drainage sump & pump house | 21d | 2026-02-24 | 2026-03-20 | AS2270 FS+78d |  |  |  | 417d | 158d | 1Detail Engineering | Sub soil drainage system & pump house | 1Mech | Utilities & Offsite activities |

| ID | WBS | Activity | Duration | Start | Finish | Predecessors | Complete | Planned start | Planned finish | Total float | Free float | Text1 | Text2 | Text3 | Text4 |
| --- | --- | --- | --- | --- | --- | --- | --- | --- | --- | --- | --- | --- | --- | --- | --- |
|  | CIVIL | **Civil** |  | 2025-12-29 | 2026-03-10 |  |  |  |  |  |  |  |  |  |  |
| AS5050 |  | GA & Sectional details of Sub soil drainage sump & pump house | 30d | 2025-12-29 | 2026-02-02 | AS3640 |  |  |  | 296d | 0d | 1Detail Engineering | Sub soil drainage system & pump house | 2Civ | Utilities & Offsite activities |
| AS5490 |  | Reinforcement details of Sub soil drainage sump & pump house | 30d | 2026-02-03 | 2026-03-10 | AS5050 |  |  |  | 296d | 0d | 1Detail Engineering | Sub soil drainage system & pump house | 2Civ | Utilities & Offsite activities |
|  | STR | **Structural** |  | 2025-11-22 | 2026-02-19 |  |  |  |  |  |  |  |  |  |  |
| AS3640 |  | Structural GA of Sub soil drainage sump & pump house | 30d | 2025-11-22 | 2025-12-27 | AS2270 |  |  |  | 259d | 0d | 1Detail Engineering | Sub soil drainage system & pump house | 3Str | Utilities & Offsite activities |
| AS5060 |  | Structural fabrication drawings of Sub soil drainage sump & pump house | 45d | 2025-12-29 | 2026-02-19 | AS3640 |  |  |  | 259d | 0d | 1Detail Engineering | Sub soil drainage system & pump house | 3Str | Utilities & Offsite activities |
|  | EI | **E&I** |  | 2026-03-27 | 2026-05-09 |  |  |  |  |  |  |  |  |  |  |
| AS3650 |  | Cable schedule of Sub soil drainage sump & pump house | 7d | 2026-03-27 | 2026-04-03 | AS2270 FS+104d |  |  |  | 427d | 0d | 1Detail Engineering | Sub soil drainage system & pump house | 4EI | Utilities & Offsite activities |
| AS4380 |  | Cable tray layout of Sub soil drainage sump & pump house | 14d | 2026-04-04 | 2026-04-20 | AS3650 |  |  |  | 427d | 0d | 1Detail Engineering | Sub soil drainage system & pump house | 4EI | Utilities & Offsite activities |
| AS4390 |  | Earthing layout of Sub soil drainage sump & pump house | 30d | 2026-04-04 | 2026-05-09 | AS4380 SS |  |  |  | 427d | 168d | 1Detail Engineering | Sub soil drainage system & pump house | 4EI | Utilities & Offsite activities |
| AS4400 |  | Lighting layout of Sub soil drainage sump & pump house | 21d | 2026-04-04 | 2026-04-28 | AS4380 SS |  |  |  | 436d | 177d | 1Detail Engineering | Sub soil drainage system & pump house | 4EI | Utilities & Offsite activities |
|  | OHT-DW | **Over head tank - Drinking water** |  | 2025-07-07 | 2026-02-12 |  |  |  |  |  |  |  |  |  |  |
|  | ME | **Mechanical** |  | 2025-07-07 | 2026-01-12 |  |  |  |  |  |  |  |  |  |  |
| AS2830 |  | Mechanical GA of Over head tank - Drinking water | 15d | 2025-07-07 A | 2025-07-07 A | AS1390 FS+36d | 100% | 2025-08-13 | 2025-09-01 |  |  | 1Detail Engineering | Over head tank - Drinking water | 1Mech | Utilities & Offsite activities |
| AS3930 |  | Piping layout drawing of Over head tank - Drinking water | 21d | 2025-12-18 | 2026-01-12 | AS2830 FS+135d |  |  |  | 499d | 293d | 1Detail Engineering | Over head tank - Drinking water | 1Mech | Utilities & Offsite activities |
|  | CIVIL | **Civil** |  | 2025-08-08 | 2025-08-08 |  |  |  |  |  |  |  |  |  |  |
| AS5160 |  | GA & Sectional details of Over head tank - Drinking water | 30d | 2025-08-08 A | 2025-08-08 A | AS3940 | 100% | 2025-09-20 | 2025-10-27 |  |  | 1Detail Engineering | Over head tank - Drinking water | 2Civ | Utilities & Offsite activities |
| AS5600 |  | Reinforcement details of Over head tank - Drinking water | 30d | 2025-08-08 A | 2025-08-08 A | AS5160 | 100% | 2025-10-28 | 2025-12-02 |  |  | 1Detail Engineering | Over head tank - Drinking water | 2Civ | Utilities & Offsite activities |
|  | STR | **Structural** |  | 2025-11-01 | 2026-01-30 |  |  |  |  |  |  |  |  |  |  |
| AS3940 |  | Structural GA of Over head tank - Drinking water | 30d | 2025-11-01 | 2025-12-06 | AS2830 FS+96d |  |  |  | 243d | 0d | 1Detail Engineering | Over head tank - Drinking water | 3Str | Utilities & Offsite activities |
| AS5170 |  | Structural fabrication drawings of Over head tank - Drinking water | 45d | 2025-12-08 | 2026-01-30 | AS3940 |  |  |  | 354d | 148d | 1Detail Engineering | Over head tank - Drinking water | 3Str | Utilities & Offsite activities |
|  | EI | **E&I** |  | 2025-12-31 | 2026-02-12 |  |  |  |  |  |  |  |  |  |  |
| AS3950 |  | Cable schedule of Over head tank - Drinking water | 7d | 2025-12-31 | 2026-01-07 | AS2830 FS+145d |  |  |  | 499d | 0d | 1Detail Engineering | Over head tank - Drinking water | 4EI | Utilities & Offsite activities |
| AS4470 |  | Cable tray layout of Over head tank - Drinking water | 14d | 2026-01-08 | 2026-01-23 | AS3950 |  |  |  | 499d | 0d | 1Detail Engineering | Over head tank - Drinking water | 4EI | Utilities & Offsite activities |
| AS4480 |  | Earthing layout of Over head tank - Drinking water | 30d | 2026-01-08 | 2026-02-12 | AS4470 SS |  |  |  | 499d | 293d | 1Detail Engineering | Over head tank - Drinking water | 4EI | Utilities & Offsite activities |
| AS4490 |  | Lighting layout of Over head tank - Drinking water | 21d | 2026-01-08 | 2026-02-02 | AS4470 SS |  |  |  | 508d | 302d | 1Detail Engineering | Over head tank - Drinking water | 4EI | Utilities & Offsite activities |

| ID | WBS | Activity | Duration | Start | Finish | Predecessors | Complete | Planned start | Planned finish | Total float | Free float | Text1 | Text2 | Text3 | Text4 |
| --- | --- | --- | --- | --- | --- | --- | --- | --- | --- | --- | --- | --- | --- | --- | --- |
|  | OHT-CLW | **Over head tank - Clarified water** |  | 2025-07-07 | 2026-02-13 |  |  |  |  |  |  |  |  |  |  |
|  | ME | **Mechanical** |  | 2025-07-07 | 2026-01-12 |  |  |  |  |  |  |  |  |  |  |
| AS2840 |  | Mechanical GA of Over head tank - Clarified water | 15d | 2025-07-07 A | 2025-07-07 A | AS1390 FS+36d | 100% | 2025-08-13 | 2025-09-01 |  |  | 1Detail Engineering | Over head tank - Clarified water | 1Mech | Utilities & Offsite activities |
| AS3960 |  | Piping layout drawing of Over head tank - Clarified water | 21d | 2025-12-18 | 2026-01-12 | AS2840 FS+135d |  |  |  | 499d | 293d | 1Detail Engineering | Over head tank - Clarified water | 1Mech | Utilities & Offsite activities |
|  | CIVIL | **Civil** |  | 2025-07-29 | 2025-07-29 |  |  |  |  |  |  |  |  |  |  |
| AS5180 |  | GA & Sectional details of Over head tank - Clarified water | 30d | 2025-07-29 A | 2025-07-29 A | AS3970 | 100% | 2025-09-20 | 2025-10-27 |  |  | 1Detail Engineering | Over head tank - Clarified water | 2Civ | Utilities & Offsite activities |
| AS5610 |  | Reinforcement details of Over head tank - Clarified water | 30d | 2025-07-29 A | 2025-07-29 A | AS5180 | 100% | 2025-10-28 | 2025-12-02 |  |  | 1Detail Engineering | Over head tank - Clarified water | 2Civ | Utilities & Offsite activities |
|  | STR | **Structural** |  | 2025-11-01 | 2026-01-30 |  |  |  |  |  |  |  |  |  |  |
| AS3970 |  | Structural GA of Over head tank - Clarified water | 30d | 2025-11-01 | 2025-12-06 | AS2840 FS+96d |  |  |  | 243d | 0d | 1Detail Engineering | Over head tank - Clarified water | 3Str | Utilities & Offsite activities |
| AS5190 |  | Structural fabrication drawings of Over head tank - Clarified water | 45d | 2025-12-08 | 2026-01-30 | AS3970 |  |  |  | 354d | 148d | 1Detail Engineering | Over head tank - Clarified water | 3Str | Utilities & Offsite activities |
|  | EI | **E&I** |  | 2025-12-31 | 2026-02-13 |  |  |  |  |  |  |  |  |  |  |
| AS3980 |  | Cable schedule of Over head tank - Clarified water | 7d | 2025-12-31 | 2026-01-07 | AS2840 FS+145d |  |  |  | 498d | 0d | 1Detail Engineering | Over head tank - Clarified water | 4EI | Utilities & Offsite activities |
| AS4500 |  | Cable tray layout of Over head tank - Clarified water | 14d | 2026-01-08 | 2026-01-23 | AS3980 |  |  |  | 498d | 0d | 1Detail Engineering | Over head tank - Clarified water | 4EI | Utilities & Offsite activities |
| AS4510 |  | Earthing layout of Over head tank - Clarified water | 30d | 2026-01-08 | 2026-02-12 | AS4500 SS |  |  |  | 499d | 293d | 1Detail Engineering | Over head tank - Clarified water | 4EI | Utilities & Offsite activities |
| AS4520 |  | Lighting layout of Over head tank - Clarified water | 21d | 2026-01-20 | 2026-02-13 | AS4500 SS+10d |  |  |  | 498d | 292d | 1Detail Engineering | Over head tank - Clarified water | 4EI | Utilities & Offsite activities |
|  | SWDS | **Storm water drainage system** |  | 2025-11-11 | 2026-02-07 |  |  |  |  |  |  |  |  |  |  |
|  | ME | **Mechanical** |  | 2025-11-11 | 2025-11-27 |  |  |  |  |  |  |  |  |  |  |
| AS2280 |  | Mechanical GA of Storm water drainage system | 15d | 2025-11-11 | 2025-11-27 | AS1070 FS+195d |  |  |  | 365d | 0d | 1Detail Engineering | Storm water drainage system | 1Mech | Utilities & Offsite activities |
|  | CIVIL | **Civil** |  | 2025-11-28 | 2026-02-07 |  |  |  |  |  |  |  |  |  |  |
| AS3660 |  | GA & Sectional details of Storm water drainage system | 30d | 2025-11-28 | 2026-01-02 | AS2280 |  |  |  | 365d | 0d | 1Detail Engineering | Storm water drainage system | 2Civ | Utilities & Offsite activities |
| AS5070 |  | Reinforcement details of Storm water drainage system | 30d | 2026-01-03 | 2026-02-07 | AS3660 |  |  |  | 365d | 0d | 1Detail Engineering | Storm water drainage system | 2Civ | Utilities & Offsite activities |
|  | FPS | **Fire pumphouse & Station** |  | 2025-12-10 | 2026-04-21 |  |  |  |  |  |  |  |  |  |  |
|  | ME | **Mechanical** |  | 2025-12-10 | 2026-01-29 |  |  |  |  |  |  |  |  |  |  |
| AS4460 |  | Interconnection detail with existing Fire pumphouse & Station | 21d | 2025-12-10 | 2026-01-03 | AS1420 FS+190d |  |  |  | 234d | 0d | 1Detail Engineering | Fire pumphouse & Station | 1Mech | Utilities & Offsite activities |
| AS5100 |  | Piping interconnection detail with existing Fire pumphouse & Station | 21d | 2026-01-05 | 2026-01-29 | AS4460 |  |  |  | 485d | 254d | 1Detail Engineering | Fire pumphouse & Station | 1Mech | Utilities & Offsite activities |

| ID | WBS | Activity | Duration | Start | Finish | Predecessors | Total float | Free float | Text1 | Text2 | Text3 | Text4 |
| --- | --- | --- | --- | --- | --- | --- | --- | --- | --- | --- | --- | --- |
|  | CIVIL | **Civil** |  | 2026-02-10 | 2026-04-21 |  |  |  |  |  |  |  |
| AS5540 |  | GA & Sectional details of Fire pumphouse & Station | 30d | 2026-02-10 | 2026-03-17 | AS5110 | 234d | 0d | 1Detail Engineering | Fire pumphouse & Station | 2Civ | Utilities & Offsite activities |
| AS6070 |  | Reinforcement details of Fire pumphouse & Station | 30d | 2026-03-18 | 2026-04-21 | AS5540 | 234d | 0d | 1Detail Engineering | Fire pumphouse & Station | 2Civ | Utilities & Offsite activities |
|  | STR | **Structural** |  | 2026-01-05 | 2026-04-03 |  |  |  |  |  |  |  |
| AS5110 |  | Structural GA of Fire pumphouse & Station | 30d | 2026-01-05 | 2026-02-09 | AS4460 | 234d | 0d | 1Detail Engineering | Fire pumphouse & Station | 3Str | Utilities & Offsite activities |
| AS5550 |  | Structural fabrication drawings of Fire pumphouse & Station | 45d | 2026-02-10 | 2026-04-03 | AS5110 | 301d | 67d | 1Detail Engineering | Fire pumphouse & Station | 3Str | Utilities & Offsite activities |
|  | EI | **E&I** |  | 2026-01-05 | 2026-02-17 |  |  |  |  |  |  |  |
| AS5120 |  | Cable schedule of Fire pumphouse & Station | 7d | 2026-01-05 | 2026-01-12 | AS4460 | 495d | 0d | 1Detail Engineering | Fire pumphouse & Station | 4EI | Utilities & Offsite activities |
| AS5200 |  | Cable tray layout of Fire pumphouse & Station | 14d | 2026-01-13 | 2026-01-29 | AS5120 | 495d | 0d | 1Detail Engineering | Fire pumphouse & Station | 4EI | Utilities & Offsite activities |
| AS5210 |  | Earthing layout of Fire pumphouse & Station | 30d | 2026-01-13 | 2026-02-17 | AS5200 SS | 495d | 264d | 1Detail Engineering | Fire pumphouse & Station | 4EI | Utilities & Offsite activities |
| AS5220 |  | Lighting layout of Fire pumphouse & Station | 21d | 2026-01-19 | 2026-02-12 | AS5200 SS+5d | 499d | 268d | 1Detail Engineering | Fire pumphouse & Station | 4EI | Utilities & Offsite activities |
|  | TVH | **Technology Vehicles** |  |  |  |  |  |  |  |  |  |  |
|  | ME | **Mechanical** |  |  |  |  |  |  |  |  |  |  |
|  | PCR | **Pipe & Cable racks** |  | 2025-10-31 | 2026-01-17 |  |  |  |  |  |  |  |
|  | ME | **Mechanical** |  | 2025-10-31 | 2025-12-12 |  |  |  |  |  |  |  |
| AS7850 |  | Mechanical GA of Pipe & Cable racks | 15d | 2025-10-31 | 2025-11-18 | AS1320, AS1330 FS+85d, AS1340, AS1350, AS1360, AS1370, AS1380, AS1390, AS1410 FS+27d, AS1420, AS2010 SS+100d | 22d | 0d | 1Detail Engineering | Pipe & Cable racks | 1Mech | Utilities & Offsite activities |
| AS8350 |  | Piping layout drawing of Pipe & Cable racks | 21d | 2025-11-19 | 2025-12-12 | AS7850 | 233d | 223d | 1Detail Engineering | Pipe & Cable racks | 1Mech | Utilities & Offsite activities |
|  | CIVIL | **Civil** |  | 2025-11-27 | 2026-01-01 |  |  |  |  |  |  |  |
| AS9130 |  | GA & Sectional details of Pipe & Cable racks | 15d | 2025-11-27 | 2025-12-13 | AS8360 | 35d | 0d | 1Detail Engineering | Pipe & Cable racks | 2Civ | Utilities & Offsite activities |
| AS9760 |  | Reinforcement details of Pipe & Cable racks | 15d | 2025-12-15 | 2026-01-01 | AS9130 | 35d | 0d | 1Detail Engineering | Pipe & Cable racks | 2Civ | Utilities & Offsite activities |
|  | STR | **Structural** |  | 2025-11-19 | 2026-01-15 |  |  |  |  |  |  |  |
| AS8360 |  | Structural GA of Pipe & Cable racks | 7d | 2025-11-19 | 2025-11-26 | AS7850 | 22d | 0d | 1Detail Engineering | Pipe & Cable racks | 3Str | Utilities & Offsite activities |
| AS9140 |  | Structural fabrication drawings of Pipe & Cable racks | 30d | 2025-12-11 | 2026-01-15 | AS8360, AS1890 FS+26d | 10d | 0d | 1Detail Engineering | Pipe & Cable racks | 3Str | Utilities & Offsite activities |
|  | EI | **E&I** |  | 2025-11-19 | 2026-01-17 |  |  |  |  |  |  |  |
| AS8370 |  | Cable schedule of Pipe & Cable racks | 7d | 2025-11-19 | 2025-11-26 | AS7850 | 364d | 0d | 1Detail Engineering | Pipe & Cable racks | 4EI | Utilities & Offsite activities |
| AS8540 |  | Cable tray layout of Pipe & Cable racks | 14d | 2025-11-27 | 2025-12-12 | AS8370 | 364d | 0d | 1Detail Engineering | Pipe & Cable racks | 4EI | Utilities & Offsite activities |
| AS8800 |  | Earthing layout of Pipe & Cable racks | 30d | 2025-12-13 | 2026-01-17 | AS8540 | 364d | 271d | 1Detail Engineering | Pipe & Cable racks | 4EI | Utilities & Offsite activities |
| AS8810 |  | Lighting layout of Pipe & Cable racks | 21d | 2025-12-13 | 2026-01-07 | AS8540 | 373d | 280d | 1Detail Engineering | Pipe & Cable racks | 4EI | Utilities & Offsite activities |

| ID | WBS | Activity | Duration | Start | Finish | Predecessors | Total float | Free float | Text1 | Text2 | Text3 | Text4 |
| --- | --- | --- | --- | --- | --- | --- | --- | --- | --- | --- | --- | --- |
|  | EMS | **Environment monitoring system for Pot room, GTC, FTC** |  | 2025-12-26 | 2026-04-29 |  |  |  |  |  |  |  |
|  | ME | **Mechanical** |  | 2025-12-26 | 2026-01-12 |  |  |  |  |  |  |  |
| AS2290 |  | Mechanical GA of Environment monitoring system for Pot room, GTC, FTC | 15d | 2025-12-26 | 2026-01-12 | AS1200 FS+156d, AS1280 FS+250d, AS1180 FS+156d | 286d | 0d | 1Detail Engineering | Environment monitoring system for Pot room, GTC, FTC | 1Mech | Utilities & Offsite activities |
|  | CIVIL | **Civil** |  | 2026-02-18 | 2026-04-29 |  |  |  |  |  |  |  |
| AS5080 |  | GA & Sectional details of Environment monitoring system for Pot room, GTC, FTC | 30d | 2026-02-18 | 2026-03-25 | AS3670 | 349d | 0d | 1Detail Engineering | Environment monitoring system for Pot room, GTC, FTC | 2Civ | Utilities & Offsite activities |
| AS5500 |  | Reinforcement details of Environment monitoring system for Pot room, GTC, FTC | 30d | 2026-03-26 | 2026-04-29 | AS5080 | 349d | 0d | 1Detail Engineering | Environment monitoring system for Pot room, GTC, FTC | 2Civ | Utilities & Offsite activities |
|  | STR | **Structural** |  | 2026-01-13 | 2026-04-11 |  |  |  |  |  |  |  |
| AS3670 |  | Structural GA of Environment monitoring system for Pot room, GTC, FTC | 30d | 2026-01-13 | 2026-02-17 | AS2290 | 286d | 0d | 1Detail Engineering | Environment monitoring system for Pot room, GTC, FTC | 3Str | Utilities & Offsite activities |
| AS5090 |  | Structural fabrication drawings of Environment monitoring system for Pot room, GTC, FTC | 45d | 2026-02-18 | 2026-04-11 | AS3670 | 286d | 0d | 1Detail Engineering | Environment monitoring system for Pot room, GTC, FTC | 3Str | Utilities & Offsite activities |
|  | EI | **E&I** |  | 2026-03-17 | 2026-04-28 |  |  |  |  |  |  |  |
| AS3680 |  | Cable schedule of EMS | 7d | 2026-03-17 | 2026-03-24 | AS2290 FS+52d | 428d | 0d | 1Detail Engineering | Environment monitoring system for Pot room, GTC, FTC | 4EI | Utilities & Offsite activities |
| AS4410 |  | Cable tray layout of Environment monitoring system for Pot room, GTC, FTC | 14d | 2026-03-25 | 2026-04-09 | AS3680 | 428d | 0d | 1Detail Engineering | Environment monitoring system for Pot room, GTC, FTC | 4EI | Utilities & Offsite activities |
| AS4420 |  | Earthing layout of Environment monitoring system for Pot room, GTC, FTC | 30d | 2026-03-25 | 2026-04-28 | AS4410 SS | 428d | 244d | 1Detail Engineering | Environment monitoring system for Pot room, GTC, FTC | 4EI | Utilities & Offsite activities |
| AS4430 |  | Lighting layout of Environment monitoring system for Pot room, GTC, FTC | 21d | 2026-03-25 | 2026-04-17 | AS4410 SS | 437d | 253d | 1Detail Engineering | Environment monitoring system for Pot room, GTC, FTC | 4EI | Utilities & Offsite activities |
|  | 1 | **Infrastructure** |  | 2025-12-05 | 2026-02-14 |  |  |  |  |  |  |  |
| A1170 |  | GA & Sectional details of Road & Drain | 60d | 2025-12-05 | 2026-02-14 | AS1070 FS+216d | 356d | 264d | 1Detail Engineering | Infrastructure | 2Civ | Utilities & Offsite activities |
|  | 1 | **Civil** |  |  |  |  |  |  |  |  |  |  |
|  | ELE-S | **Electrical packages for Smelter** |  | 2025-12-09 | 2026-03-21 |  |  |  |  |  |  |  |
|  | LIGHT | **Lighting** |  | 2025-12-09 | 2026-02-26 |  |  |  |  |  |  |  |
|  | CIVIL | **Civil** |  | 2025-12-09 | 2026-02-18 |  |  |  |  |  |  |  |
| AS7860 |  | GA & Sectional details of Lighting pole foundation | 30d | 2025-12-09 | 2026-01-13 | AS2010 FS+130d | 403d | 0d | 1Detail Engineering | Lighting | 2Civ | Electrical packages for Smelter |
| AS8630 |  | Reinforcement details of Lighting pole foundation | 30d | 2026-01-14 | 2026-02-18 | AS7860 | 403d | 287d | 1Detail Engineering | Lighting | 2Civ | Electrical packages for Smelter |
|  | EI | **E&I** |  | 2026-01-14 | 2026-02-26 |  |  |  |  |  |  |  |
| AS8640 |  | Cable schedule of Lighting pole & Fixtures | 7d | 2026-01-14 | 2026-01-21 | AS7860 | 448d | 0d | 1Detail Engineering | Lighting | 4EI | Electrical packages for Smelter |
| AS8890 |  | Cable tray layout of Lighting pole & Fixtures | 14d | 2026-01-22 | 2026-02-07 | AS8640 | 448d | 0d | 1Detail Engineering | Lighting | 4EI | Electrical packages for Smelter |
| AS8900 |  | Earthing layout of Lighting pole & Fixtures | 30d | 2026-01-22 | 2026-02-26 | AS8890 SS | 448d | 332d | 1Detail Engineering | Lighting | 4EI | Electrical packages for Smelter |
| AS8910 |  | Lighting layout of Lighting pole & Fixtures | 21d | 2026-01-22 | 2026-02-16 | AS8890 SS | 457d | 341d | 1Detail Engineering | Lighting | 4EI | Electrical packages for Smelter |

| ID | WBS | Activity | Duration | Start | Finish | Predecessors | Total float | Free float | Text1 | Text2 | Text3 | Text4 |
| --- | --- | --- | --- | --- | --- | --- | --- | --- | --- | --- | --- | --- |
|  | ERTH | **Earthing** |  | 2025-12-09 | 2026-03-21 |  |  |  |  |  |  |  |
|  | CIVIL | **Civil** |  | 2025-12-09 | 2026-02-18 |  |  |  |  |  |  |  |
| AS7870 |  | GA & Sectional details of Earthing pit | 30d | 2025-12-09 | 2026-01-13 | AS2010 FS+130d | 408d | 0d | 1Detail Engineering | Earthing | 2Civ | Electrical packages for Smelter |
| AS8650 |  | Reinforcement details of Earthing pit | 30d | 2026-01-14 | 2026-02-18 | AS7870 | 408d | 287d | 1Detail Engineering | Earthing | 2Civ | Electrical packages for Smelter |
|  | EI | **E&I** |  | 2026-02-14 | 2026-03-21 |  |  |  |  |  |  |  |
| AS8660 |  | Earthing layout and Earth pit location | 30d | 2026-02-14 | 2026-03-21 | AS7870 FS+26d | 434d | 313d | 1Detail Engineering | Earthing | 4EI | Electrical packages for Smelter |
|  | FAT | **Fire Alarm & Telephone** |  | 2025-12-20 | 2026-02-03 |  |  |  |  |  |  |  |
|  | EI | **E&I** |  | 2025-12-20 | 2026-02-03 |  |  |  |  |  |  |  |
| AS7880 |  | Cable schedule of Fire Alarm & Telephone | 7d | 2025-12-20 | 2025-12-29 | AS2010 FS+140d | 499d | 0d | 1Detail Engineering | Fire Alarm & Telephone | 4EI | Electrical packages for Smelter |
| AS8000 |  | Cable tray layout of Fire Alarm & Telephone | 14d | 2025-12-30 | 2026-01-14 | AS7880 | 499d | 0d | 1Detail Engineering | Fire Alarm & Telephone | 4EI | Electrical packages for Smelter |
| AS8010 |  | Fire Alarm & Telephone layout & fixing details | 30d | 2025-12-30 | 2026-02-03 | AS8000 SS | 499d | 444d | 1Detail Engineering | Fire Alarm & Telephone | 4EI | Electrical packages for Smelter |
|  | PR | **Procurement** |  | 2025-05-02 | 2027-09-18 |  |  |  |  |  |  |  |
|  | AR | **Alumina Receiving** |  | 2025-12-03 | 2026-12-01 |  |  |  |  |  |  |  |
|  | AHC | **Alumina Handing conveyor** |  | 2025-12-03 | 2026-08-07 |  |  |  |  |  |  |  |
|  | PR-O | **Pre Ordering** |  |  |  |  |  |  |  |  |  |  |
|  | PO-O | **Post Ordering** |  | 2025-12-03 | 2026-08-07 |  |  |  |  |  |  |  |
| AS6130 |  | Manufacturing clearance | 52d | 2025-12-03 | 2026-02-03 | AS1901 | 291d | 0d | 2Procurement | Alumina Handing conveyor | 2PO | Alumina Receiving |
| AS6410 |  | Manufacturing | 130d | 2026-02-04 | 2026-07-07 | AS6130 | 291d | 0d | 2Procurement | Alumina Handing conveyor | 2PO | Alumina Receiving |
| AS6920 |  | Delivery at site | 26d | 2026-07-08 | 2026-08-07 | AS6410 | 291d | 262d | 2Procurement | Alumina Handing conveyor | 2PO | Alumina Receiving |
|  | BF | **Bag Filter** |  | 2025-12-03 | 2026-11-12 |  |  |  |  |  |  |  |
|  | PR-O | **Pre Ordering** |  |  |  |  |  |  |  |  |  |  |
|  | PO-O | **Post Ordering** |  | 2025-12-03 | 2026-11-12 |  |  |  |  |  |  |  |
| AS6160 |  | Manufacturing clearance | 52d | 2025-12-03 | 2026-02-03 | AS1901 | 207d | 0d | 2Procurement | Bag Filter | 2PO | Alumina Receiving |
| AS6450 |  | Manufacturing | 208d | 2026-02-04 | 2026-10-12 | AS6160 | 207d | 0d | 2Procurement | Bag Filter | 2PO | Alumina Receiving |
| AS6950 |  | Delivery at site | 26d | 2026-10-13 | 2026-11-12 | AS6450 | 207d | 158d | 2Procurement | Bag Filter | 2PO | Alumina Receiving |

| ID | WBS | Activity | Duration | Start | Finish | Predecessors | Total float | Free float | Text1 | Text2 | Text3 | Text4 |
| --- | --- | --- | --- | --- | --- | --- | --- | --- | --- | --- | --- | --- |
|  | FF | **Filter Fan** |  | 2025-12-03 | 2026-09-09 |  |  |  |  |  |  |  |
|  | PR-O | **Pre Ordering** |  |  |  |  |  |  |  |  |  |  |
|  | PO-O | **Post Ordering** |  | 2025-12-03 | 2026-09-09 |  |  |  |  |  |  |  |
| AS6170 |  | Manufacturing clearance | 52d | 2025-12-03 | 2026-02-03 | AS1901 | 265d | 0d | 2Procurement | Filter Fan | 2PO | Alumina Receiving |
| AS6460 |  | Manufacturing | 156d | 2026-02-04 | 2026-08-07 | AS6170 | 265d | 0d | 2Procurement | Filter Fan | 2PO | Alumina Receiving |
| AS6960 |  | Delivery at site | 26d | 2026-08-08 | 2026-09-09 | AS6460 | 265d | 236d | 2Procurement | Filter Fan | 2PO | Alumina Receiving |
|  | BV | **Breather Valve** |  | 2025-12-03 | 2026-07-07 |  |  |  |  |  |  |  |
|  | PR-O | **Pre Ordering** |  |  |  |  |  |  |  |  |  |  |
|  | PO-O | **Post Ordering** |  | 2025-12-03 | 2026-07-07 |  |  |  |  |  |  |  |
| AS6180 |  | Manufacturing clearance | 52d | 2025-12-03 | 2026-02-03 | AS1901 | 311d | 0d | 2Procurement | Breather Valve | 2PO | Alumina Receiving |
| AS6470 |  | Manufacturing | 104d | 2026-02-04 | 2026-06-06 | AS6180 | 311d | 0d | 2Procurement | Breather Valve | 2PO | Alumina Receiving |
| AS6970 |  | Delivery at site | 26d | 2026-06-08 | 2026-07-07 | AS6470 | 311d | 262d | 2Procurement | Breather Valve | 2PO | Alumina Receiving |
|  | BM | **Building material supply** |  | 2026-01-22 | 2026-12-01 |  |  |  |  |  |  |  |
|  | PR-O | **Pre Ordering** |  |  |  |  |  |  |  |  |  |  |
|  | PO-O | **Post Ordering** |  | 2026-01-22 | 2026-12-01 |  |  |  |  |  |  |  |
| AS9220 |  | Manufacturing clearance | 130d | 2026-01-22 | 2026-06-25 | AS4850, AS1901 | 82d | 0d | 2Procurement | Building material supply | 2PO | Alumina Receiving |
| AS9320 |  | Manufacturing | 104d | 2026-06-26 | 2026-10-30 | AS9220 | 82d | 0d | 2Procurement | Building material supply | 2PO | Alumina Receiving |
| AS9500 |  | Delivery at site | 78d | 2026-08-29 | 2026-12-01 | AS9320 SS+52d | 82d | 64d | 2Procurement | Building material supply | 2PO | Alumina Receiving |
|  | ES | **Electrical Systems** |  | 2025-12-03 | 2026-09-09 |  |  |  |  |  |  |  |
|  | PR-O | **Pre Ordering** |  |  |  |  |  |  |  |  |  |  |
|  | PO-O | **Post Ordering** |  | 2025-12-03 | 2026-09-09 |  |  |  |  |  |  |  |
| AS6190 |  | Manufacturing clearance | 52d | 2025-12-03 | 2026-02-03 | AS1901 | 239d | 0d | 2Procurement | Electrical Systems | 2PO | Alumina Receiving |
| AS6480 |  | Manufacturing | 156d | 2026-02-04 | 2026-08-07 | AS6190 | 239d | 0d | 2Procurement | Electrical Systems | 2PO | Alumina Receiving |
| AS6980 |  | Delivery at site | 26d | 2026-08-08 | 2026-09-09 | AS6480 | 239d | 221d | 2Procurement | Electrical Systems | 2PO | Alumina Receiving |

| ID | WBS | Activity | Duration | Start | Finish | Predecessors | Complete | Remaining | Planned start | Planned finish | Total float | Free float | Text1 | Text2 | Text3 | Text4 |
| --- | --- | --- | --- | --- | --- | --- | --- | --- | --- | --- | --- | --- | --- | --- | --- | --- |
|  | PB | **Potline building & Equipment** |  | 2025-05-12 | 2027-09-18 |  |  |  |  |  |  |  |  |  |  |  |
|  | PS | **Pot Shell** |  | 2025-05-21 | 2027-06-17 |  |  |  |  |  |  |  |  |  |  |  |
|  | PR-O | **Pre Ordering** |  | 2025-05-21 | 2025-10-09 |  |  |  |  |  |  |  |  |  |  |  |
| AS2660 |  | Request for Quotation (RFQ) | 10d | 2025-05-21 A | 2025-05-30 A | AS2500 FS+69d | 100% |  | 2025-05-21 | 2025-05-31 |  |  | 2Procurement | Pot Shell | 1PRO | Potline building & Equipment |
| AS3690 |  | PO issue | 98d | 2025-06-02 A | 2025-10-09 A | AS2660 | 100% |  | 2025-06-02 | 2025-09-27 |  |  | 2Procurement | Pot Shell | 1PRO | Potline building & Equipment |
|  | PO-O | **Post Ordering** |  | 2025-10-10 | 2027-06-17 |  |  |  |  |  |  |  |  |  |  |  |
| AS6490 |  | Manufacturing clearance (Prototype) | 156d | 2025-10-10 A | 2026-05-06 | AS3690, AS2060 |  | 156d | 2025-10-22 | 2026-04-25 | 43d | 0d | 2Procurement | Pot Shell | 2PO | Potline building & Equipment |
| AS9390 |  | Manufacturing | 338d | 2026-05-07 | 2027-06-17 | AS6490 |  |  |  |  | 43d | 0d | 2Procurement | Pot Shell | 2PO | Potline building & Equipment |
| AS9391 |  | Delivery at site | 312d | 2026-05-28 | 2027-06-08 | AS9390 SS+18d |  |  |  |  | 43d | 44d | 2Procurement | Pot Shell | 2PO | Potline building & Equipment |
|  | 1 | **Pot Shell Erection** |  | 2025-11-10 | 2026-05-04 |  |  |  |  |  |  |  |  |  |  |  |
|  | 1 | **Pre Ordering** |  | 2025-11-10 | 2026-03-18 |  |  |  |  |  |  |  |  |  |  |  |
| AS12520 |  | Request for Quotation (RFQ) | 10d | 2025-11-10 | 2025-11-20 | AS1820 FS+212d |  |  |  |  | 89d | 0d | 2Procurement | Pot Shell Erection | 1PRO | Potline building & Equipment |
| AS12530 |  | PO issue | 98d | 2025-11-21 | 2026-03-18 | AS12520 |  |  |  |  | 89d | 0d | 2Procurement | Pot Shell Erection | 1PRO | Potline building & Equipment |
|  | 2 | **Post Ordering** |  | 2026-03-19 | 2026-05-04 |  |  |  |  |  |  |  |  |  |  |  |
| A1180 |  | Mobilization to site | 39d | 2026-03-19 | 2026-05-04 | AS12530 |  |  |  |  | 89d | 72d | 2Procurement | Pot Shell Erection | 2PO | Potline building & Equipment |
|  | P&S | **Pot Superstructure** |  | 2025-05-21 | 2027-09-18 |  |  |  |  |  |  |  |  |  |  |  |
|  | PR-O | **Pre Ordering** |  | 2025-05-21 | 2025-10-09 |  |  |  |  |  |  |  |  |  |  |  |
| AS2670 |  | Request for Quotation (RFQ) | 10d | 2025-05-21 A | 2025-05-30 A | AS2510 FS+65d | 100% |  | 2025-05-21 | 2025-05-31 |  |  | 2Procurement | Pot Superstructure | 1PRO | Potline building & Equipment |
| AS3700 |  | PO issue | 75d | 2025-06-02 A | 2025-10-09 A | AS2670 | 100% |  | 2025-06-02 | 2025-08-30 |  |  | 2Procurement | Pot Superstructure | 1PRO | Potline building & Equipment |
|  | PO-O | **Post Ordering** |  | 2025-10-10 | 2027-09-18 |  |  |  |  |  |  |  |  |  |  |  |
| AS6500 |  | Manufacturing clearance | 182d | 2025-10-10 A | 2026-06-05 | AS3700, AS2070 |  | 182d | 2025-10-22 | 2026-05-27 | 41d | 0d | 2Procurement | Pot Superstructure | 2PO | Potline building & Equipment |
| AS9400 |  | Manufacturing | 390d | 2026-06-06 | 2027-09-18 | AS6500 |  |  |  |  | 41d | 0d | 2Procurement | Pot Superstructure | 2PO | Potline building & Equipment |
| AS9401 |  | Delivery at site | 312d | 2026-08-07 | 2027-08-17 | AS9400 SS+52d |  |  |  |  | 41d | 7d | 2Procurement | Pot Superstructure | 2PO | Potline building & Equipment |
|  | BUS | **Busbar (Bars, Plates, Flex)** |  | 2025-05-21 | 2027-03-03 |  |  |  |  |  |  |  |  |  |  |  |
|  | PR-O | **Pre Ordering** |  | 2025-05-21 | 2025-10-15 |  |  |  |  |  |  |  |  |  |  |  |
| AS2680 |  | Request for Quotation (RFQ) | 10d | 2025-05-21 A | 2025-05-30 A | AS2520, AS2020 | 100% |  | 2025-05-21 | 2025-05-31 |  |  | 2Procurement | Busbar (Bars, Plates, Flex) | 1PRO | Potline building & Equipment |
| AS3710 |  | PO issue | 51d | 2025-06-02 A | 2025-10-15 A | AS2680 | 100% |  | 2025-06-02 | 2025-07-31 |  |  | 2Procurement | Busbar (Bars, Plates, Flex) | 1PRO | Potline building & Equipment |

| ID | WBS | Activity | Duration | Start | Finish | Predecessors | Complete | Remaining | Planned start | Planned finish | Total float | Free float | Text1 | Text2 | Text3 | Text4 | Notes |
| --- | --- | --- | --- | --- | --- | --- | --- | --- | --- | --- | --- | --- | --- | --- | --- | --- | --- |
|  | PO-O | **Post Ordering** |  | 2025-10-16 | 2027-03-03 |  |  |  |  |  |  |  |  |  |  |  |  |
| AS6510 |  | Manufacturing clearance | 1d | 2025-10-16 A | 2025-10-16 A | AS3710 | 100% |  | 2025-10-15 | 2025-10-15 |  |  | 2Procurement | Busbar (Bars, Plates, Flex) | 2PO | Potline building & Equipment | Assume that MC is not required |
| AS9410 |  | Manufacturing | 390d | 2025-10-17 A | 2027-02-12 | AS6510 |  | 390d | 2025-10-16 | 2027-01-29 | 9d | 0d | 2Procurement | Busbar (Bars, Plates, Flex) | 2PO | Potline building & Equipment |  |
| AS9411 |  | Delivery at site | 312d | 2026-02-20 | 2027-03-03 | AS9410 SS+104d |  |  |  |  | 9d | 0d | 2Procurement | Busbar (Bars, Plates, Flex) | 2PO | Potline building & Equipment |  |
|  | 2 | **Bus bar fabrication & erection** |  | 2025-09-09 | 2026-02-07 |  |  |  |  |  |  |  |  |  |  |  |  |
|  | 1 | **Pre Ordering** |  | 2025-09-09 | 2025-12-06 |  |  |  |  |  |  |  |  |  |  |  |  |
| AS12560 |  | Request for Quotation (RFQ) | 7d | 2025-09-09 A | 2025-09-17 A | AS1820 FS+146d | 100% |  | 2025-09-01 | 2025-09-08 |  |  | 2Procurement | Bus bar fabrication & erection | 1PRO | Potline building & Equipment |  |
| AS12570 |  | PO issue | 74d | 2025-09-18 A | 2025-12-06 | AS12560, AS12560 FF | 58% | 31d | 2025-09-20 | 2025-12-18 | 19d | 0d | 2Procurement | Bus bar fabrication & erection | 1PRO | Potline building & Equipment |  |
|  | 2 | **Post Ordering** |  | 2025-12-08 | 2026-02-07 |  |  |  |  |  |  |  |  |  |  |  |  |
| A1200 |  | Mobilization to site | 52d | 2025-12-08 | 2026-02-07 | AS12570 |  |  |  |  | 19d | 10d | 2Procurement | Bus bar fabrication & erection | 2PO | Potline building & Equipment |  |
|  | PL | **Pot Lining Supply** |  | 2025-05-12 | 2027-06-21 |  |  |  |  |  |  |  |  |  |  |  |  |
|  | PR-O | **Pre Ordering** |  | 2025-05-12 | 2026-02-04 |  |  |  |  |  |  |  |  |  |  |  |  |
| AS2690 |  | Request for Quotation (RFQ) | 10d | 2025-05-12 A | 2025-10-20 A | AS2530 FS+118d | 100% |  | 2025-10-01 | 2025-10-13 |  |  | 2Procurement | Pot Lining | 1PRO | Potline building & Equipment |  |
| AS3720 |  | PO issue | 80d | 2025-10-22 A | 2026-02-04 | AS2690 |  | 80d | 2025-10-22 | 2026-01-24 | 10d | 0d | 2Procurement | Pot Lining | 1PRO | Potline building & Equipment |  |
|  | PO-O | **Post Ordering** |  | 2026-02-05 | 2027-06-21 |  |  |  |  |  |  |  |  |  |  |  |  |
| AS6520 |  | Manufacturing clearance | 1d | 2026-02-05 | 2026-02-05 | AS3720 |  |  |  |  | 10d | 0d | 2Procurement | Pot Lining | 2PO | Potline building & Equipment |  |
| AS6990 |  | Manufacturing | 364d | 2026-02-06 | 2027-04-20 | AS6520 |  |  |  |  | 10d | 0d | 2Procurement | Pot Lining | 2PO | Potline building & Equipment |  |
| AS7340 |  | Delivery at site-Lining | 286d | 2026-07-10 | 2027-06-21 | AS6990 SS+130d, AS1940.32 SS+156d |  |  |  |  | 10d | 0d | 2Procurement | Pot Lining | 2PO | Potline building & Equipment | Supply of Metal & Bath Ladle Refractory Lining |
|  | PL1 | **Pot Lining Installation** |  | 2025-11-12 | 2026-04-21 |  |  |  |  |  |  |  |  |  |  |  |  |
|  | PR-O | **Pre Ordering** |  | 2025-11-12 | 2026-02-18 |  |  |  |  |  |  |  |  |  |  |  |  |
| AS13641 |  | Request for Quotation (RFQ) | 3d | 2025-11-12 | 2025-11-14 | AS1820 FS+214d |  |  |  |  | 103d | 0d | 2Procurement | Pot Lining | 1PRO | Potline building & Equipment |  |
| AS13651 |  | PO issue | 80d | 2025-11-15 | 2026-02-18 | AS13641 |  |  |  |  | 103d | 0d | 2Procurement | Pot Lining | 1PRO | Potline building & Equipment |  |
|  | PO-O | **Post Ordering** |  | 2026-02-19 | 2026-04-21 |  |  |  |  |  |  |  |  |  |  |  |  |
| AS13661 |  | Mobilization at site | 52d | 2026-02-19 | 2026-04-21 | AS13651 |  |  |  |  | 103d | 85d | 2Procurement | Pot Lining | 2PO | Potline building & Equipment |  |

| ID | WBS | Activity | Duration | Start | Finish | Predecessors | Complete | Remaining | Planned start | Planned finish | Total float | Free float | Text1 | Text2 | Text3 | Text4 | Notes |
| --- | --- | --- | --- | --- | --- | --- | --- | --- | --- | --- | --- | --- | --- | --- | --- | --- | --- |
|  | CB | **Cathode Blocks** |  | 2025-05-21 | 2027-02-02 |  |  |  |  |  |  |  |  |  |  |  |  |
|  | PR | **Pre Ordering** |  | 2025-05-21 | 2025-11-19 |  |  |  |  |  |  |  |  |  |  |  |  |
| A1050 |  | Request for Quotation (RFQ) | 10d | 2025-05-21 A | 2025-05-31 A | AS1820 FS+71d | 100% |  |  |  |  |  | 2Procurement | Cathode Blocks | 1PRO | Potline building & Equipment |  |
| A1060 |  | PO issue | 50d | 2025-06-02 A | 2025-11-19 | A1050 | 68% | 16d | 2025-06-02 | 2025-07-30 | 22d | 0d | 2Procurement | Cathode Blocks | 1PRO | Potline building & Equipment |  |
|  | PO | **Post Ordering** |  | 2025-11-20 | 2027-02-02 |  |  |  |  |  |  |  |  |  |  |  |  |
| A1070 |  | Manufacturing clearance | 1d | 2025-11-20 | 2025-11-20 | A1060 |  |  |  |  | 22d | 0d | 2Procurement | Cathode Blocks | 2PO | Potline building & Equipment | Assume that no MC is required |
| A1080 |  | Manufacturing | 312d | 2025-11-21 | 2026-12-01 | A1070 |  |  |  |  | 22d | 0d | 2Procurement | Cathode Blocks | 2PO | Potline building & Equipment |  |
| A1090 |  | Delivery at site-Cathode | 208d | 2026-05-27 | 2027-02-02 | A1080 SS+156d |  |  |  |  | 22d | 11d | 2Procurement | Cathode Blocks | 2PO | Potline building & Equipment |  |
|  | AC | **Jack, Clamp, CAFD, ATFD, Sealing** |  | 2025-08-25 | 2026-10-29 |  |  |  |  |  |  |  |  |  |  |  |  |
|  | PR-O | **Pre Ordering** |  | 2025-08-25 | 2025-11-18 |  |  |  |  |  |  |  |  |  |  |  |  |
| AS2700 |  | Request for Quotation (RFQ) | 10d | 2025-08-25 A | 2025-08-26 A | AS2540 FS+75d, AS2550 FS+75d, AS2560 FS+75d | 100% |  | 2025-06-02 | 2025-06-12 |  |  | 2Procurement | Jack, Clamp, CAFD, ATFD, Sealing | 1PRO | Potline building & Equipment |  |
| AS3730 |  | PO issue | 65d | 2025-08-27 A | 2025-11-18 | AS2700 | 77% | 15d | 2025-06-13 | 2025-08-30 | 51d | 0d | 2Procurement | Jack, Clamp, CAFD, ATFD, Sealing | 1PRO | Potline building & Equipment |  |
|  | PO-O | **Post Ordering** |  | 2025-11-19 | 2026-10-29 |  |  |  |  |  |  |  |  |  |  |  |  |
| AS3731 |  | Manufacturing clearance | 1d | 2025-11-19 | 2025-11-19 | AS3730 |  |  |  |  | 51d | 0d | 2Procurement | Jack, Clamp, CAFD, ATFD, Sealing | 2PO | Potline building & Equipment |  |
| AS3732 |  | Manufacturing | 208d | 2025-11-20 | 2026-07-25 | AS3731 |  |  |  |  | 51d | 0d | 2Procurement | Jack, Clamp, CAFD, ATFD, Sealing | 2PO | Potline building & Equipment |  |
| AS3733 |  | Delivery at site | 78d | 2026-07-27 | 2026-10-29 | AS3732, AS2101 |  |  |  |  | 51d | 17d | 2Procurement | Jack, Clamp, CAFD, ATFD, Sealing | 2PO | Potline building & Equipment |  |
|  | PTA | **Pot Tending Assembly** |  | 2025-06-17 | 2027-06-01 |  |  |  |  |  |  |  |  |  |  |  |  |
|  | PR-O | **Pre Ordering** |  | 2025-06-17 | 2025-11-13 |  |  |  |  |  |  |  |  |  |  |  |  |
| AS2740 |  | Request for Quotation (RFQ) | 3d | 2025-06-17 A | 2025-06-19 A | AS2580 FS+88d | 100% |  |  |  |  |  | 2Procurement | Pot Tending Assembly | 1PRO | Potline building & Equipment |  |
| AS3770 |  | PO issue | 82d | 2025-06-20 A | 2025-11-13 | AS2740 | 87% | 11d | 2025-06-20 | 2025-09-27 | 10d | 0d | 2Procurement | Pot Tending Assembly | 1PRO | Potline building & Equipment |  |
|  | PO-O | **Post Ordering** |  | 2025-11-14 | 2027-06-01 |  |  |  |  |  |  |  |  |  |  |  |  |
| AS6570 |  | Manufacturing clearance | 1d | 2025-11-14 | 2025-11-14 | AS3770 |  |  |  |  | 10d | 0d | 2Procurement | Pot Tending Assembly | 2PO | Potline building & Equipment |  |
| AS7030 |  | Manufacturing | 468d | 2025-11-15 | 2027-06-01 | AS6570 |  |  |  |  | 10d | 0d | 2Procurement | Pot Tending Assembly | 2PO | Potline building & Equipment |  |
| AS7380 |  | Delivery at site | 156d | 2026-11-26 | 2027-06-01 | AS7030 SS+312d |  |  |  |  | 10d | 0d | 2Procurement | Pot Tending Assembly | 2PO | Potline building & Equipment |  |

| ID | WBS | Activity | Duration | Start | Finish | Predecessors | Complete | Remaining | Planned start | Planned finish | Total float | Free float | Text1 | Text2 | Text3 | Text4 | Notes |
| --- | --- | --- | --- | --- | --- | --- | --- | --- | --- | --- | --- | --- | --- | --- | --- | --- | --- |
|  | FD | **Raising Girders** |  | 2025-06-16 | 2027-02-25 |  |  |  |  |  |  |  |  |  |  |  |  |
|  | PR-O | **Pre Ordering** |  | 2025-06-16 | 2025-11-13 |  |  |  |  |  |  |  |  |  |  |  |  |
| AS2750 |  | Request for Quotation (RFQ) | 3d | 2025-06-16 A | 2025-06-19 A | AS2591 FS+22d | 100% |  | 2025-06-16 | 2025-06-18 |  |  | 2Procurement | Raising Girders | 1PRO | Potline building & Equipment |  |
| AS3780 |  | PO issue | 83d | 2025-06-20 A | 2025-11-13 | AS2750 | 87% | 11d | 2025-06-19 | 2025-09-27 | 24d | 0d | 2Procurement | Raising Girders | 1PRO | Potline building & Equipment |  |
|  | PO-O | **Post Ordering** |  | 2025-11-14 | 2027-02-25 |  |  |  |  |  |  |  |  |  |  |  |  |
| AS6580 |  | Manufacturing clearance | 26d | 2025-11-14 | 2025-12-13 | AS3780 |  |  |  |  | 24d | 0d | 2Procurement | Raising Girders | 2PO | Potline building & Equipment |  |
| AS7040 |  | Manufacturing | 338d | 2025-12-15 | 2027-01-25 | AS6580 |  |  |  |  | 24d | 0d | 2Procurement | Raising Girders | 2PO | Potline building & Equipment |  |
| AS7390 |  | Delivery at site | 26d | 2027-01-27 | 2027-02-25 | AS7040 |  |  |  |  | 24d | 0d | 2Procurement | Raising Girders | 2PO | Potline building & Equipment |  |
|  | ALPSYS | **Potline monitoring, control and supervision system (ALPSYS)** |  | 2025-05-24 | 2027-03-30 |  |  |  |  |  |  |  |  |  |  |  |  |
|  | PR-O | **Pre Ordering** |  | 2025-05-24 | 2025-12-13 |  |  |  |  |  |  |  |  |  |  |  |  |
| AS2760 |  | Request for Quotation (RFQ) | 2d | 2025-05-24 A | 2025-05-26 A | AS2600 | 100% |  |  |  |  |  | 2Procurement | Potline monitoring, control and supervision system (ALPSYS) | 1PRO | Potline building & Equipment |  |
| AS3790 |  | PO issue | 98d | 2025-05-27 A | 2025-12-13 | AS2760 | 62% | 37d | 2025-05-27 | 2025-09-22 | 67d | 0d | 2Procurement | Potline monitoring, control and supervision system (ALPSYS) | 1PRO | Potline building & Equipment |  |
|  | PO-O | **Post Ordering** |  | 2025-12-15 | 2027-03-30 |  |  |  |  |  |  |  |  |  |  |  |  |
| AS3791 |  | Manufacturing clearance | 26d | 2025-12-15 | 2026-01-14 | AS3790 |  |  |  |  | 67d | 0d | 2Procurement | Potline monitoring, control and supervision system (ALPSYS) | 2PO | Potline building & Equipment |  |
| AS3792 |  | Manufacturing | 338d | 2026-01-15 | 2027-02-25 | AS3791 |  |  |  |  | 67d | 0d | 2Procurement | Potline monitoring, control and supervision system (ALPSYS) | 2PO | Potline building & Equipment | Lead time for delivery is 15 months as per project lead. |
| AS3793 |  | Delivery at site-ALPSYS | 26d | 2027-02-27 | 2027-03-30 | AS3792 |  |  |  |  | 67d | 0d | 2Procurement | Potline monitoring, control and supervision system (ALPSYS) | 2PO | Potline building & Equipment |  |
|  | FCN | **FCN** |  | 2025-10-17 | 2026-07-20 |  |  |  |  |  |  |  |  |  |  |  |  |
|  | PR | **Pre Ordering** |  | 2025-10-17 | 2025-12-13 |  |  |  |  |  |  |  |  |  |  |  |  |
| A1100 |  | Request for Quotation (RFQ) | 1d | 2025-10-17 A | 2025-10-17 A | AS2710 FS+184d | 100% |  |  |  |  |  | 2Procurement | FCN | 1PRO | Potline building & Equipment |  |
| A1110 |  | PO issue | 80d | 2025-10-18 A | 2025-12-13 | A1100 | 54% | 37d | 2025-10-18 | 2026-01-22 | 55d | 0d | 2Procurement | FCN | 1PRO | Potline building & Equipment |  |
|  | PO | **Post Ordering** |  | 2025-12-15 | 2026-07-20 |  |  |  |  |  |  |  |  |  |  |  |  |
| A1120 |  | Manufacturing clearance | 26d | 2025-12-15 | 2026-01-14 | A1110 |  |  |  |  | 55d | 0d | 2Procurement | FCN | 2PO | Potline building & Equipment |  |
| A1130 |  | Manufacturing | 130d | 2026-01-15 | 2026-06-18 | A1120 |  |  |  |  | 55d | 0d | 2Procurement | FCN | 2PO | Potline building & Equipment |  |
| A1140 |  | Delivery at site-FCN | 26d | 2026-06-19 | 2026-07-20 | A1130, AS2101 |  |  |  |  | 55d | 25d | 2Procurement | FCN | 2PO | Potline building & Equipment |  |

| ID | WBS | Activity | Duration | Start | Finish | Predecessors | Complete | Remaining | Planned start | Planned finish | Total float | Free float | Text1 | Text2 | Text3 | Text4 |
| --- | --- | --- | --- | --- | --- | --- | --- | --- | --- | --- | --- | --- | --- | --- | --- | --- |
|  | 6 | **Anode Beam Rasing Frame** |  | 2025-06-17 | 2026-10-24 |  |  |  |  |  |  |  |  |  |  |  |
|  | PR | **Pre Ordering** |  | 2025-06-17 | 2025-11-13 |  |  |  |  |  |  |  |  |  |  |  |
| A1310 |  | Request for Quotation (RFQ) | 10d | 2025-06-17 A | 2025-06-19 A | AS2601 | 100% |  | 2025-09-06 | 2025-09-18 |  |  | 2Procurement | Anode Beam Rasing Frame | 1PRO | Potline building & Equipment |
| A1320 |  | PO issue | 98d | 2025-06-20 A | 2025-11-13 | A1310 | 89% | 11d | 2025-09-06 | 2026-01-03 | 283d | 0d | 2Procurement | Anode Beam Rasing Frame | 1PRO | Potline building & Equipment |
|  | PO | **Post Ordering** |  | 2025-11-14 | 2026-10-24 |  |  |  |  |  |  |  |  |  |  |  |
| A1330 |  | Manufacturing clearance | 1d | 2025-11-14 | 2025-11-14 | A1320 |  |  |  |  | 283d | 0d | 2Procurement | Anode Beam Rasing Frame | 2PO | Potline building & Equipment |
| A1340 |  | Manufacturing | 260d | 2025-11-15 | 2026-09-23 | A1330 |  |  |  |  | 283d | 0d | 2Procurement | Anode Beam Rasing Frame | 2PO | Potline building & Equipment |
| A1350 |  | Delivery at site | 26d | 2026-09-24 | 2026-10-24 | A1340 |  |  |  |  | 283d | 284d | 2Procurement | Anode Beam Rasing Frame | 2PO | Potline building & Equipment |
|  | 7 | **Anode stem** |  | 2025-07-07 | 2026-05-28 |  |  |  |  |  |  |  |  |  |  |  |
|  | PR | **Pre Ordering** |  | 2025-07-07 | 2025-11-22 |  |  |  |  |  |  |  |  |  |  |  |
| A1360 |  | Request for Quotation (RFQ) | 10d | 2025-07-07 A | 2025-07-10 A | AS2602 FS+60d | 100% |  | 2025-08-13 | 2025-08-25 |  |  | 2Procurement | Anode stem | 1PRO | Potline building & Equipment |
| A1370 |  | PO issue | 98d | 2025-07-11 A | 2025-11-22 | A1360 | 81% | 19d | 2025-08-26 | 2025-12-23 | 100d | 0d | 2Procurement | Anode stem | 1PRO | Potline building & Equipment |
|  | PO | **Post Ordering** |  | 2025-11-24 | 2026-05-28 |  |  |  |  |  |  |  |  |  |  |  |
| A1380 |  | Manufacturing clearance | 26d | 2025-11-24 | 2025-12-23 | A1370 |  |  |  |  | 100d | 0d | 2Procurement | Anode stem | 2PO | Potline building & Equipment |
| A1390 |  | Manufacturing | 104d | 2025-12-24 | 2026-04-27 | A1380 |  |  |  |  | 100d | 0d | 2Procurement | Anode stem | 2PO | Potline building & Equipment |
| A1400 |  | Delivery at site | 26d | 2026-04-28 | 2026-05-28 | A1390, AS2101 |  |  |  |  | 100d | 24d | 2Procurement | Anode stem | 2PO | Potline building & Equipment |
|  | 8 | **Anode bracket** |  | 2025-07-08 | 2026-06-25 |  |  |  |  |  |  |  |  |  |  |  |
|  | PR | **Pre Ordering** |  | 2025-07-08 | 2025-11-19 |  |  |  |  |  |  |  |  |  |  |  |
| A1410 |  | Request for Quotation (RFQ) | 10d | 2025-07-08 A | 2025-07-10 A | AS2603 FS+40d | 100% |  | 2025-08-13 | 2025-08-25 |  |  | 2Procurement | Anode bracket | 1PRO | Potline building & Equipment |
| A1420 |  | PO issue | 98d | 2025-07-11 A | 2025-11-19 | A1410 | 84% | 16d | 2025-08-26 | 2025-12-23 | 76d | 0d | 2Procurement | Anode bracket | 1PRO | Potline building & Equipment |
|  | PO | **Post Ordering** |  | 2025-11-20 | 2026-06-25 |  |  |  |  |  |  |  |  |  |  |  |
| A1430 |  | Manufacturing clearance | 1d | 2025-11-20 | 2025-11-20 | A1420 |  |  |  |  | 76d | 0d | 2Procurement | Anode bracket | 2PO | Potline building & Equipment |
| A1440 |  | Manufacturing | 156d | 2025-11-21 | 2026-05-26 | A1430 |  |  |  |  | 76d | 0d | 2Procurement | Anode bracket | 2PO | Potline building & Equipment |
| A1450 |  | Delivery at site | 26d | 2026-05-27 | 2026-06-25 | A1440, AS2101 |  |  |  |  | 76d | 0d | 2Procurement | Anode bracket | 2PO | Potline building & Equipment |

| ID | WBS | Activity | Duration | Start | Finish | Predecessors | Complete | Remaining | Planned start | Planned finish | Total float | Free float | Text1 | Text2 | Text3 | Text4 |
| --- | --- | --- | --- | --- | --- | --- | --- | --- | --- | --- | --- | --- | --- | --- | --- | --- |
|  | 9 | **Anode Clad** |  | 2025-08-22 | 2026-05-29 |  |  |  |  |  |  |  |  |  |  |  |
|  | PR | **Pre Ordering** |  | 2025-08-22 | 2025-11-22 |  |  |  |  |  |  |  |  |  |  |  |
| A1460 |  | Request for Quotation (RFQ) | 4d | 2025-08-22 A | 2025-09-02 A | AS2604 FS+79d | 100% |  | 2025-09-12 | 2025-09-16 |  |  | 2Procurement | Anode Clad | 1PRO | Potline building & Equipment |
| A1470 |  | PO issue | 46d | 2025-09-03 A | 2025-11-22 | A1460 | 59% | 19d | 2025-09-18 | 2025-11-13 | 99d | 0d | 2Procurement | Anode Clad | 1PRO | Potline building & Equipment |
|  | PO | **Post Ordering** |  | 2025-11-24 | 2026-05-29 |  |  |  |  |  |  |  |  |  |  |  |
| A1480 |  | Manufacturing clearance | 1d | 2025-11-24 | 2025-11-24 | A1470 |  |  |  |  | 99d | 0d | 2Procurement | Anode Clad | 2PO | Potline building & Equipment |
| A1490 |  | Manufacturing | 130d | 2025-11-25 | 2026-04-28 | A1480 |  |  |  |  | 99d | 0d | 2Procurement | Anode Clad | 2PO | Potline building & Equipment |
| A1500 |  | Delivery at site | 26d | 2026-04-29 | 2026-05-29 | A1490 |  |  |  |  | 99d | 23d | 2Procurement | Anode Clad | 2PO | Potline building & Equipment |
|  | 4 | **Pot Hoods** |  | 2025-12-23 | 2027-01-09 |  |  |  |  |  |  |  |  |  |  |  |
|  | PR | **Pre Ordering** |  | 2025-12-23 | 2026-04-01 |  |  |  |  |  |  |  |  |  |  |  |
| A1510 |  | Request for Quotation (RFQ) | 3d | 2025-12-23 | 2025-12-26 | AS2605 FS+195d |  |  |  |  | 25d | 0d | 2Procurement | Pot Hoods | 1PRO | Potline building & Equipment |
| A1520 |  | PO issue | 80d | 2025-12-27 | 2026-04-01 | A1510 |  |  |  |  | 25d | 0d | 2Procurement | Pot Hoods | 1PRO | Potline building & Equipment |
|  | PO | **Post Ordering** |  | 2026-04-02 | 2027-01-09 |  |  |  |  |  |  |  |  |  |  |  |
| A1530 |  | Manufacturing clearance | 1d | 2026-04-02 | 2026-04-02 | A1520 |  |  |  |  | 25d | 0d | 2Procurement | Pot Hoods | 2PO | Potline building & Equipment |
| A1540 |  | Manufacturing | 156d | 2026-04-03 | 2026-10-08 | A1530 |  |  |  |  | 25d | 0d | 2Procurement | Pot Hoods | 2PO | Potline building & Equipment |
| A1550 |  | Delivery at site | 78d | 2026-10-09 | 2027-01-09 | A1540 |  |  |  |  | 25d | 0d | 2Procurement | Pot Hoods | 2PO | Potline building & Equipment |
|  | 10 | **Pot Roof emission sampling arrangement** |  | 2025-07-28 | 2026-09-23 |  |  |  |  |  |  |  |  |  |  |  |
|  | PR | **Pre Ordering** |  | 2025-07-28 | 2026-02-14 |  |  |  |  |  |  |  |  |  |  |  |
| A1560 |  | Request for Quotation (RFQ) | 10d | 2025-07-28 A | 2025-11-10 | AS2606 | 20% | 8d | 2025-08-13 | 2025-08-25 | 239d | 0d | 2Procurement | Pot Roof emission sampling arrangement | 1PRO | Potline building & Equipment |
| A1570 |  | PO issue | 81d | 2025-11-11 | 2026-02-14 | A1560 |  |  |  |  | 239d | 0d | 2Procurement | Pot Roof emission sampling arrangement | 1PRO | Potline building & Equipment |
|  | PO | **Post Ordering** |  | 2026-02-16 | 2026-09-23 |  |  |  |  |  |  |  |  |  |  |  |
| A1580 |  | Manufacturing clearance | 1d | 2026-02-16 | 2026-02-16 | A1570 |  |  |  |  | 239d | 0d | 2Procurement | Pot Roof emission sampling arrangement | 2PO | Potline building & Equipment |
| A1590 |  | Manufacturing | 156d | 2026-02-17 | 2026-08-21 | A1580 |  |  |  |  | 239d | 0d | 2Procurement | Pot Roof emission sampling arrangement | 2PO | Potline building & Equipment |
| A1600 |  | Delivery at site | 26d | 2026-08-22 | 2026-09-23 | A1590 |  |  |  |  | 239d | 147d | 2Procurement | Pot Roof emission sampling arrangement | 2PO | Potline building & Equipment |

| ID | WBS | Activity | Duration | Start | Finish | Predecessors | Complete | Remaining | Planned start | Planned finish | Total float | Free float | Text1 | Text2 | Text3 | Text4 |
| --- | --- | --- | --- | --- | --- | --- | --- | --- | --- | --- | --- | --- | --- | --- | --- | --- |
|  | 24 | **Copper Onsert Collector bars** |  | 2025-09-01 | 2026-02-27 |  |  |  |  |  |  |  |  |  |  |  |
|  | PR | **Pre Ordering** |  | 2025-09-01 | 2025-11-15 |  |  |  |  |  |  |  |  |  |  |  |
| A2260 |  | Request for Quotation (RFQ) | 4d | 2025-09-01 A | 2025-09-03 A | AS2607 FS+122d | 100% |  | 2025-11-01 | 2025-11-06 |  |  | 2Procurement | Copper Onsert Collector bars | 1PRO | Potline building & Equipment |
| A2270 |  | PO issue | 78d | 2025-09-04 A | 2025-11-15 | A2260 | 83% | 13d | 2025-11-07 | 2026-02-07 | 121d | 0d | 2Procurement | Copper Onsert Collector bars | 1PRO | Potline building & Equipment |
|  | PO | **Post Ordering** |  | 2025-11-17 | 2026-02-27 |  |  |  |  |  |  |  |  |  |  |  |
| A2280 |  | Manufacturing clearance | 1d | 2025-11-17 | 2025-11-17 | A2270 |  |  |  |  | 121d | 0d | 2Procurement | Copper Onsert Collector bars | 2PO | Potline building & Equipment |
| A2290 |  | Manufacturing | 70d | 2025-11-18 | 2026-02-09 | A2280 |  |  |  |  | 121d | 0d | 2Procurement | Copper Onsert Collector bars | 2PO | Potline building & Equipment |
| A2300 |  | Delivery at site-Collector bars | 8d | 2026-02-19 | 2026-02-27 | A2290 SS+78d |  |  |  |  | 121d | 110d | 2Procurement | Copper Onsert Collector bars | 2PO | Potline building & Equipment |
|  | 11 | **Crust Bin** |  | 2025-11-12 | 2026-09-25 |  |  |  |  |  |  |  |  |  |  |  |
|  | PR | **Pre Ordering** |  | 2025-11-12 | 2026-02-17 |  |  |  |  |  |  |  |  |  |  |  |
| A1610 |  | Request for Quotation (RFQ) | 2d | 2025-11-12 | 2025-11-13 | AS2730 FS+63d |  |  |  |  | 356d | 0d | 2Procurement | Crust Bin | 1PRO | Potline building & Equipment |
| A1620 |  | PO issue | 80d | 2025-11-14 | 2026-02-17 | A1610 |  |  |  |  | 356d | 0d | 2Procurement | Crust Bin | 1PRO | Potline building & Equipment |
|  | PO | **Post Ordering** |  | 2026-02-18 | 2026-09-25 |  |  |  |  |  |  |  |  |  |  |  |
| A1630 |  | Manufacturing clearance | 1d | 2026-02-18 | 2026-02-18 | A1620 |  |  |  |  | 356d | 0d | 2Procurement | Crust Bin | 2PO | Potline building & Equipment |
| A1640 |  | Manufacturing | 156d | 2026-02-19 | 2026-08-24 | A1630 |  |  |  |  | 356d | 0d | 2Procurement | Crust Bin | 2PO | Potline building & Equipment |
| A1650 |  | Delivery at site | 26d | 2026-08-25 | 2026-09-25 | A1640 |  |  |  |  | 356d | 357d | 2Procurement | Crust Bin | 2PO | Potline building & Equipment |
|  | 12 | **Bath moulds** |  | 2025-11-11 | 2026-10-28 |  |  |  |  |  |  |  |  |  |  |  |
|  | PR | **Pre Ordering** |  | 2025-11-11 | 2026-03-21 |  |  |  |  |  |  |  |  |  |  |  |
| A1660 |  | Request for Quotation (RFQ) | 3d | 2025-11-11 | 2025-11-13 | AS3740 |  |  |  |  | 329d | 0d | 2Procurement | Bath moulds | 1PRO | Potline building & Equipment |
| A1670 |  | PO issue | 107d | 2025-11-14 | 2026-03-21 | A1660 |  |  |  |  | 329d | 0d | 2Procurement | Bath moulds | 1PRO | Potline building & Equipment |
|  | PO | **Post Ordering** |  | 2026-03-23 | 2026-10-28 |  |  |  |  |  |  |  |  |  |  |  |
| A1680 |  | Manufacturing clearance | 1d | 2026-03-23 | 2026-03-23 | A1670 |  |  |  |  | 329d | 0d | 2Procurement | Bath moulds | 2PO | Potline building & Equipment |
| A1690 |  | Manufacturing | 156d | 2026-03-24 | 2026-09-26 | A1680 |  |  |  |  | 329d | 0d | 2Procurement | Bath moulds | 2PO | Potline building & Equipment |
| A1700 |  | Delivery at site | 26d | 2026-09-28 | 2026-10-28 | A1690 |  |  |  |  | 329d | 330d | 2Procurement | Bath moulds | 2PO | Potline building & Equipment |

| ID | WBS | Activity | Duration | Start | Finish | Predecessors | Total float | Free float | Text1 | Text2 | Text3 | Text4 |
| --- | --- | --- | --- | --- | --- | --- | --- | --- | --- | --- | --- | --- |
|  | 13 | **Metal transport Vehicle (MTV)** |  | 2025-11-04 | 2027-05-28 |  |  |  |  |  |  |  |
|  | PR | **Pre Ordering** |  | 2025-11-04 | 2026-02-11 |  |  |  |  |  |  |  |
| A1710 |  | Request for Quotation (RFQ) | 3d | 2025-11-04 | 2025-11-07 | AS3750 FS+89d | 254d | 0d | 2Procurement | Metal transport Vehicle (MTV) | 1PRO | Potline building & Equipment |
| A1720 |  | PO issue | 80d | 2025-11-08 | 2026-02-11 | A1710 | 254d | 0d | 2Procurement | Metal transport Vehicle (MTV) | 1PRO | Potline building & Equipment |
|  | PO | **Post Ordering** |  | 2026-02-12 | 2027-05-28 |  |  |  |  |  |  |  |
| A1730 |  | Manufacturing clearance | 1d | 2026-02-12 | 2026-02-12 | A1720 | 254d | 0d | 2Procurement | Metal transport Vehicle (MTV) | 2PO | Potline building & Equipment |
| A1740 |  | Manufacturing | 364d | 2026-02-13 | 2027-04-27 | A1730 | 254d | 0d | 2Procurement | Metal transport Vehicle (MTV) | 2PO | Potline building & Equipment |
| A1750 |  | Delivery at site | 26d | 2027-04-28 | 2027-05-28 | A1740 | 254d | 255d | 2Procurement | Metal transport Vehicle (MTV) | 2PO | Potline building & Equipment |
|  | 14 | **Anode pallets** |  | 2025-11-11 | 2026-10-26 |  |  |  |  |  |  |  |
|  | PR | **Pre Ordering** |  | 2025-11-11 | 2026-02-17 |  |  |  |  |  |  |  |
| A1760 |  | Request for Quotation (RFQ) | 3d | 2025-11-11 | 2025-11-13 | AS3760 | 331d | 0d | 2Procurement | Anode pallets | 1PRO | Potline building & Equipment |
| A1770 |  | PO issue | 80d | 2025-11-14 | 2026-02-17 | A1760 | 331d | 0d | 2Procurement | Anode pallets | 1PRO | Potline building & Equipment |
|  | PO | **Post Ordering** |  | 2026-02-18 | 2026-10-26 |  |  |  |  |  |  |  |
| A1780 |  | Manufacturing clearance | 26d | 2026-02-18 | 2026-03-20 | A1770 | 331d | 0d | 2Procurement | Anode pallets | 2PO | Potline building & Equipment |
| A1790 |  | Manufacturing | 156d | 2026-03-21 | 2026-09-24 | A1780 | 331d | 0d | 2Procurement | Anode pallets | 2PO | Potline building & Equipment |
| A1800 |  | Delivery at site | 26d | 2026-09-25 | 2026-10-26 | A1790 | 331d | 332d | 2Procurement | Anode pallets | 2PO | Potline building & Equipment |
|  | 15 | **Anode transport vehicle (ATV)** |  | 2025-11-04 | 2027-05-28 |  |  |  |  |  |  |  |
|  | PR | **Pre Ordering** |  | 2025-11-04 | 2026-02-11 |  |  |  |  |  |  |  |
| A1810 |  | Request for Quotation (RFQ) | 3d | 2025-11-04 | 2025-11-07 | AS5620 FS+70d | 153d | 0d | 2Procurement | Anode transport vehicle (ATV) | 1PRO | Potline building & Equipment |
| A1820 |  | PO issue | 80d | 2025-11-08 | 2026-02-11 | A1810 | 153d | 0d | 2Procurement | Anode transport vehicle (ATV) | 1PRO | Potline building & Equipment |
|  | PO | **Post Ordering** |  | 2026-02-12 | 2027-05-28 |  |  |  |  |  |  |  |
| A1830 |  | Manufacturing clearance | 1d | 2026-02-12 | 2026-02-12 | A1820 | 153d | 0d | 2Procurement | Anode transport vehicle (ATV) | 2PO | Potline building & Equipment |
| A1840 |  | Manufacturing | 364d | 2026-02-13 | 2027-04-27 | A1830 | 153d | 0d | 2Procurement | Anode transport vehicle (ATV) | 2PO | Potline building & Equipment |
| A1850 |  | Delivery at site | 26d | 2027-04-28 | 2027-05-28 | A1840 | 153d | 154d | 2Procurement | Anode transport vehicle (ATV) | 2PO | Potline building & Equipment |

| ID | WBS | Activity | Duration | Start | Finish | Predecessors | Total float | Free float | Text1 | Text2 | Text3 | Text4 |
| --- | --- | --- | --- | --- | --- | --- | --- | --- | --- | --- | --- | --- |
|  | 16 | **Alf3 vehicle** |  | 2025-11-07 | 2027-05-28 |  |  |  |  |  |  |  |
|  | PR | **Pre Ordering** |  | 2025-11-07 | 2026-02-11 |  |  |  |  |  |  |  |
| A1860 |  | Request for Quotation (RFQ) | 1d | 2025-11-07 | 2025-11-07 | AS5670 FS+1d | 153d | 0d | 2Procurement | Alf3 vehicle | 1PRO | Potline building & Equipment |
| A1870 |  | PO issue | 80d | 2025-11-08 | 2026-02-11 | A1860 | 153d | 0d | 2Procurement | Alf3 vehicle | 1PRO | Potline building & Equipment |
|  | PO | **Post Ordering** |  | 2026-02-12 | 2027-05-28 |  |  |  |  |  |  |  |
| A1880 |  | Manufacturing clearance | 1d | 2026-02-12 | 2026-02-12 | A1870 | 153d | 0d | 2Procurement | Alf3 vehicle | 2PO | Potline building & Equipment |
| A1890 |  | Manufacturing | 364d | 2026-02-13 | 2027-04-27 | A1880 | 153d | 0d | 2Procurement | Alf3 vehicle | 2PO | Potline building & Equipment |
| A1900 |  | Delivery at site | 26d | 2027-04-28 | 2027-05-28 | A1890 | 153d | 154d | 2Procurement | Alf3 vehicle | 2PO | Potline building & Equipment |
|  | 17 | **Bath Tapping Vehicle (2 Nos)** |  | 2025-11-07 | 2027-05-28 |  |  |  |  |  |  |  |
|  | PR | **Pre Ordering** |  | 2025-11-07 | 2026-02-11 |  |  |  |  |  |  |  |
| A1910 |  | Request for Quotation (RFQ) | 1d | 2025-11-07 | 2025-11-07 | AS5710 FS+1d | 153d | 0d | 2Procurement | Bath Tapping Vehicle (2 Nos) | 1PRO | Potline building & Equipment |
| A1920 |  | PO issue | 80d | 2025-11-08 | 2026-02-11 | A1910 | 153d | 0d | 2Procurement | Bath Tapping Vehicle (2 Nos) | 1PRO | Potline building & Equipment |
|  | PO | **Post Ordering** |  | 2026-02-12 | 2027-05-28 |  |  |  |  |  |  |  |
| A1930 |  | Manufacturing clearance | 1d | 2026-02-12 | 2026-02-12 | A1920 | 153d | 0d | 2Procurement | Bath Tapping Vehicle (2 Nos) | 2PO | Potline building & Equipment |
| A1940 |  | Manufacturing | 364d | 2026-02-13 | 2027-04-27 | A1930 | 153d | 0d | 2Procurement | Bath Tapping Vehicle (2 Nos) | 2PO | Potline building & Equipment |
| A1950 |  | Delivery at site | 26d | 2027-04-28 | 2027-05-28 | A1940 | 153d | 154d | 2Procurement | Bath Tapping Vehicle (2 Nos) | 2PO | Potline building & Equipment |
|  | 18 | **THTV** |  | 2025-11-07 | 2027-05-28 |  |  |  |  |  |  |  |
|  | PR | **Pre Ordering** |  | 2025-11-07 | 2026-02-11 |  |  |  |  |  |  |  |
| A1960 |  | Request for Quotation (RFQ) | 1d | 2025-11-07 | 2025-11-07 | AS5850 FS+1d | 153d | 0d | 2Procurement | THTV | 1PRO | Potline building & Equipment |
| A1970 |  | PO issue | 80d | 2025-11-08 | 2026-02-11 | A1960 | 153d | 0d | 2Procurement | THTV | 1PRO | Potline building & Equipment |
|  | PO | **Post Ordering** |  | 2026-02-12 | 2027-05-28 |  |  |  |  |  |  |  |
| A1980 |  | Manufacturing clearance | 1d | 2026-02-12 | 2026-02-12 | A1970 | 153d | 0d | 2Procurement | THTV | 2PO | Potline building & Equipment |
| A1990 |  | Manufacturing | 364d | 2026-02-13 | 2027-04-27 | A1980 | 153d | 0d | 2Procurement | THTV | 2PO | Potline building & Equipment |
| A2000 |  | Delivery at site | 26d | 2027-04-28 | 2027-05-28 | A1990 | 153d | 154d | 2Procurement | THTV | 2PO | Potline building & Equipment |

| ID | WBS | Activity | Duration | Start | Finish | Predecessors | Complete | Remaining | Planned start | Planned finish | Total float | Free float | Text1 | Text2 | Text3 | Text4 |
| --- | --- | --- | --- | --- | --- | --- | --- | --- | --- | --- | --- | --- | --- | --- | --- | --- |
|  | 19 | **Cathode clad** |  | 2025-08-22 | 2026-08-31 |  |  |  |  |  |  |  |  |  |  |  |
|  | PR | **Pre Ordering** |  | 2025-08-22 | 2025-11-22 |  |  |  |  |  |  |  |  |  |  |  |
| A2010 |  | Request for Quotation (RFQ) | 4d | 2025-08-22 A | 2025-09-02 A | AS5890 FS+17d | 100% |  | 2025-09-12 | 2025-09-16 |  |  | 2Procurement | Cathode clad | 1PRO | Potline building & Equipment |
| A2020 |  | PO issue | 46d | 2025-09-03 A | 2025-11-22 | A2010 | 59% | 19d | 2025-09-18 | 2025-11-13 | 11d | 0d | 2Procurement | Cathode clad | 1PRO | Potline building & Equipment |
|  | PO | **Post Ordering** |  | 2025-11-24 | 2026-08-31 |  |  |  |  |  |  |  |  |  |  |  |
| A2030 |  | Manufacturing clearance | 1d | 2025-11-24 | 2025-11-24 | A2020 |  |  |  |  | 11d | 0d | 2Procurement | Cathode clad | 2PO | Potline building & Equipment |
| A2040 |  | Manufacturing | 208d | 2025-11-25 | 2026-07-30 | A2030 |  |  |  |  | 11d | 0d | 2Procurement | Cathode clad | 2PO | Potline building & Equipment |
| A2050 |  | Delivery at site- Cathode Clad | 43d | 2026-07-09 | 2026-08-31 | A2040 SS+190d |  |  |  |  | 11d | 0d | 2Procurement | Cathode clad | 2PO | Potline building & Equipment |
|  | 20 | **Metal & bath tapping tubes** |  | 2025-11-11 | 2026-07-22 |  |  |  |  |  |  |  |  |  |  |  |
|  | PR | **Pre Ordering** |  | 2025-11-11 | 2026-03-19 |  |  |  |  |  |  |  |  |  |  |  |
| A2060 |  | Request for Quotation (RFQ) | 3d | 2025-11-11 | 2025-11-13 | AS5990 |  |  |  |  | 409d | 0d | 2Procurement | Metal & bath tapping tubes | 1PRO | Potline building & Equipment |
| A2070 |  | PO issue | 105d | 2025-11-14 | 2026-03-19 | A2060 |  |  |  |  | 409d | 0d | 2Procurement | Metal & bath tapping tubes | 1PRO | Potline building & Equipment |
|  | PO | **Post Ordering** |  | 2026-03-20 | 2026-07-22 |  |  |  |  |  |  |  |  |  |  |  |
| A2080 |  | Manufacturing clearance | 1d | 2026-03-20 | 2026-03-20 | A2070 |  |  |  |  | 409d | 0d | 2Procurement | Metal & bath tapping tubes | 2PO | Potline building & Equipment |
| A2090 |  | Manufacturing | 78d | 2026-03-21 | 2026-06-20 | A2080 |  |  |  |  | 409d | 0d | 2Procurement | Metal & bath tapping tubes | 2PO | Potline building & Equipment |
| A2100 |  | Delivery at site | 26d | 2026-06-22 | 2026-07-22 | A2090 |  |  |  |  | 409d | 410d | 2Procurement | Metal & bath tapping tubes | 2PO | Potline building & Equipment |
|  | 21 | **Metal & bath ladle** |  | 2025-11-11 | 2026-10-26 |  |  |  |  |  |  |  |  |  |  |  |
|  | PR | **Pre Ordering** |  | 2025-11-11 | 2026-03-19 |  |  |  |  |  |  |  |  |  |  |  |
| A2110 |  | Request for Quotation (RFQ) | 3d | 2025-11-11 | 2025-11-13 | AS7010 |  |  |  |  | 282d | 0d | 2Procurement | Metal & bath ladle | 1PRO | Potline building & Equipment |
| A2120 |  | PO issue | 105d | 2025-11-14 | 2026-03-19 | A2110 |  |  |  |  | 282d | 0d | 2Procurement | Metal & bath ladle | 1PRO | Potline building & Equipment |
|  | PO | **Post Ordering** |  | 2026-03-20 | 2026-10-26 |  |  |  |  |  |  |  |  |  |  |  |
| A2130 |  | Manufacturing clearance | 1d | 2026-03-20 | 2026-03-20 | A2120 |  |  |  |  | 282d | 0d | 2Procurement | Metal & bath ladle | 2PO | Potline building & Equipment |
| A2140 |  | Manufacturing | 156d | 2026-03-21 | 2026-09-24 | A2130 |  |  |  |  | 282d | 0d | 2Procurement | Metal & bath ladle | 2PO | Potline building & Equipment |
| A2150 |  | Delivery at site | 26d | 2026-09-25 | 2026-10-26 | A2140 |  |  |  |  | 282d | 283d | 2Procurement | Metal & bath ladle | 2PO | Potline building & Equipment |

| ID | WBS | Activity | Duration | Start | Finish | Predecessors | Complete | Remaining | Planned start | Planned finish | Total float | Free float | Text1 | Text2 | Text3 | Text4 |
| --- | --- | --- | --- | --- | --- | --- | --- | --- | --- | --- | --- | --- | --- | --- | --- | --- |
|  | 22 | **Metal & bath ladle refractory lining** |  | 2025-11-11 | 2026-10-26 |  |  |  |  |  |  |  |  |  |  |  |
|  | PR | **Pre Ordering** |  | 2025-11-11 | 2026-03-19 |  |  |  |  |  |  |  |  |  |  |  |
| A2160 |  | Request for Quotation (RFQ) | 3d | 2025-11-11 | 2025-11-13 | AS7020 |  |  |  |  | 282d | 0d | 2Procurement | Metal & bath ladle refractory lining | 1PRO | Potline building & Equipment |
| A2170 |  | PO issue | 105d | 2025-11-14 | 2026-03-19 | A2160 |  |  |  |  | 282d | 0d | 2Procurement | Metal & bath ladle refractory lining | 1PRO | Potline building & Equipment |
|  | PO | **Post Ordering** |  | 2026-03-20 | 2026-10-26 |  |  |  |  |  |  |  |  |  |  |  |
| A2180 |  | Manufacturing clearance | 1d | 2026-03-20 | 2026-03-20 | A2170 |  |  |  |  | 282d | 0d | 2Procurement | Metal & bath ladle refractory lining | 2PO | Potline building & Equipment |
| A2190 |  | Manufacturing | 156d | 2026-03-21 | 2026-09-24 | A2180 |  |  |  |  | 282d | 0d | 2Procurement | Metal & bath ladle refractory lining | 2PO | Potline building & Equipment |
| A2200 |  | Delivery at site | 26d | 2026-09-25 | 2026-10-26 | A2190 |  |  |  |  | 282d | 283d | 2Procurement | Metal & bath ladle refractory lining | 2PO | Potline building & Equipment |
|  | 23 | **Metal ladle lifting beam** |  | 2025-11-11 | 2027-01-28 |  |  |  |  |  |  |  |  |  |  |  |
|  | PR | **Pre Ordering** |  | 2025-11-11 | 2026-03-19 |  |  |  |  |  |  |  |  |  |  |  |
| A2210 |  | Request for Quotation (RFQ) | 3d | 2025-11-11 | 2025-11-13 | AS7350 |  |  |  |  | 253d | 0d | 2Procurement | Metal ladle lifting beam | 1PRO | Potline building & Equipment |
| A2220 |  | PO issue | 105d | 2025-11-14 | 2026-03-19 | A2210 |  |  |  |  | 253d | 0d | 2Procurement | Metal ladle lifting beam | 1PRO | Potline building & Equipment |
|  | PO | **Post Ordering** |  | 2026-03-20 | 2027-01-28 |  |  |  |  |  |  |  |  |  |  |  |
| A2230 |  | Manufacturing clearance | 1d | 2026-03-20 | 2026-03-20 | A2220 |  |  |  |  | 253d | 0d | 2Procurement | Metal ladle lifting beam | 2PO | Potline building & Equipment |
| A2240 |  | Manufacturing | 234d | 2026-03-21 | 2026-12-28 | A2230 |  |  |  |  | 253d | 0d | 2Procurement | Metal ladle lifting beam | 2PO | Potline building & Equipment |
| A2250 |  | Delivery at site | 26d | 2026-12-29 | 2027-01-28 | A2240 |  |  |  |  | 253d | 254d | 2Procurement | Metal ladle lifting beam | 2PO | Potline building & Equipment |
|  | EOT | **EOT** |  | 2025-08-07 | 2026-05-06 |  |  |  |  |  |  |  |  |  |  |  |
|  | PR-O | **Pre Ordering** |  | 2025-08-07 | 2025-10-14 |  |  |  |  |  |  |  |  |  |  |  |
| AS2770 |  | Request for Quotation (RFQ) | 2d | 2025-08-07 A | 2025-08-09 A | AS2610 FS+34d | 100% |  | 2025-09-01 | 2025-09-02 |  |  | 2Procurement | EOT | 1PRO | Potline building & Equipment |
| AS3800 |  | PO issue | 21d | 2025-08-09 A | 2025-10-14 A | AS2770 | 100% |  | 2025-09-01 | 2025-09-25 |  |  | 2Procurement | EOT | 1PRO | Potline building & Equipment |
|  | PO-O | **Post Ordering** |  | 2025-10-15 | 2026-05-06 |  |  |  |  |  |  |  |  |  |  |  |
| AS6600 |  | Manufacturing clearance | 26d | 2025-10-15 A | 2025-12-01 | AS3800 |  | 26d | 2025-11-04 | 2025-12-04 | 49d | 0d | 2Procurement | EOT | 2PO | Potline building & Equipment |
| AS7050 |  | Manufacturing | 130d | 2025-12-02 | 2026-05-06 | AS6600 |  |  |  |  | 49d | 0d | 2Procurement | EOT | 2PO | Potline building & Equipment |
| AS7400 |  | Delivery at site-EOT | 10d | 2026-04-06 | 2026-04-16 | AS7050 SS+104d |  |  |  |  | 49d | 18d | 2Procurement | EOT | 2PO | Potline building & Equipment |

| ID | WBS | Activity | Duration | Start | Finish | Predecessors | Complete | Remaining | Planned start | Planned finish | Total float | Free float | Text1 | Text2 | Text3 | Text4 | Notes |
| --- | --- | --- | --- | --- | --- | --- | --- | --- | --- | --- | --- | --- | --- | --- | --- | --- | --- |
|  | EOT2 | **PT Runway rail** |  | 2025-09-15 | 2026-08-29 |  |  |  |  |  |  |  |  |  |  |  |  |
|  | PR-O | **Pre Ordering** |  | 2025-09-15 | 2025-12-20 |  |  |  |  |  |  |  |  |  |  |  |  |
| AS13541 |  | Request for Quotation (RFQ) | 3d | 2025-09-15 A | 2025-09-15 A | AS2611 FS+33d | 100% |  | 2025-10-03 | 2025-10-06 |  |  | 2Procurement | PT Runway rail | 1PRO | Potline building & Equipment |  |
| AS13551 |  | PO issue | 77d | 2025-09-16 A | 2025-12-20 | AS13541 | 44% | 43d | 2025-10-07 | 2026-01-07 | 290d | 0d | 2Procurement | PT Runway rail | 1PRO | Potline building & Equipment |  |
|  | PO-O | **Post Ordering** |  | 2025-12-22 | 2026-08-29 |  |  |  |  |  |  |  |  |  |  |  |  |
| AS13561 |  | Manufacturing clearance | 1d | 2025-12-22 | 2025-12-22 | AS13551 |  |  |  |  | 290d | 0d | 2Procurement | PT Runway rail | 2PO | Potline building & Equipment |  |
| AS13571 |  | Manufacturing | 208d | 2025-12-23 | 2026-08-29 | AS13561 |  |  |  |  | 290d | 0d | 2Procurement | PT Runway rail | 2PO | Potline building & Equipment |  |
| AS13581 |  | Delivery at site-PT Runway rail | 26d | 2026-04-27 | 2026-05-27 | AS13571 SS+104d |  |  |  |  | 290d | 275d | 2Procurement | PT Runway rail | 2PO | Potline building & Equipment |  |
|  | EOT1 | **Existing EOT crane readiness** |  | 2025-07-26 | 2026-06-06 |  |  |  |  |  |  |  |  |  |  |  |  |
|  | PR-O | **Pre Ordering** |  | 2025-07-26 | 2026-01-02 |  |  |  |  |  |  |  |  |  |  |  |  |
| AS13341 |  | Request for Quotation (RFQ) | 10d | 2025-07-26 A | 2025-09-10 A | AS1820 FS+97d | 100% |  | 2025-10-13 | 2025-10-24 |  |  | 2Procurement | Existing EOT crane readiness | 1PRO | Potline building & Equipment |  |
| AS13351 |  | PO issue | 79d | 2025-09-11 A | 2026-01-02 | AS13341 | 33% | 53d | 2025-11-15 | 2026-02-17 | 110d | 0d | 2Procurement | Existing EOT crane readiness | 1PRO | Potline building & Equipment | This item has been cancelled |
|  | PO-O | **Post Ordering** |  | 2026-01-03 | 2026-06-06 |  |  |  |  |  |  |  |  |  |  |  |  |
| AS13361 |  | Mobilization to site | 26d | 2026-01-03 | 2026-02-03 | AS13351 |  |  |  |  | 110d | 0d | 2Procurement | Existing EOT crane readiness | 2PO | Potline building & Equipment | This item has been cancelled |
| AS13371 |  | Readiness of Construction Crane | 104d | 2026-02-04 | 2026-06-06 | AS13361 |  |  |  |  | 110d | 111d | 2Procurement | Existing EOT crane readiness | 2PO | Potline building & Equipment | This item has been cancelled |
|  | 3 | **Equipment Erection** |  | 2025-11-11 | 2026-04-18 |  |  |  |  |  |  |  |  |  |  |  |  |
|  | 1 | **Pre Ordering** |  | 2025-11-11 | 2026-03-19 |  |  |  |  |  |  |  |  |  |  |  |  |
| AS12580 |  | Request for Quotation (RFQ) | 3d | 2025-11-11 | 2025-11-13 | AS1820 FS+213d |  |  |  |  | 53d | 0d | 2Procurement | Equipment Erection | 1PRO | Potline building & Equipment |  |
| AS12590 |  | PO issue | 105d | 2025-11-14 | 2026-03-19 | AS12580 |  |  |  |  | 53d | 0d | 2Procurement | Equipment Erection | 1PRO | Potline building & Equipment |  |
|  | 2 | **Post Ordering** |  | 2026-03-20 | 2026-04-18 |  |  |  |  |  |  |  |  |  |  |  |  |
| A1210 |  | Mobilization to site | 26d | 2026-03-20 | 2026-04-18 | AS12590 |  |  |  |  | 53d | 24d | 2Procurement | Equipment Erection | 2PO | Potline building & Equipment |  |
|  | BM | **Building material supply** |  | 2025-09-20 | 2026-11-11 |  |  |  |  |  |  |  |  |  |  |  |  |
|  | PO-O | **Post Ordering** |  | 2025-09-20 | 2026-11-11 |  |  |  |  |  |  |  |  |  |  |  |  |
| AS9230 |  | Manufacturing clearance | 156d | 2025-09-20 A | 2025-10-31 | AS1880 FS+26d, AS3250 | 100% | 0d | 2025-09-30 | 2026-04-06 | 77d | 0d | 2Procurement | Building material supply | 2PO | Potline building & Equipment |  |
| AS9330 |  | Manufacturing | 312d | 2025-09-27 A | 2026-11-11 | AS9230 SS+26d, AS6550 SS+26d |  | 312d | 2025-11-01 | 2026-11-12 | 77d | 0d | 2Procurement | Building material supply | 2PO | Potline building & Equipment |  |
| AS9510 |  | Delivery at site- Fab. Str | 286d | 2025-11-18 | 2026-10-27 | AS9330 SS+41d |  |  |  |  | 77d | 55d | 2Procurement | Building material supply | 2PO | Potline building & Equipment |  |

| ID | WBS | Activity | Duration | Start | Finish | Predecessors | Complete | Remaining | Planned start | Planned finish | Total float | Free float | Text1 | Text2 | Text3 | Text4 | Notes |
| --- | --- | --- | --- | --- | --- | --- | --- | --- | --- | --- | --- | --- | --- | --- | --- | --- | --- |
|  | SHT | **Supply of Sheet** |  | 2025-10-10 | 2026-06-25 |  |  |  |  |  |  |  |  |  |  |  |  |
|  | PR | **Pre Ordering** |  | 2025-10-10 | 2025-12-19 |  |  |  |  |  |  |  |  |  |  |  |  |
| A1000 |  | Request for Quotation (RFQ) | 1d | 2025-10-10 A | 2025-10-10 A | AS6740 FS+43d | 100% |  | 2025-10-31 | 2025-10-31 |  |  | 2Procurement | Supply of Sheet | 1PRO | Potline building & Equipment |  |
| A1010 |  | PO issue | 32d | 2025-10-11 A | 2025-12-19 | A1000 |  | 42d | 2025-11-01 | 2025-12-09 | 74d | 0d | 2Procurement | Supply of Sheet | 1PRO | Potline building & Equipment | Considering the internal order |
|  | PO | **Post Ordering** |  | 2025-12-20 | 2026-06-25 |  |  |  |  |  |  |  |  |  |  |  |  |
| A1020 |  | Manufacturing clearance | 1d | 2025-12-20 | 2025-12-20 | A1010 |  |  |  |  | 74d | 0d | 2Procurement | Supply of Sheet | 2PO | Potline building & Equipment |  |
| A1030 |  | Manufacturing | 104d | 2025-12-22 | 2026-04-24 | A1020 |  |  |  |  | 74d | 0d | 2Procurement | Supply of Sheet | 2PO | Potline building & Equipment |  |
| A1040 |  | Delivery at site | 52d | 2026-04-25 | 2026-06-25 | A1030 |  |  |  |  | 74d | 0d | 2Procurement | Supply of Sheet | 2PO | Potline building & Equipment | 4 month lead time considered as per discussion. |
|  | 5 | **Static Roof Ventilator (Design & Supply)** |  | 2025-05-28 | 2026-08-11 |  |  |  |  |  |  |  |  |  |  |  |  |
|  | 1 | **Pre Ordering** |  | 2025-05-28 | 2025-12-20 |  |  |  |  |  |  |  |  |  |  |  |  |
| A1220 |  | Request for Quotation (RFQ) | 10d | 2025-05-28 A | 2025-06-07 A | AS1820 FS+77d | 100% |  |  |  |  |  | 2Procurement | Roof Ventolator (Supply & Fixing) | 1PRO | Potline building & Equipment |  |
| A1230 |  | PO issue | 98d | 2025-06-09 A | 2025-12-20 | A1220 | 56% | 43d | 2025-06-09 | 2025-10-06 | 45d | 0d | 2Procurement | Roof Ventolator (Supply & Fixing) | 1PRO | Potline building & Equipment |  |
|  | 2 | **Post Ordering** |  | 2025-12-22 | 2026-08-11 |  |  |  |  |  |  |  |  |  |  |  |  |
| A1240 |  | Manufacturing clearance | 12d | 2025-12-22 | 2026-01-05 | A1230 |  |  |  |  | 45d | 0d | 2Procurement | Roof Ventolator (Supply & Fixing) | 2PO | Potline building & Equipment |  |
| A1250 |  | Manufacturing | 131d | 2026-01-06 | 2026-06-10 | A1240 |  |  |  |  | 45d | 0d | 2Procurement | Roof Ventolator (Supply & Fixing) | 2PO | Potline building & Equipment |  |
| A1260 |  | Delivery at site | 52d | 2026-06-11 | 2026-08-11 | A1250 |  |  |  |  | 45d | 13d | 2Procurement | Roof Ventolator (Supply & Fixing) | 2PO | Potline building & Equipment |  |
|  | 25 | **Static Roof Ventilator (Fixing)** |  | 2025-08-25 | 2026-02-11 |  |  |  |  |  |  |  |  |  |  |  |  |
|  | 1 | **Pre Ordering** |  | 2025-08-25 | 2026-01-10 |  |  |  |  |  |  |  |  |  |  |  |  |
| A2340 |  | Request for Quotation (RFQ) | 10d | 2025-08-25 A | 2025-08-27 A | AS1820 | 100% |  | 2025-09-15 | 2025-09-26 |  |  | 2Procurement | Roof Ventolator (Supply & Fixing) | 1PRO | Potline building & Equipment |  |
| A2350 |  | PO issue | 95d | 2025-08-28 A | 2026-01-10 | A2340 | 37% | 60d | 2025-06-09 | 2025-10-01 | 151d | 0d | 2Procurement | Roof Ventolator (Supply & Fixing) | 1PRO | Potline building & Equipment |  |
|  | 2 | **Post Ordering** |  | 2026-01-12 | 2026-02-11 |  |  |  |  |  |  |  |  |  |  |  |  |
| A2360 |  | Mobilization at Site | 26d | 2026-01-12 | 2026-02-11 | A2350 |  |  |  |  | 151d | 119d | 2Procurement | Roof Ventolator (Supply & Fixing) | 2PO | Potline building & Equipment |  |
|  | RL | **Rails A120 & Clamps** |  | 2025-08-22 | 2026-06-11 |  |  |  |  |  |  |  |  |  |  |  |  |
|  | PR-O | **Pre Ordering** |  | 2025-08-22 | 2026-01-06 |  |  |  |  |  |  |  |  |  |  |  |  |
| AS5680 |  | Request for Quotation (RFQ) | 3d | 2025-08-22 A | 2025-09-15 A | AS2050 FS+95d | 100% |  | 2025-09-01 | 2025-09-03 |  |  | 2Procurement | Rails A120 & Clamps | 1PRO | Potline building & Equipment |  |
| AS5860 |  | PO issue | 77d | 2025-09-16 A | 2026-01-06 | AS5680 | 27% | 56d | 2025-09-16 | 2025-12-18 | 35d | 0d | 2Procurement | Rails A120 & Clamps | 1PRO | Potline building & Equipment |  |

| ID | WBS | Activity | Duration | Start | Finish | Predecessors | Complete | Remaining | Planned start | Planned finish | Total float | Free float | Text1 | Text2 | Text3 | Text4 | Notes |
| --- | --- | --- | --- | --- | --- | --- | --- | --- | --- | --- | --- | --- | --- | --- | --- | --- | --- |
|  | PO-O | **Post Ordering** |  | 2026-01-07 | 2026-06-11 |  |  |  |  |  |  |  |  |  |  |  |  |
| AS9240 |  | Manufacturing clearance | 1d | 2026-01-07 | 2026-01-07 | AS5860 |  |  |  |  | 35d | 0d | 2Procurement | Rails A120 & Clamps | 2PO | Potline building & Equipment |  |
| AS9340 |  | Manufacturing | 104d | 2026-01-08 | 2026-05-12 | AS9240 |  |  |  |  | 35d | 0d | 2Procurement | Rails A120 & Clamps | 2PO | Potline building & Equipment |  |
| AS9520 |  | Delivery at site-Rail | 52d | 2026-04-11 | 2026-06-11 | AS9340 SS+78d |  |  |  |  | 35d | 11d | 2Procurement | Rails A120 & Clamps | 2PO | Potline building & Equipment |  |
|  | ES | **Electrical Items** |  | 2025-11-03 | 2026-08-24 |  |  |  |  |  |  |  |  |  |  |  |  |
|  | PR-O | **Pre Ordering** |  | 2025-11-03 | 2026-02-09 |  |  |  |  |  |  |  |  |  |  |  |  |
| AS7890 |  | Request for Quotation (RFQ) | 3d | 2025-11-03 | 2025-11-06 | AS2010 FS+100d |  |  |  |  | 51d | 0d | 2Procurement | Electrical Items | 1PRO | Potline building & Equipment |  |
| AS8020 |  | PO issue | 79d | 2025-11-07 | 2026-02-09 | AS7890 |  |  |  |  | 51d | 0d | 2Procurement | Electrical Items | 1PRO | Potline building & Equipment |  |
|  | PO-O | **Post Ordering** |  | 2026-02-10 | 2026-08-24 |  |  |  |  |  |  |  |  |  |  |  |  |
| AS9970 |  | Manufacturing clearance | 26d | 2026-02-10 | 2026-03-12 | AS8020 |  |  |  |  | 51d | 0d | 2Procurement | Electrical Items | 2PO | Potline building & Equipment |  |
| AS9971 |  | Manufacturing | 156d | 2026-02-10 | 2026-08-13 | AS9970 SS |  |  |  |  | 51d | 0d | 2Procurement | Electrical Items | 2PO | Potline building & Equipment |  |
| AS9972 |  | Delivery at site | 150d | 2026-02-26 | 2026-08-24 | AS9971 SS+14d |  |  |  |  | 51d | 0d | 2Procurement | Electrical Items | 2PO | Potline building & Equipment |  |
|  | ES1 | **Pot & Busbar insulators** |  | 2025-09-13 | 2026-06-04 |  |  |  |  |  |  |  |  |  |  |  |  |
|  | PR-O | **Pre Ordering** |  | 2025-09-13 | 2025-11-29 |  |  |  |  |  |  |  |  |  |  |  |  |
| AS13591 |  | Request for Quotation (RFQ) | 3d | 2025-09-13 A | 2025-09-15 A | AS7430 | 100% |  | 2025-09-15 | 2025-09-18 |  |  | 2Procurement | Electrical Items | 1PRO | Potline building & Equipment |  |
| AS13601 |  | PO issue | 79d | 2025-09-16 A | 2025-11-29 | AS13591 | 68% | 25d | 2025-09-19 | 2025-12-23 | 60d | 0d | 2Procurement | Electrical Items | 1PRO | Potline building & Equipment |  |
|  | PO-O | **Post Ordering** |  | 2025-12-01 | 2026-06-04 |  |  |  |  |  |  |  |  |  |  |  |  |
| AS13611 |  | Manufacturing clearance | 26d | 2025-12-01 | 2025-12-31 | AS13601 |  |  |  |  | 60d | 0d | 2Procurement | Electrical Items | 2PO | Potline building & Equipment |  |
| AS13621 |  | Manufacturing | 156d | 2025-12-01 | 2026-06-04 | AS13611 SS |  |  |  |  | 60d | 0d | 2Procurement | Electrical Items | 2PO | Potline building & Equipment |  |
| AS13631 |  | Delivery at site | 26d | 2025-12-17 | 2026-01-16 | AS13621 SS+14d |  |  |  |  | 60d | 32d | 2Procurement | Electrical Items | 2PO | Potline building & Equipment | Lead time considered as per initial schedule discussion |
|  | ES11 | **Power Rails** |  | 2025-11-11 | 2026-06-20 |  |  |  |  |  |  |  |  |  |  |  |  |
|  | PR-O | **Pre Ordering** |  | 2025-11-11 | 2026-02-17 |  |  |  |  |  |  |  |  |  |  |  |  |
| AS13671 |  | Request for Quotation (RFQ) | 3d | 2025-11-11 | 2025-11-13 | AS7530 |  |  |  |  | 32d | 0d | 2Procurement | Electrical Items | 1PRO | Potline building & Equipment |  |
| AS13681 |  | PO issue | 80d | 2025-11-14 | 2026-02-17 | AS13671 |  |  |  |  | 32d | 0d | 2Procurement | Electrical Items | 1PRO | Potline building & Equipment |  |

| ID | WBS | Activity | Duration | Start | Finish | Predecessors | Complete | Remaining | Planned start | Planned finish | Total float | Free float | Text1 | Text2 | Text3 | Text4 |
| --- | --- | --- | --- | --- | --- | --- | --- | --- | --- | --- | --- | --- | --- | --- | --- | --- |
|  | PO-O | **Post Ordering** |  | 2026-02-18 | 2026-06-20 |  |  |  |  |  |  |  |  |  |  |  |
| AS13691 |  | Manufacturing clearance | 26d | 2026-02-18 | 2026-03-20 | AS13681 |  |  |  |  | 32d | 0d | 2Procurement | Electrical Items | 2PO | Potline building & Equipment |
| AS13701 |  | Manufacturing | 65d | 2026-03-21 | 2026-06-05 | AS13691 |  |  |  |  | 32d | 0d | 2Procurement | Electrical Items | 2PO | Potline building & Equipment |
| AS13711 |  | Delivery at site-Power rail | 13d | 2026-06-06 | 2026-06-20 | AS13701 |  |  |  |  | 32d | 2d | 2Procurement | Electrical Items | 2PO | Potline building & Equipment |
|  | ES111 | **KUB Concrete** |  | 2025-05-31 | 2026-05-28 |  |  |  |  |  |  |  |  |  |  |  |
|  | PR-O | **Pre Ordering** |  | 2025-05-31 | 2025-11-22 |  |  |  |  |  |  |  |  |  |  |  |
| AS13751 |  | Request for Quotation (RFQ) | 1d | 2025-05-31 A | 2025-06-03 A | AS1820 | 100% |  | 2025-09-15 | 2025-09-15 |  |  | 2Procurement | Electrical Items | 1PRO | Potline building & Equipment |
| AS13761 |  | PO issue | 79d | 2025-06-04 A | 2025-11-22 | AS13751 | 76% | 19d | 2025-09-16 | 2025-12-20 | 72d | 0d | 2Procurement | Electrical Items | 1PRO | Potline building & Equipment |
|  | PO-O | **Post Ordering** |  | 2025-11-24 | 2026-05-28 |  |  |  |  |  |  |  |  |  |  |  |
| AS13771 |  | Manufacturing clearance | 13d | 2025-11-24 | 2025-12-08 | AS13761 |  |  |  |  | 72d | 0d | 2Procurement | Electrical Items | 2PO | Potline building & Equipment |
| AS13781 |  | Manufacturing | 117d | 2025-12-09 | 2026-04-27 | AS13771 |  |  |  |  | 72d | 0d | 2Procurement | Electrical Items | 2PO | Potline building & Equipment |
| AS13791 |  | Delivery at site | 26d | 2026-04-28 | 2026-05-28 | AS13781 |  |  |  |  | 72d | 54d | 2Procurement | Electrical Items | 2PO | Potline building & Equipment |
|  | ES1111 | **Refractory & Insulating Bricks** |  | 2025-09-27 | 2026-07-08 |  |  |  |  |  |  |  |  |  |  |  |
|  | PR-O | **Pre Ordering** |  | 2025-09-27 | 2026-01-03 |  |  |  |  |  |  |  |  |  |  |  |
| AS13801 |  | Request for Quotation (RFQ) | 3d | 2025-09-27 A | 2025-09-30 A | AS1820 FS+182d | 100% |  | 2025-10-15 | 2025-10-17 |  |  | 2Procurement | Electrical Items | 1PRO | Potline building & Equipment |
| AS13811 |  | PO issue | 43d | 2025-10-01 A | 2026-01-03 | AS13801 |  | 54d | 2025-10-18 | 2025-12-09 | 37d | 0d | 2Procurement | Electrical Items | 1PRO | Potline building & Equipment |
|  | PO-O | **Post Ordering** |  | 2026-01-05 | 2026-07-08 |  |  |  |  |  |  |  |  |  |  |  |
| AS13821 |  | Manufacturing clearance | 13d | 2026-01-05 | 2026-01-19 | AS13811 |  |  |  |  | 37d | 0d | 2Procurement | Electrical Items | 2PO | Potline building & Equipment |
| AS13831 |  | Manufacturing | 117d | 2026-01-20 | 2026-06-08 | AS13821 |  |  |  |  | 37d | 0d | 2Procurement | Electrical Items | 2PO | Potline building & Equipment |
| AS13841 |  | Delivery at site | 26d | 2026-06-09 | 2026-07-08 | AS13831 |  |  |  |  | 37d | 19d | 2Procurement | Electrical Items | 2PO | Potline building & Equipment |
|  | ES11111 | **Insulators (FIM to C&S Agency)** |  | 2025-10-03 | 2026-02-16 |  |  |  |  |  |  |  |  |  |  |  |
|  | PR-O | **Pre Ordering** |  | 2025-10-03 | 2025-12-15 |  |  |  |  |  |  |  |  |  |  |  |
| AS13971 |  | Request for Quotation (RFQ) | 3d | 2025-10-03 A | 2025-10-03 A | AS1820 FS+186d | 100% |  | 2025-10-15 | 2025-10-17 |  |  | 2Procurement | Electrical Items | 1PRO | Potline building & Equipment |
| AS13981 |  | PO issue | 50d | 2025-10-04 A | 2025-12-15 | AS13971 | 24% | 38d | 2025-10-18 | 2025-12-17 | 22d | 0d | 2Procurement | Electrical Items | 1PRO | Potline building & Equipment |

Notes:
- AS13841: Notes: Refractory Concrete, Mortar, Mineral Wool panels, Glass Fiber, SC Slab, Flat Bars & Sealing Cast Iron in Potroom
- AS13981: Notes: Considering RFQ will be floated to single agency and the technical offer are finalized.

| ID | WBS | Activity | Duration | Start | Finish | Predecessors | Total float | Free float | Text1 | Text2 | Text3 | Notes | Agency |
| --- | --- | --- | --- | --- | --- | --- | --- | --- | --- | --- | --- | --- | --- |
|  | PO-O | **Post Ordering** |  | 2025-12-16 | 2026-02-16 |  |  |  |  |  |  |  |  |
| AS13991 |  | Manufacturing clearance | 1d | 2025-12-16 | 2025-12-16 | AS13981 | 22d | 0d | 2Procurement | Electrical Items | 2PO |  |  |
| AS14001 |  | Manufacturing | 38d | 2025-12-17 | 2026-01-31 | AS13991 | 22d | 0d | 2Procurement | Electrical Items | 2PO |  |  |
| AS14011 |  | Delivery at site-Insulator | 13d | 2026-02-02 | 2026-02-16 | AS14001 | 22d | 0d | 2Procurement | Electrical Items | 2PO | 6-8 week of delivery. |  |
|  | SSR | **Conversion sub-station (220 kV switchyard and Rectifier Substation)** |  | 2025-06-18 | 2027-07-13 |  |  |  |  |  |  |  |  |
|  | RSS | **Rectifier Group** |  | 2025-06-18 | 2027-07-13 |  |  |  |  |  |  |  |  |
|  | PR-O | **Pre Ordering** |  |  |  |  |  |  |  |  |  |  |  |
|  | PO-O | **Post Ordering** |  | 2025-12-30 | 2027-07-06 |  |  |  |  |  |  |  |  |
| AS10500 |  | Manufacturing clearance | 118d | 2025-12-30 | 2026-05-19 | AS5240 SS+152d | -1d | 0d | 2Procurement | Rectifier Group | 2PO | Transformers |  |
| AS10910 |  | Manufacturing | 348d | 2026-01-09 | 2027-03-04 | AS10500 SS+9d | -1d | 0d | 2Procurement | Rectifier Group | 2PO |  |  |
| AS11260 |  | Delivery at site - Rectifier Group | 127d | 2027-02-05 | 2027-07-06 | AS10910 SS+325d | -1d | 0d | 2Procurement | Rectifier Group | 2PO |  |  |
|  | 2 | **Rectifiers** |  | 2025-12-30 | 2027-04-30 |  |  |  |  |  |  |  |  |
|  | 1 | **Post Ordering** |  | 2025-12-30 | 2027-04-30 |  |  |  |  |  |  |  |  |
| A3390 |  | Manufacturing clearance | 233d | 2025-12-30 | 2026-10-06 | AS1849 FS+173d | 98d | 0d |  |  |  |  | GEV |
| A3400 |  | Manufacturing Rectifier-1 | 134d | 2026-10-07 | 2027-03-17 | A3390 | 98d | 0d |  |  |  |  | GEV |
| A3410 |  | Manufacturing Rectifier-2 | 130d | 2026-10-21 | 2027-03-26 | A3400 SS+12d | 103d | 0d |  |  |  |  | GEV |
| A3420 |  | Manufacturing Rectifier-3 | 112d | 2026-11-04 | 2027-03-19 | A3410 SS+12d | 106d | 0d |  |  |  |  | GEV |
| A3430 |  | Manufacturing Rectifier-4 | 110d | 2026-11-19 | 2027-03-31 | A3420 SS+12d | 106d | 0d |  |  |  |  | GEV |
| A3440 |  | Manufacturing Rectifier-5 | 97d | 2026-11-19 | 2027-03-16 | A3430 SS | 106d | 0d |  |  |  |  | GEV |
| A3490 |  | Delivery at site - Rectifier 5 | 39d | 2027-03-17 | 2027-04-30 | A3440 | 106d | 8d |  |  |  |  | GEV |
| A3450 |  | Delivery at site - Rectifier 1 | 23d | 2027-03-18 | 2027-04-13 | A3400 | 98d | 0d |  |  |  |  | GEV |
| A3470 |  | Delivery at site - Rectifier 3 | 23d | 2027-03-20 | 2027-04-15 | A3420 | 107d | 9d |  |  |  |  | GEV |
| A3460 |  | Delivery at site - Rectifier 2 | 15d | 2027-03-27 | 2027-04-13 | A3410 | 103d | 5d |  |  |  |  | GEV |
| A3480 |  | Delivery at site - Rectifier 4 | 13d | 2027-04-01 | 2027-04-15 | A3430 | 113d | 15d |  |  |  |  | GEV |

Notes:
- AS13991: Text4: Potline building & Equipment
- AS14001: Text4: Potline building & Equipment
- AS14011: Text4: Potline building & Equipment
- AS10500: Text4: Conversion sub-station (220 kV switchyard and Rectifier Substation)
- AS10910: Text4: Conversion sub-station (220 kV switchyard and Rectifier Substation)
- AS11260: Text4: Conversion sub-station (220 kV switchyard and Rectifier Substation)

| ID | WBS | Activity | Duration | Start | Finish | Predecessors | Complete | Remaining | Planned start | Planned finish | Total float | Free float |
| --- | --- | --- | --- | --- | --- | --- | --- | --- | --- | --- | --- | --- |
|  | 1 | **Transformers** |  | 2025-06-18 | 2027-07-13 |  |  |  |  |  |  |  |
|  | 1 | **Post Ordering** |  | 2025-06-18 | 2027-07-13 |  |  |  |  |  |  |  |
| A2550 |  | Preliminary Drawing | 5d | 2025-06-18 A | 2025-09-01 A | AS1849 | 100% |  | 2025-10-15 | 2025-10-20 |  |  |
| A2560 |  | Manufacturing- Batch 1 RECT TX (3 nos)-GE PT Turkey(ATT) | 5d | 2025-09-02 A | 2027-01-18 | A2550 |  | 369d | 2025-10-15 | 2025-10-20 | 5d | 0d |
| A2570 |  | Manufacturing- Batch 2 RECT TX (2 nos)-GE PT Turkey(ATT) | 5d | 2025-09-09 A | 2027-02-12 | A2560 SS+5d |  | 390d | 2025-10-15 | 2025-10-20 | 5d | 0d |
| A2580 |  | Manufacturing- Batch 1 REG TX (2 nos)-GE PT Turkey(ATT) | 5d | 2025-09-09 A | 2027-03-05 | A2570 SS |  | 407d | 2025-10-15 | 2025-10-20 | 5d | 0d |
| A2590 |  | Manufacturing- Batch 2 REG TX (3 nos)-GE PT Turkey(ATT) | 5d | 2025-09-09 A | 2027-03-04 | A2580 SS |  | 406d | 2025-10-15 | 2025-10-20 | 15d | 8d |
| A2600 |  | Test & FAT-Batch 1 RECT TX (3 nos)-Type Test for 1st Tx | 12d | 2027-01-20 | 2027-02-03 | A2560 FS+1d |  |  |  |  | 46d | 0d |
| A2690 |  | Rectifier Transformer FAT | 25d | 2027-01-20 | 2027-02-18 | A2600 SS |  |  |  |  | 46d | 0d |
| A2640 |  | Packing & Ready For FOB Batch 1 - Rectifier Transformer | 4d | 2027-02-04 | 2027-02-08 | A2600 |  |  |  |  | 56d | 10d |
| A2610 |  | Test & FAT -Batch 2 RECT TX (2 nos) | 4d | 2027-02-16 | 2027-02-19 | A2570 FS+2d |  |  |  |  | 43d | 0d |
| A2710 |  | Transformer batch 1 RECT TX ( 3 Nos)- CIF India Port | 47d | 2027-02-20 | 2027-04-17 | A2690 FS+1d, A2640 |  |  |  |  | 46d | 0d |
| A2650 |  | Packing & Ready For FOB Batch 2 -Rectifier Transformer | 3d | 2027-02-22 | 2027-02-24 | A2610 FS+1d |  |  |  |  | 43d | 0d |
| A2720 |  | Transformer batch 2 RECT TX ( 2 Nos)- CIF India Port | 47d | 2027-02-25 | 2027-04-22 | A2650 |  |  |  |  | 43d | 0d |
| A2620 |  | Test & FAT -Batch 1 REG TX (2 nos)-Type Test for 1st Tx | 5d | 2027-03-09 | 2027-03-13 | A2580 FS+2d |  |  |  |  | 5d | 0d |
| A2700 |  | Regulating Transformer FAT | 20d | 2027-03-09 | 2027-04-01 | A2620 SS |  |  |  |  | 5d | 0d |
| A2660 |  | Packing & Ready to FOB Batch 1- Regulating Transformer | 3d | 2027-03-16 | 2027-03-18 | A2620 |  |  |  |  | 17d | 12d |
| A2630 |  | Test & FAT Batch 2 REG TX (3 nos) | 8d | 2027-03-18 | 2027-03-26 | A2590 FS+2d, A2620 FS+2d |  |  |  |  | 7d | 0d |
| A2670 |  | Packing & Ready For FOB Batch 2-Regulating Transformer | 3d | 2027-03-30 | 2027-04-01 | A2630 FS+2d |  |  |  |  | 7d | 0d |
| A2680 |  | Transport Readiness | 1d | 2027-04-02 | 2027-04-02 | A2670 |  |  |  |  | 301d | 302d |
| A2730 |  | Transformer batch 1 REG TX (3 nos) -CIF India Port | 51d | 2027-04-02 | 2027-06-01 | A2700, A2660 |  |  |  |  | 5d | 0d |
| A2740 |  | Transformer batch 2 REG TX (2-nos) -CIF India Port | 51d | 2027-04-02 | 2027-06-01 | A2670 |  |  |  |  | 7d | 0d |
| A2750 |  | India Port To HIL Site - Transformer Batch -1(2 Nos) RECT TX | 31d | 2027-04-20 | 2027-05-26 | A2710 FS+1d |  |  |  |  | 46d | 0d |
| A2760 |  | India Port To HIL Site - Transformer Batch -2(3 Nos) RECT TX | 31d | 2027-04-26 | 2027-06-01 | A2720 FS+2d |  |  |  |  | 43d | 0d |
| A3290 |  | Transformer-1 RECT Available At Site | 1d | 2027-05-27 | 2027-05-27 | A2750 |  |  |  |  | 47d | 0d |
| A3310 |  | Transformer-2 RECT Available At Site | 1d | 2027-05-27 | 2027-05-27 | A2750 |  |  |  |  | 46d | 0d |
| A3330 |  | Transformer -3 RECT Available At Site | 1d | 2027-06-02 | 2027-06-02 | A2760 |  |  |  |  | 43d | 0d |
| A3350 |  | Transformer-4 RECT Available At Site | 1d | 2027-06-02 | 2027-06-02 | A2760 |  |  |  |  | 45d | 0d |
| A3370 |  | Transformer -5 RECT Available At Site | 1d | 2027-06-02 | 2027-06-02 | A2760 |  |  |  |  | 47d | 0d |
| A2770 |  | India Port To HIL Site - Transformer Batch -1(2 Nos) REG TX | 29d | 2027-06-03 | 2027-07-06 | A2730 FS+1d |  |  |  |  | 5d | 0d |
| A2780 |  | India Port To HIL Site - Transformer Batch -2(3 nos) REG TX | 29d | 2027-06-03 | 2027-07-06 | A2740 FS+1d |  |  |  |  | 7d | 0d |
| A3300 |  | Transformer-1 REG Available At Site | 6d | 2027-07-07 | 2027-07-13 | A2770 |  |  |  |  | 6d | 0d |
| A3320 |  | Transformer -2 REG Available At Site | 6d | 2027-07-07 | 2027-07-13 | A2770 |  |  |  |  | 5d | 0d |
| A3340 |  | Transformer -3 REG Available At Site | 6d | 2027-07-07 | 2027-07-13 | A2780 |  |  |  |  | 7d | 0d |
| A3360 |  | Transformer -4 REG Available At Site | 6d | 2027-07-07 | 2027-07-13 | A2780 |  |  |  |  | 9d | 0d |
| A3380 |  | Transformer -5 REG Available At Site | 6d | 2027-07-07 | 2027-07-13 | A2780 |  |  |  |  | 11d | 0d |

| ID | WBS | Activity | Duration | Start | Finish | Predecessors | Complete | Remaining | Planned start | Planned finish | Total float | Free float | Text1 | Text2 | Text3 | Agency | Notes |
| --- | --- | --- | --- | --- | --- | --- | --- | --- | --- | --- | --- | --- | --- | --- | --- | --- | --- |
|  | SSI | **220 kV substation items** |  | 2025-08-11 | 2027-05-07 |  |  |  |  |  |  |  |  |  |  |  |  |
|  | PR-O | **Pre Ordering** |  |  |  |  |  |  |  |  |  |  |  |  |  |  |  |
|  | PO-O | **Post Ordering** |  | 2025-08-11 | 2027-01-22 |  |  |  |  |  |  |  |  |  |  |  |  |
| AS10490 |  | Manufacturing clearance | 26d | 2025-08-11 A | 2025-11-28 | AS5240 | 92% | 2d | 2025-09-27 | 2025-10-29 | 16d | 0d | 2Procurement | 220 kV Sub-station | 2PO |  |  |
| AS10900 |  | Manufacturing | 340d | 2025-11-29 | 2027-01-12 | AS10490 |  |  |  |  | 16d | 0d | 2Procurement | 220 kV Sub-station | 2PO |  |  |
| AS11250 |  | Delivery at site | 9d | 2027-01-13 | 2027-01-22 | AS10900 |  |  |  |  | 16d | 17d | 2Procurement | 220 kV Sub-station | 2PO |  |  |
|  | 1 | **55 MVA Power Transformer** |  | 2025-08-19 | 2027-05-07 |  |  |  |  |  |  |  |  |  |  |  |  |
|  | 1 | **Post Ordering** |  | 2025-08-19 | 2027-05-07 |  |  |  |  |  |  |  |  |  |  |  |  |
| A2470 |  | Document Submission to EIL | 5d | 2025-08-19 A | 2025-09-08 A | AS1849 | 100% |  | 2025-09-30 | 2025-10-06 |  |  |  |  |  |  |  |
| A2480 |  | Manufacturing Approval | 5d | 2025-09-09 A | 2025-11-06 | A2470 |  | 5d | 2025-09-30 | 2025-10-06 | 156d | 0d |  |  |  |  |  |
| A2490 |  | Manufacturing | 402d | 2025-11-07 | 2027-03-05 | A2480 |  |  |  |  | 156d | 0d |  |  |  |  |  |
| A2500 |  | FAT | 5d | 2027-03-06 | 2027-03-11 | A2490 |  |  |  |  | 156d | 0d |  |  |  |  |  |
| A2510 |  | Transport to site | 47d | 2027-03-12 | 2027-05-07 | A2500 |  |  |  |  | 156d | 0d |  |  |  |  |  |
|  | SSI1 | **GIS Items** |  | 2025-10-09 | 2027-02-12 |  |  |  |  |  |  |  |  |  |  |  |  |
|  | PR-O | **Pre Ordering** |  |  |  |  |  |  |  |  |  |  |  |  |  |  |  |
|  | PO-O | **Post Ordering** |  | 2025-10-09 | 2027-02-12 |  |  |  |  |  |  |  |  |  |  |  |  |
| AS13261 |  | Manufacturing clearance | 357d | 2025-10-09 A | 2025-11-14 | AS5240 SS | 97% | 12d | 2025-10-15 | 2026-12-18 | 248d | 0d | 2Procurement | GIS Items | 2PO | GEV |  |
| AS13271 |  | Manufacturing | 347d | 2025-11-15 | 2027-01-06 | AS13261 |  |  |  |  | 248d | 0d | 2Procurement | GIS Items | 2PO | GEV | Inculding FAT |
| AS13281 |  | Delivery at site | 31d | 2027-01-07 | 2027-02-12 | AS13271 |  |  |  |  | 248d | 0d | 2Procurement | GIS Items | 2PO |  |  |
|  | SSI11 | **Bus bar** |  | 2025-11-27 | 2027-02-25 |  |  |  |  |  |  |  |  |  |  |  |  |
|  | PR-O | **Pre Ordering** |  |  |  |  |  |  |  |  |  |  |  |  |  |  |  |
|  | PO-O | **Post Ordering** |  | 2025-11-27 | 2027-02-25 |  |  |  |  |  |  |  |  |  |  |  |  |
| AS13311 |  | Manufacturing clearance | 26d | 2025-11-27 | 2025-12-27 | AS5240 |  |  |  |  | 48d | 0d | 2Procurement | Bus bar | 2PO |  |  |
| AS13321 |  | Manufacturing | 328d | 2025-12-29 | 2027-01-27 | AS13311 |  |  |  |  | 48d | 0d | 2Procurement | Bus bar | 2PO |  |  |
| AS13331 |  | Delivery at site | 25d | 2027-01-28 | 2027-02-25 | AS13321 |  |  |  |  | 48d | 0d | 2Procurement | Bus bar | 2PO |  |  |

Notes:
- AS10490: Text4: Conversion sub-station (220 kV switchyard and Rectifier Substation)
- AS10900: Text4: Conversion sub-station (220 kV switchyard and Rectifier Substation)
- AS11250: Text4: Conversion sub-station (220 kV switchyard and Rectifier Substation)
- AS13261: Text4: Conversion sub-station (220 kV switchyard and Rectifier Substation)
- AS13271: Text4: Conversion sub-station (220 kV switchyard and Rectifier Substation)
- AS13281: Text4: Conversion sub-station (220 kV switchyard and Rectifier Substation)
- AS13311: Text4: Conversion sub-station (220 kV switchyard and Rectifier Substation)
- AS13321: Text4: Conversion sub-station (220 kV switchyard and Rectifier Substation)
- AS13331: Text4: Conversion sub-station (220 kV switchyard and Rectifier Substation)

| ID | WBS | Activity | Duration | Start | Finish | Predecessors | Total float | Free float | Text1 | Text2 | Text3 | Text4 |
| --- | --- | --- | --- | --- | --- | --- | --- | --- | --- | --- | --- | --- |
|  | GTC | **Gas Treatment Center (GTC)** |  | 2025-08-04 | 2027-06-07 |  |  |  |  |  |  |  |
|  | PGDT | **Pot gas dry treatment** |  | 2025-11-06 | 2026-12-18 |  |  |  |  |  |  |  |
|  | PR-O | **Pre Ordering** |  | 2025-11-06 | 2026-02-09 |  |  |  |  |  |  |  |
| AS8050 |  | Request for Quotation (RFQ) | 10d | 2025-11-06 | 2025-11-17 | AS5230 SS+100d | 28d | 0d | 2Procurement | Pot gas dry treatment | 1PRO | Gas Treatment Center (GTC) |
| AS8410 |  | PO issue | 70d | 2025-11-18 | 2026-02-09 | AS8050 | 28d | 0d | 2Procurement | Pot gas dry treatment | 1PRO | Gas Treatment Center (GTC) |
|  | PO-O | **Post Ordering** |  | 2026-02-10 | 2026-12-18 |  |  |  |  |  |  |  |
| AS10150 |  | Manufacturing clearance | 26d | 2026-02-10 | 2026-03-12 | AS8410 | 28d | 0d | 2Procurement | Pot gas dry treatment | 2PO | Gas Treatment Center (GTC) |
| AS10290 |  | Manufacturing | 182d | 2026-03-13 | 2026-10-17 | AS10150 | 28d | 0d | 2Procurement | Pot gas dry treatment | 2PO | Gas Treatment Center (GTC) |
| AS10330 |  | Delivery at site | 52d | 2026-10-19 | 2026-12-18 | AS10290 | 28d | 0d | 2Procurement | Pot gas dry treatment | 2PO | Gas Treatment Center (GTC) |
|  | GTCSS | **GTC Substation items** |  | 2025-11-06 | 2026-12-04 |  |  |  |  |  |  |  |
|  | PR-O | **Pre Ordering** |  | 2025-11-06 | 2026-02-18 |  |  |  |  |  |  |  |
| AS8060 |  | Request for Quotation (RFQ) | 10d | 2025-11-06 | 2025-11-17 | AS5230 SS+100d | 93d | 0d | 2Procurement | GTC Substation items | 1PRO | Gas Treatment Center (GTC) |
| AS9030 |  | PO issue | 78d | 2025-11-18 | 2026-02-18 | AS8060 | 93d | 0d | 2Procurement | GTC Substation items | 1PRO | Gas Treatment Center (GTC) |
|  | PO-O | **Post Ordering** |  | 2026-02-19 | 2026-12-04 |  |  |  |  |  |  |  |
| AS10560 |  | Manufacturing clearance | 15d | 2026-02-19 | 2026-03-09 | AS9030 | 93d | 0d | 2Procurement | GTC Substation items | 2PO | Gas Treatment Center (GTC) |
| AS10710 |  | Manufacturing | 175d | 2026-03-10 | 2026-10-06 | AS10560 | 93d | 0d | 2Procurement | GTC Substation items | 2PO | Gas Treatment Center (GTC) |
| AS11160 |  | Delivery at site | 50d | 2026-10-07 | 2026-12-04 | AS10710 | 93d | 27d | 2Procurement | GTC Substation items | 2PO | Gas Treatment Center (GTC) |
|  | GTCB | **GTC Blower** |  | 2025-11-06 | 2026-12-08 |  |  |  |  |  |  |  |
|  | PR-O | **Pre Ordering** |  | 2025-11-06 | 2026-02-10 |  |  |  |  |  |  |  |
| AS8070 |  | Request for Quotation (RFQ) | 3d | 2025-11-06 | 2025-11-08 | AS5230 SS+100d | 37d | 0d | 2Procurement | GTC Blower | 1PRO | Gas Treatment Center (GTC) |
| AS9040 |  | PO issue | 78d | 2025-11-10 | 2026-02-10 | AS8070 | 37d | 0d | 2Procurement | GTC Blower | 1PRO | Gas Treatment Center (GTC) |
|  | PO-O | **Post Ordering** |  | 2026-02-11 | 2026-12-08 |  |  |  |  |  |  |  |
| AS10570 |  | Manufacturing clearance | 15d | 2026-02-11 | 2026-02-27 | AS9040 | 37d | 0d | 2Procurement | GTC Blower | 2PO | Gas Treatment Center (GTC) |
| AS10720 |  | Manufacturing | 175d | 2026-02-28 | 2026-09-26 | AS10570 | 37d | 0d | 2Procurement | GTC Blower | 2PO | Gas Treatment Center (GTC) |
| AS11170 |  | Delivery at site | 60d | 2026-09-28 | 2026-12-08 | AS10720 | 37d | 9d | 2Procurement | GTC Blower | 2PO | Gas Treatment Center (GTC) |

| ID | WBS | Activity | Duration | Start | Finish | Predecessors | Complete | Remaining | Planned start | Planned finish | Total float | Free float | Text1 | Text2 | Text3 | Text4 |
| --- | --- | --- | --- | --- | --- | --- | --- | --- | --- | --- | --- | --- | --- | --- | --- | --- |
|  | CHI | **Chimney items** |  | 2025-11-06 | 2027-03-02 |  |  |  |  |  |  |  |  |  |  |  |
|  | PR-O | **Pre Ordering** |  | 2025-11-06 | 2026-05-04 |  |  |  |  |  |  |  |  |  |  |  |
| AS8080 |  | Request for Quotation (RFQ) | 30d | 2025-11-06 | 2025-12-10 | AS5230 SS+100d |  |  |  |  | 128d | 0d | 2Procurement | Chimney items | 1PRO | Gas Treatment Center (GTC) |
| AS9050 |  | PO issue | 120d | 2025-12-11 | 2026-05-04 | AS8080 |  |  |  |  | 128d | 0d | 2Procurement | Chimney items | 1PRO | Gas Treatment Center (GTC) |
|  | PO-O | **Post Ordering** |  | 2026-05-05 | 2027-03-02 |  |  |  |  |  |  |  |  |  |  |  |
| AS10580 |  | Manufacturing clearance | 15d | 2026-05-05 | 2026-05-21 | AS9050 |  |  |  |  | 128d | 0d | 2Procurement | Chimney items | 2PO | Gas Treatment Center (GTC) |
| AS10730 |  | Manufacturing | 175d | 2026-05-22 | 2026-12-18 | AS10580 |  |  |  |  | 128d | 0d | 2Procurement | Chimney items | 2PO | Gas Treatment Center (GTC) |
| AS11180 |  | Delivery at site | 60d | 2026-12-19 | 2027-03-02 | AS10730 |  |  |  |  | 128d | 96d | 2Procurement | Chimney items | 2PO | Gas Treatment Center (GTC) |
|  | DUCTS | **Ducts (including accessories)** |  | 2025-11-06 | 2026-12-16 |  |  |  |  |  |  |  |  |  |  |  |
|  | PR-O | **Pre Ordering** |  | 2025-11-06 | 2026-02-18 |  |  |  |  |  |  |  |  |  |  |  |
| AS8090 |  | Request for Quotation (RFQ) | 10d | 2025-11-06 | 2025-11-17 | AS5230 SS+100d |  |  |  |  | 30d | 0d | 2Procurement | Ducts (including accessories) | 1PRO | Gas Treatment Center (GTC) |
| AS9060 |  | PO issue | 78d | 2025-11-18 | 2026-02-18 | AS8090 |  |  |  |  | 30d | 0d | 2Procurement | Ducts (including accessories) | 1PRO | Gas Treatment Center (GTC) |
|  | PO-O | **Post Ordering** |  | 2026-02-19 | 2026-12-16 |  |  |  |  |  |  |  |  |  |  |  |
| AS10590 |  | Manufacturing clearance | 15d | 2026-02-19 | 2026-03-09 | AS9060 |  |  |  |  | 30d | 0d | 2Procurement | Ducts (including accessories) | 2PO | Gas Treatment Center (GTC) |
| AS10740 |  | Manufacturing | 175d | 2026-03-10 | 2026-10-06 | AS10590 |  |  |  |  | 30d | 0d | 2Procurement | Ducts (including accessories) | 2PO | Gas Treatment Center (GTC) |
| AS11190 |  | Delivery at site | 60d | 2026-10-07 | 2026-12-16 | AS10740 |  |  |  |  | 30d | 2d | 2Procurement | Ducts (including accessories) | 2PO | Gas Treatment Center (GTC) |
|  | HDPS | **Hyper Density Phase System (HDPS)** |  | 2025-08-04 | 2027-06-07 |  |  |  |  |  |  |  |  |  |  |  |
|  | PR-O | **Pre Ordering** |  | 2025-08-04 | 2025-11-13 |  |  |  |  |  |  |  |  |  |  |  |
| AS2780 |  | Request for Quotation (RFQ) | 5d | 2025-08-04 A | 2025-08-13 A | AS2620 FS+137d | 100% |  | 2025-09-01 | 2025-09-05 |  |  | 2Procurement | Hyper Density Phase System (HDPS) | 1PRO | Gas Treatment Center (GTC) |
| AS3810 |  | PO issue | 71d | 2025-08-14 A | 2025-11-13 | AS2780 | 85% | 11d | 2025-09-06 | 2025-12-02 | 22d | 0d | 2Procurement | Hyper Density Phase System (HDPS) | 1PRO | Gas Treatment Center (GTC) |
|  | PO-O | **Post Ordering** |  | 2025-11-21 | 2027-06-07 |  |  |  |  |  |  |  |  |  |  |  |
| AS6610 |  | Manufacturing clearance | 26d | 2025-11-21 | 2025-12-20 | AS3810, AS5810 |  |  |  |  | 22d | 0d | 2Procurement | Hyper Density Phase System (HDPS) | 2PO | Gas Treatment Center (GTC) |
| AS9430 |  | Manufacturing | 364d | 2025-12-22 | 2027-03-05 | AS6610 |  |  |  |  | 22d | 0d | 2Procurement | Hyper Density Phase System (HDPS) | 2PO | Gas Treatment Center (GTC) |
| AS9431 |  | Delivery at site-HDPS | 78d | 2027-03-06 | 2027-06-07 | AS9430 |  |  |  |  | 22d | 0d | 2Procurement | Hyper Density Phase System (HDPS) | 2PO | Gas Treatment Center (GTC) |

| ID | WBS | Activity | Duration | Start | Finish | Predecessors | Complete | Remaining | Planned start | Planned finish | Total float | Free float | Text1 | Text2 | Text3 | Text4 |
| --- | --- | --- | --- | --- | --- | --- | --- | --- | --- | --- | --- | --- | --- | --- | --- | --- |
|  | BM | **Building material supply** |  | 2025-11-06 | 2026-11-13 |  |  |  |  |  |  |  |  |  |  |  |
|  | PR-O | **Pre Ordering** |  | 2025-11-06 | 2026-03-10 |  |  |  |  |  |  |  |  |  |  |  |
| AS8100 |  | Request for Quotation (RFQ) | 26d | 2025-11-06 | 2025-12-05 | AS5230 SS+100d |  |  |  |  | 106d | 0d | 2Procurement | Building material supply | 1PRO | Gas Treatment Center (GTC) |
| AS9070 |  | PO issue | 78d | 2025-12-06 | 2026-03-10 | AS8100 |  |  |  |  | 106d | 22d | 2Procurement | Building material supply | 1PRO | Gas Treatment Center (GTC) |
|  | PO-O | **Post Ordering** |  | 2026-04-06 | 2026-11-13 |  |  |  |  |  |  |  |  |  |  |  |
| AS10600 |  | Manufacturing clearance | 15d | 2026-04-06 | 2026-04-22 | AS9070, AS9200 |  |  |  |  | 84d | 0d | 2Procurement | Building material supply | 2PO | Gas Treatment Center (GTC) |
| AS10750 |  | Manufacturing | 156d | 2026-04-23 | 2026-10-28 | AS10600 |  |  |  |  | 84d | 0d | 2Procurement | Building material supply | 2PO | Gas Treatment Center (GTC) |
| AS11070 |  | Delivery at site | 130d | 2026-06-09 | 2026-11-13 | AS10750 SS+39d |  |  |  |  | 84d | 12d | 2Procurement | Building material supply | 2PO | Gas Treatment Center (GTC) |
|  | ES | **Electrical Systems** |  | 2025-11-06 | 2026-12-16 |  |  |  |  |  |  |  |  |  |  |  |
|  | PR-O | **Pre Ordering** |  | 2025-11-06 | 2026-02-18 |  |  |  |  |  |  |  |  |  |  |  |
| AS8110 |  | Request for Quotation (RFQ) | 10d | 2025-11-06 | 2025-11-17 | AS5230 SS+100d |  |  |  |  | 83d | 0d | 2Procurement | Electrical Systems | 1PRO | Gas Treatment Center (GTC) |
| AS9080 |  | PO issue | 78d | 2025-11-18 | 2026-02-18 | AS8110 |  |  |  |  | 83d | 0d | 2Procurement | Electrical Systems | 1PRO | Gas Treatment Center (GTC) |
|  | PO-O | **Post Ordering** |  | 2026-02-19 | 2026-12-16 |  |  |  |  |  |  |  |  |  |  |  |
| AS10610 |  | Manufacturing clearance | 15d | 2026-02-19 | 2026-03-09 | AS9080 |  |  |  |  | 83d | 0d | 2Procurement | Electrical Systems | 2PO | Gas Treatment Center (GTC) |
| AS10760 |  | Manufacturing | 175d | 2026-03-10 | 2026-10-06 | AS10610 |  |  |  |  | 83d | 0d | 2Procurement | Electrical Systems | 2PO | Gas Treatment Center (GTC) |
| AS11200 |  | Delivery at site | 60d | 2026-10-07 | 2026-12-16 | AS10760 |  |  |  |  | 83d | 17d | 2Procurement | Electrical Systems | 2PO | Gas Treatment Center (GTC) |
|  | ACF | **Additional casting facilities** |  | 2025-07-04 | 2027-03-09 |  |  |  |  |  |  |  |  |  |  |  |
|  | EHF | **Electric holding furnace** |  | 2025-07-04 | 2027-03-09 |  |  |  |  |  |  |  |  |  |  |  |
|  | PR-O | **Pre Ordering** |  | 2025-07-04 | 2025-12-24 |  |  |  |  |  |  |  |  |  |  |  |
| AS2340 |  | Request for Quotation (RFQ) | 10d | 2025-07-04 A | 2025-07-16 A | AS1210 FS+69d | 100% |  | 2025-07-04 | 2025-07-15 |  |  | 2Procurement | Electric holding furnace | 1PRO | Additional casting facilities |
| AS3010 |  | PO issue | 98d | 2025-07-17 A | 2025-12-24 | AS2340 | 53% | 46d | 2025-08-13 | 2025-12-11 | 36d | 0d | 2Procurement | Electric holding furnace | 1PRO | Additional casting facilities |
|  | PO-O | **Post Ordering** |  | 2025-12-26 | 2027-03-09 |  |  |  |  |  |  |  |  |  |  |  |
| AS6200 |  | Manufacturing clearance | 26d | 2025-12-26 | 2026-01-24 | AS3010 |  |  |  |  | 36d | 0d | 2Procurement | Electric holding furnace | 2PO | Additional casting facilities |
| AS6620 |  | Manufacturing | 312d | 2026-01-27 | 2027-02-05 | AS6200 |  |  |  |  | 36d | 0d | 2Procurement | Electric holding furnace | 2PO | Additional casting facilities |
| AS7060 |  | Delivery at site | 26d | 2027-02-06 | 2027-03-09 | AS6620 |  |  |  |  | 36d | 6d | 2Procurement | Electric holding furnace | 2PO | Additional casting facilities |

| ID | WBS | Activity | Duration | Start | Finish | Predecessors | Complete | Remaining | Planned start | Planned finish | Total float | Free float | Text1 | Text2 | Text3 | Text4 |
| --- | --- | --- | --- | --- | --- | --- | --- | --- | --- | --- | --- | --- | --- | --- | --- | --- |
|  | ICL | **Ingot casting line** |  | 2025-07-08 | 2027-03-03 |  |  |  |  |  |  |  |  |  |  |  |
|  | PR-O | **Pre Ordering** |  | 2025-07-08 | 2025-12-18 |  |  |  |  |  |  |  |  |  |  |  |
| AS2350 |  | Request for Quotation (RFQ) | 10d | 2025-07-08 A | 2025-07-16 A | AS1220 FS+68d | 100% |  | 2025-07-08 | 2025-07-18 |  |  | 2Procurement | Ingot casting line | 1PRO | Additional casting facilities |
| AS3020 |  | PO issue | 98d | 2025-07-17 A | 2025-12-18 | AS2350 | 58% | 41d | 2025-08-13 | 2025-12-11 | 41d | 0d | 2Procurement | Ingot casting line | 1PRO | Additional casting facilities |
|  | PO-O | **Post Ordering** |  | 2025-12-19 | 2027-03-03 |  |  |  |  |  |  |  |  |  |  |  |
| AS6210 |  | Manufacturing clearance | 26d | 2025-12-19 | 2026-01-19 | AS3020 |  |  |  |  | 41d | 0d | 2Procurement | Ingot casting line | 2PO | Additional casting facilities |
| AS6630 |  | Manufacturing | 312d | 2026-01-20 | 2027-01-30 | AS6210 |  |  |  |  | 41d | 0d | 2Procurement | Ingot casting line | 2PO | Additional casting facilities |
| AS7070 |  | Delivery at site | 26d | 2027-02-01 | 2027-03-03 | AS6630 |  |  |  |  | 41d | 11d | 2Procurement | Ingot casting line | 2PO | Additional casting facilities |
|  | TCR | **Transfer Crane** |  | 2025-08-01 | 2027-02-19 |  |  |  |  |  |  |  |  |  |  |  |
|  | PR-O | **Pre Ordering** |  | 2025-08-01 | 2026-01-08 |  |  |  |  |  |  |  |  |  |  |  |
| AS2790 |  | Request for Quotation (RFQ) | 10d | 2025-08-01 A | 2025-10-04 A | AS2610 FS+30d | 100% |  | 2025-08-13 | 2025-08-25 |  |  | 2Procurement | Tranefer Crane | 1PRO | Additional casting facilities |
| AS3820 |  | PO issue | 78d | 2025-10-05 A | 2026-01-08 | AS2790 | 26% | 58d | 2025-10-20 | 2026-01-21 | 39d | 0d | 2Procurement | Tranefer Crane | 1PRO | Additional casting facilities |
|  | PO-O | **Post Ordering** |  | 2026-01-09 | 2027-02-19 |  |  |  |  |  |  |  |  |  |  |  |
| AS6640 |  | Manufacturing clearance | 26d | 2026-01-09 | 2026-02-09 | AS3820 |  |  |  |  | 39d | 0d | 2Procurement | Tranefer Crane | 2PO | Additional casting facilities |
| AS7080 |  | Manufacturing | 260d | 2026-02-10 | 2026-12-18 | AS6640 |  |  |  |  | 39d | 0d | 2Procurement | Tranefer Crane | 2PO | Additional casting facilities |
| AS7410 |  | Delivery at site | 52d | 2026-12-19 | 2027-02-19 | AS7080 |  |  |  |  | 39d | 9d | 2Procurement | Tranefer Crane | 2PO | Additional casting facilities |
|  | CW | **Cast house cooling water** |  | 2026-04-23 | 2026-11-28 |  |  |  |  |  |  |  |  |  |  |  |
|  | PR-O | **Pre Ordering** |  |  |  |  |  |  |  |  |  |  |  |  |  |  |
|  | PO-O | **Post Ordering** |  | 2026-04-23 | 2026-11-28 |  |  |  |  |  |  |  |  |  |  |  |
| AS6220 |  | Manufacturing clearance | 26d | 2026-04-23 | 2026-05-23 | AS3320, AS1891 |  |  |  |  | 173d | 0d | 2Procurement | Cast house cooling water | 2PO | Additional casting facilities |
| AS6650 |  | Manufacturing | 130d | 2026-05-25 | 2026-10-28 | AS6220 |  |  |  |  | 173d | 0d | 2Procurement | Cast house cooling water | 2PO | Additional casting facilities |
| AS7090 |  | Delivery at site | 26d | 2026-10-29 | 2026-11-28 | AS6650 |  |  |  |  | 173d | 0d | 2Procurement | Cast house cooling water | 2PO | Additional casting facilities |
|  | BM | **Building material supply** |  | 2026-01-12 | 2027-02-12 |  |  |  |  |  |  |  |  |  |  |  |
|  | PR-O | **Pre Ordering** |  | 2026-01-12 | 2026-04-04 |  |  |  |  |  |  |  |  |  |  |  |
| AS5690 |  | Request for Quotation (RFQ) | 10d | 2026-01-12 | 2026-01-22 | AS1890 FS+52d |  |  |  |  | 42d | 0d | 2Procurement | Building material supply | 1PRO | Additional casting facilities |
| AS5870 |  | PO issue | 60d | 2026-01-23 | 2026-04-04 | AS5690 |  |  |  |  | 42d | 0d | 2Procurement | Building material supply | 1PRO | Additional casting facilities |

| ID | WBS | Activity | Duration | Start | Finish | Predecessors | Total float | Free float | Text1 | Text2 | Text3 | Text4 |
| --- | --- | --- | --- | --- | --- | --- | --- | --- | --- | --- | --- | --- |
|  | PO-O | **Post Ordering** |  | 2026-04-06 | 2027-02-12 |  |  |  |  |  |  |  |
| AS9250 |  | Manufacturing clearance | 26d | 2026-04-06 | 2026-05-06 | AS5870, AS4890 | 42d | 0d | 2Procurement | Building material supply | 2PO | Additional casting facilities |
| AS9350 |  | Manufacturing | 208d | 2026-05-07 | 2027-01-12 | AS9250 | 42d | 0d | 2Procurement | Building material supply | 2PO | Additional casting facilities |
| AS9530 |  | Delivery at site | 182d | 2026-07-07 | 2027-02-12 | AS9350 SS+52d | 42d | 12d | 2Procurement | Building material supply | 2PO | Additional casting facilities |
|  | RL | **Rails** |  | 2026-01-12 | 2026-09-23 |  |  |  |  |  |  |  |
|  | PR-O | **Pre Ordering** |  | 2026-01-12 | 2026-04-04 |  |  |  |  |  |  |  |
| AS5700 |  | Request for Quotation (RFQ) | 10d | 2026-01-12 | 2026-01-22 | AS1890 FS+52d | 30d | 0d | 2Procurement | Rails | 1PRO | Additional casting facilities |
| AS5880 |  | PO issue | 60d | 2026-01-23 | 2026-04-04 | AS5700 | 30d | 0d | 2Procurement | Rails | 1PRO | Additional casting facilities |
|  | PO-O | **Post Ordering** |  | 2026-04-06 | 2026-09-23 |  |  |  |  |  |  |  |
| AS9260 |  | Manufacturing clearance | 12d | 2026-04-06 | 2026-04-18 | AS5880 | 30d | 0d | 2Procurement | Rails | 2PO | Additional casting facilities |
| AS9360 |  | Manufacturing | 104d | 2026-04-20 | 2026-08-21 | AS9260 | 30d | 0d | 2Procurement | Rails | 2PO | Additional casting facilities |
| AS9540 |  | Delivery at site | 26d | 2026-08-22 | 2026-09-23 | AS9360 | 30d | 0d | 2Procurement | Rails | 2PO | Additional casting facilities |
|  | RL1 | **LTCS Items** |  | 2025-12-22 | 2026-12-01 |  |  |  |  |  |  |  |
|  | PR-O | **Pre Ordering** |  |  |  |  |  |  |  |  |  |  |
|  | PO-O | **Post Ordering** |  | 2025-12-22 | 2026-12-01 |  |  |  |  |  |  |  |
| AS13401 |  | Manufacturing clearance | 52d | 2025-12-22 | 2026-02-21 | AS2011 | 197d | 0d | 2Procurement | LTCS Items | 2PO | Additional casting facilities |
| AS13411 |  | Manufacturing | 208d | 2026-02-23 | 2026-10-30 | AS13401 | 197d | 0d | 2Procurement | LTCS Items | 2PO | Additional casting facilities |
| AS13421 |  | Delivery at site | 26d | 2026-10-31 | 2026-12-01 | AS13411 | 197d | 0d | 2Procurement | LTCS Items | 2PO | Additional casting facilities |
|  | ES | **Electrical Systems** |  | 2025-11-01 | 2026-12-16 |  |  |  |  |  |  |  |
|  | PR-O | **Pre Ordering** |  | 2025-11-01 | 2026-02-06 |  |  |  |  |  |  |  |
| AS7900 |  | Request for Quotation (RFQ) | 2d | 2025-11-01 | 2025-11-03 | AS2010 FS+99d | 212d | 0d | 2Procurement | Electrical Systems | 1PRO | Additional casting facilities |
| AS8120 |  | PO issue | 79d | 2025-11-04 | 2026-02-06 | AS7900 | 212d | 0d | 2Procurement | Electrical Systems | 1PRO | Additional casting facilities |
|  | PO-O | **Post Ordering** |  | 2026-02-07 | 2026-12-16 |  |  |  |  |  |  |  |
| AS9980 |  | Manufacturing clearance | 26d | 2026-02-07 | 2026-03-10 | AS8120 | 212d | 0d | 2Procurement | Electrical Systems | 2PO | Additional casting facilities |
| AS10060 |  | Manufacturing | 156d | 2026-03-11 | 2026-09-12 | AS9980 | 212d | 0d | 2Procurement | Electrical Systems | 2PO | Additional casting facilities |
| AS10160 |  | Delivery at site | 78d | 2026-09-14 | 2026-12-16 | AS10060 | 212d | 0d | 2Procurement | Electrical Systems | 2PO | Additional casting facilities |

| ID | WBS | Activity | Duration | Start | Finish | Predecessors | Total float | Free float | Text1 | Text2 | Text3 | Text4 |
| --- | --- | --- | --- | --- | --- | --- | --- | --- | --- | --- | --- | --- |
|  | ES1 | **Coke Handling System** |  | 2026-02-28 | 2026-11-06 |  |  |  |  |  |  |  |
|  | PR-O | **Pre Ordering** |  |  |  |  |  |  |  |  |  |  |
|  | PO-O | **Post Ordering** |  | 2026-02-28 | 2026-11-06 |  |  |  |  |  |  |  |
| AS13451 |  | Manufacturing clearance | 26d | 2026-02-28 | 2026-03-31 | AS2021 | 192d | 0d | 2Procurement | Coke Handling System | 2PO | Coke Handling System |
| AS13461 |  | Manufacturing | 156d | 2026-04-01 | 2026-10-06 | AS13451 | 192d | 0d | 2Procurement | Coke Handling System | 2PO | Coke Handling System |
| AS13471 |  | Delivery at site | 130d | 2026-06-02 | 2026-11-06 | AS13461 SS+52d | 192d | 86d | 2Procurement | Coke Handling System | 2PO | Coke Handling System |
|  | GAP | **Green Anode Plant (GAP)** |  | 2025-11-25 | 2026-12-22 |  |  |  |  |  |  |  |
|  | CR | **Crusher** |  | 2025-11-25 | 2026-10-03 |  |  |  |  |  |  |  |
|  | PR-O | **Pre Ordering** |  | 2025-11-25 | 2026-01-24 |  |  |  |  |  |  |  |
| AS8130 |  | Request for Quotation (RFQ) | 12d | 2025-11-25 | 2025-12-08 | AS5250 SS+113d | 39d | 0d | 2Procurement | Green Anode Plant (GAP) | 1PRO | Green Anode Plant (GAP) |
| AS8420 |  | PO issue | 40d | 2025-12-09 | 2026-01-24 | AS8130 | 39d | 0d | 2Procurement | Green Anode Plant (GAP) | 1PRO | Green Anode Plant (GAP) |
|  | PO-O | **Post Ordering** |  | 2026-01-27 | 2026-10-03 |  |  |  |  |  |  |  |
| AS10170 |  | Manufacturing clearance | 26d | 2026-01-27 | 2026-02-25 | AS8420 | 39d | 0d | 2Procurement | Green Anode Plant (GAP) | 2PO | Green Anode Plant (GAP) |
| AS10300 |  | Manufacturing | 156d | 2026-02-26 | 2026-09-01 | AS10170 | 39d | 0d | 2Procurement | Green Anode Plant (GAP) | 2PO | Green Anode Plant (GAP) |
| AS10340 |  | Delivery at site | 26d | 2026-09-02 | 2026-10-03 | AS10300 | 39d | 29d | 2Procurement | Green Anode Plant (GAP) | 2PO | Green Anode Plant (GAP) |
|  | SC | **Screen** |  | 2025-12-26 | 2026-10-22 |  |  |  |  |  |  |  |
|  | PR-O | **Pre Ordering** |  | 2025-12-26 | 2026-02-13 |  |  |  |  |  |  |  |
| AS8140 |  | Request for Quotation (RFQ) | 12d | 2025-12-26 | 2026-01-08 | AS5250 SS+139d | 49d | 0d | 2Procurement | Screen | 1PRO | Green Anode Plant (GAP) |
| AS8430 |  | PO issue | 30d | 2026-01-09 | 2026-02-13 | AS8140 | 49d | 0d | 2Procurement | Screen | 1PRO | Green Anode Plant (GAP) |
|  | PO-O | **Post Ordering** |  | 2026-02-14 | 2026-10-22 |  |  |  |  |  |  |  |
| AS10180 |  | Manufacturing clearance | 26d | 2026-02-14 | 2026-03-17 | AS8430 | 49d | 0d | 2Procurement | Screen | 2PO | Green Anode Plant (GAP) |
| AS10310 |  | Manufacturing | 156d | 2026-03-18 | 2026-09-21 | AS10180 | 49d | 0d | 2Procurement | Screen | 2PO | Green Anode Plant (GAP) |
| AS10350 |  | Delivery at site | 52d | 2026-08-20 | 2026-10-22 | AS10310 SS+130d | 49d | 39d | 2Procurement | Screen | 2PO | Green Anode Plant (GAP) |
|  | BM | **Ball Mill - Grinding** |  | 2025-11-25 | 2026-09-23 |  |  |  |  |  |  |  |
|  | PR-O | **Pre Ordering** |  | 2025-11-25 | 2026-01-13 |  |  |  |  |  |  |  |
| AS8150 |  | Request for Quotation (RFQ) | 12d | 2025-11-25 | 2025-12-08 | AS5250 SS+113d | 47d | 0d | 2Procurement | Ball Mill - Grinding | 1PRO | Green Anode Plant (GAP) |
| AS8440 |  | PO issue | 30d | 2025-12-09 | 2026-01-13 | AS8150 | 47d | 0d | 2Procurement | Ball Mill - Grinding | 1PRO | Green Anode Plant (GAP) |

| ID | WBS | Activity | Duration | Start | Finish | Predecessors | Total float | Free float | Text1 | Text2 | Text3 | Text4 |
| --- | --- | --- | --- | --- | --- | --- | --- | --- | --- | --- | --- | --- |
|  | PO-O | **Post Ordering** |  | 2026-01-14 | 2026-09-23 |  |  |  |  |  |  |  |
| AS10190 |  | Manufacturing clearance | 12d | 2026-01-14 | 2026-01-28 | AS8440 | 47d | 0d | 2Procurement | Ball Mill - Grinding | 2PO | Green Anode Plant (GAP) |
| AS10370 |  | Manufacturing | 156d | 2026-01-29 | 2026-08-01 | AS10190 | 47d | 0d | 2Procurement | Ball Mill - Grinding | 2PO | Green Anode Plant (GAP) |
| AS11210 |  | Delivery at site | 26d | 2026-08-22 | 2026-09-23 | AS10370 FS+16d | 47d | 37d | 2Procurement | Ball Mill - Grinding | 2PO | Green Anode Plant (GAP) |
|  | PH | **Pre heater** |  | 2025-12-26 | 2026-09-05 |  |  |  |  |  |  |  |
|  | PR-O | **Pre Ordering** |  | 2025-12-26 | 2026-03-02 |  |  |  |  |  |  |  |
| AS8160 |  | Request for Quotation (RFQ) | 7d | 2025-12-26 | 2026-01-02 | AS5250 SS+139d | 35d | 0d | 2Procurement | Pre heater | 1PRO | Green Anode Plant (GAP) |
| AS8450 |  | PO issue | 49d | 2026-01-03 | 2026-03-02 | AS8160 | 35d | 0d | 2Procurement | Pre heater | 1PRO | Green Anode Plant (GAP) |
|  | PO-O | **Post Ordering** |  | 2026-03-03 | 2026-09-05 |  |  |  |  |  |  |  |
| AS10200 |  | Manufacturing clearance | 26d | 2026-03-03 | 2026-04-02 | AS8450 | 35d | 0d | 2Procurement | Pre heater | 2PO | Green Anode Plant (GAP) |
| AS10320 |  | Manufacturing | 130d | 2026-04-03 | 2026-09-05 | AS10200 | 35d | 0d | 2Procurement | Pre heater | 2PO | Green Anode Plant (GAP) |
| AS10360 |  | Delivery at site | 26d | 2026-08-05 | 2026-09-05 | AS10320 SS+104d | 35d | 25d | 2Procurement | Pre heater | 2PO | Green Anode Plant (GAP) |
|  | CM | **Continuous mixer** |  | 2025-11-25 | 2026-10-08 |  |  |  |  |  |  |  |
|  | PR-O | **Pre Ordering** |  | 2025-11-25 | 2026-01-24 |  |  |  |  |  |  |  |
| AS8170 |  | Request for Quotation (RFQ) | 12d | 2025-11-25 | 2025-12-08 | AS5250 SS+113d | 35d | 0d | 2Procurement | Continuous mixer | 1PRO | Green Anode Plant (GAP) |
| AS8460 |  | PO issue | 40d | 2025-12-09 | 2026-01-24 | AS8170 | 35d | 0d | 2Procurement | Continuous mixer | 1PRO | Green Anode Plant (GAP) |
|  | PO-O | **Post Ordering** |  | 2026-01-27 | 2026-10-08 |  |  |  |  |  |  |  |
| AS10210 |  | Manufacturing clearance | 26d | 2026-01-27 | 2026-02-25 | AS8460 | 35d | 0d | 2Procurement | Continuous mixer | 2PO | Green Anode Plant (GAP) |
| AS10380 |  | Manufacturing | 182d | 2026-02-26 | 2026-10-03 | AS10210 | 35d | 0d | 2Procurement | Continuous mixer | 2PO | Green Anode Plant (GAP) |
| AS11300 |  | Delivery at site | 26d | 2026-09-07 | 2026-10-08 | AS10380 SS+160d | 35d | 25d | 2Procurement | Continuous mixer | 2PO | Green Anode Plant (GAP) |
|  | CC | **Cooling conveyor** |  | 2025-12-26 | 2026-08-31 |  |  |  |  |  |  |  |
|  | PR-O | **Pre Ordering** |  | 2025-12-26 | 2026-01-09 |  |  |  |  |  |  |  |
| AS8180 |  | Request for Quotation (RFQ) | 3d | 2025-12-26 | 2025-12-29 | AS5250 SS+139d | 40d | 0d | 2Procurement | Cooling conveyor | 1PRO | Green Anode Plant (GAP) |
| AS8470 |  | PO issue | 10d | 2025-12-30 | 2026-01-09 | AS8180 | 40d | 0d | 2Procurement | Cooling conveyor | 1PRO | Green Anode Plant (GAP) |

| ID | WBS | Activity | Duration | Start | Finish | Predecessors | Total float | Free float | Text1 | Text2 | Text3 | Text4 |
| --- | --- | --- | --- | --- | --- | --- | --- | --- | --- | --- | --- | --- |
|  | PO-O | **Post Ordering** |  | 2026-01-10 | 2026-08-31 |  |  |  |  |  |  |  |
| AS10220 |  | Manufacturing clearance | 12d | 2026-01-10 | 2026-01-23 | AS8470 | 40d | 0d | 2Procurement | Cooling conveyor | 2PO | Green Anode Plant (GAP) |
| AS10390 |  | Manufacturing | 156d | 2026-01-24 | 2026-07-29 | AS10220 | 40d | 0d | 2Procurement | Cooling conveyor | 2PO | Green Anode Plant (GAP) |
| AS11140 |  | Delivery at site | 52d | 2026-06-29 | 2026-08-31 | AS10390 FS-26d | 40d | 30d | 2Procurement | Cooling conveyor | 2PO | Green Anode Plant (GAP) |
|  | HP | **Hydraulic Press** |  | 2025-11-25 | 2026-09-01 |  |  |  |  |  |  |  |
|  | PR-O | **Pre Ordering** |  | 2025-11-25 | 2026-01-24 |  |  |  |  |  |  |  |
| AS8190 |  | Request for Quotation (RFQ) | 12d | 2025-11-25 | 2025-12-08 | AS5250 SS+113d | 65d | 0d | 2Procurement | Hydraulic Press | 1PRO | Green Anode Plant (GAP) |
| AS8480 |  | PO issue | 40d | 2025-12-09 | 2026-01-24 | AS8190 | 65d | 0d | 2Procurement | Hydraulic Press | 1PRO | Green Anode Plant (GAP) |
|  | PO-O | **Post Ordering** |  | 2026-01-27 | 2026-09-01 |  |  |  |  |  |  |  |
| AS10230 |  | Manufacturing clearance | 26d | 2026-01-27 | 2026-02-25 | AS8480 | 65d | 0d | 2Procurement | Hydraulic Press | 2PO | Green Anode Plant (GAP) |
| AS10400 |  | Manufacturing | 130d | 2026-02-26 | 2026-07-30 | AS10230 | 65d | 0d | 2Procurement | Hydraulic Press | 2PO | Green Anode Plant (GAP) |
| AS11050 |  | Delivery at site | 26d | 2026-07-31 | 2026-09-01 | AS10400 | 65d | 55d | 2Procurement | Hydraulic Press | 2PO | Green Anode Plant (GAP) |
|  | VC | **Vibro compactor** |  | 2025-11-25 | 2026-10-03 |  |  |  |  |  |  |  |
|  | PR-O | **Pre Ordering** |  | 2025-11-25 | 2026-01-24 |  |  |  |  |  |  |  |
| AS8200 |  | Request for Quotation (RFQ) | 12d | 2025-11-25 | 2025-12-08 | AS5250 SS+113d | 39d | 0d | 2Procurement | Vibro compactor | 1PRO | Green Anode Plant (GAP) |
| AS8490 |  | PO issue | 40d | 2025-12-09 | 2026-01-24 | AS8200 | 39d | 0d | 2Procurement | Vibro compactor | 1PRO | Green Anode Plant (GAP) |
|  | PO-O | **Post Ordering** |  | 2026-01-27 | 2026-10-03 |  |  |  |  |  |  |  |
| AS10240 |  | Manufacturing clearance | 26d | 2026-01-27 | 2026-02-25 | AS8490 | 39d | 0d | 2Procurement | Vibro compactor | 2PO | Green Anode Plant (GAP) |
| AS10410 |  | Manufacturing | 156d | 2026-02-26 | 2026-09-01 | AS10240 | 39d | 0d | 2Procurement | Vibro compactor | 2PO | Green Anode Plant (GAP) |
| AS11220 |  | Delivery at site | 26d | 2026-09-02 | 2026-10-03 | AS10410 | 39d | 29d | 2Procurement | Vibro compactor | 2PO | Green Anode Plant (GAP) |
|  | BMS | **Building material supply** |  | 2025-11-25 | 2026-12-22 |  |  |  |  |  |  |  |
|  | PR-O | **Pre Ordering** |  | 2025-11-25 | 2026-02-09 |  |  |  |  |  |  |  |
| AS8210 |  | Request for Quotation (RFQ) | 12d | 2025-11-25 | 2025-12-08 | AS5250 SS+113d | 93d | 0d | 2Procurement | Building material supply | 1PRO | Green Anode Plant (GAP) |
| AS8500 |  | PO issue | 52d | 2025-12-09 | 2026-02-09 | AS8210 | 93d | 69d | 2Procurement | Building material supply | 1PRO | Green Anode Plant (GAP) |

| ID | WBS | Activity | Duration | Start | Finish | Predecessors | Complete | Remaining | Planned start | Planned finish | Total float | Free float | Text1 | Text2 | Text3 | Text4 |
| --- | --- | --- | --- | --- | --- | --- | --- | --- | --- | --- | --- | --- | --- | --- | --- | --- |
|  | PO-O | **Post Ordering** |  | 2026-05-04 | 2026-12-22 |  |  |  |  |  |  |  |  |  |  |  |
| AS10250 |  | Manufacturing clearance | 12d | 2026-05-04 | 2026-05-16 | AS8500, AS8560, AS7990 |  |  |  |  | 24d | 0d | 2Procurement | Building material supply | 2PO | Green Anode Plant (GAP) |
| AS10420 |  | Manufacturing | 156d | 2026-05-18 | 2026-11-21 | AS10250 |  |  |  |  | 24d | 0d | 2Procurement | Building material supply | 2PO | Green Anode Plant (GAP) |
| AS10990 |  | Delivery at site | 130d | 2026-07-18 | 2026-12-22 | AS10420 SS+52d |  |  |  |  | 24d | 14d | 2Procurement | Building material supply | 2PO | Green Anode Plant (GAP) |
|  | CT2 | **Cooling Tower-2 (addition in existing facilities)** |  | 2026-02-09 | 2026-11-17 |  |  |  |  |  |  |  |  |  |  |  |
|  | PR-O | **Pre Ordering** |  |  |  |  |  |  |  |  |  |  |  |  |  |  |
|  | PO-O | **Post Ordering** |  | 2026-02-09 | 2026-11-17 |  |  |  |  |  |  |  |  |  |  |  |
| AS6230 |  | Manufacturing clearance | 26d | 2026-02-09 | 2026-03-11 | AS1891 |  |  |  |  | 80d | 0d | 2Procurement | Cooling Tower-2 (addition in existing facilities) | 2PO | Green Anode Plant (GAP) |
| AS6660 |  | Manufacturing | 156d | 2026-03-12 | 2026-09-14 | AS6230 |  |  |  |  | 80d | 0d | 2Procurement | Cooling Tower-2 (addition in existing facilities) | 2PO | Green Anode Plant (GAP) |
| AS7100 |  | Delivery at site | 52d | 2026-09-15 | 2026-11-17 | AS6660 |  |  |  |  | 80d | 0d | 2Procurement | Cooling Tower-2 (addition in existing facilities) | 2PO | Green Anode Plant (GAP) |
|  | ES | **Electrical Systems** |  | 2025-11-25 | 2026-10-05 |  |  |  |  |  |  |  |  |  |  |  |
|  | PR-O | **Pre Ordering** |  | 2025-11-25 | 2026-02-09 |  |  |  |  |  |  |  |  |  |  |  |
| AS8220 |  | Request for Quotation (RFQ) | 12d | 2025-11-25 | 2025-12-08 | AS5250 SS+113d |  |  |  |  | 38d | 0d | 2Procurement | Electrical Systems | 1PRO | Green Anode Plant (GAP) |
| AS8510 |  | PO issue | 52d | 2025-12-09 | 2026-02-09 | AS8220 |  |  |  |  | 38d | 0d | 2Procurement | Electrical Systems | 1PRO | Green Anode Plant (GAP) |
|  | PO-O | **Post Ordering** |  | 2026-02-10 | 2026-10-05 |  |  |  |  |  |  |  |  |  |  |  |
| AS10260 |  | Manufacturing clearance | 15d | 2026-02-10 | 2026-02-26 | AS8510 |  |  |  |  | 38d | 0d | 2Procurement | Electrical Systems | 2PO | Green Anode Plant (GAP) |
| AS10430 |  | Manufacturing | 156d | 2026-02-27 | 2026-09-02 | AS10260 |  |  |  |  | 38d | 0d | 2Procurement | Electrical Systems | 2PO | Green Anode Plant (GAP) |
| AS11040 |  | Delivery at site | 78d | 2026-07-01 | 2026-10-05 | AS10430 FS-52d |  |  |  |  | 38d | 9d | 2Procurement | Electrical Systems | 2PO | Green Anode Plant (GAP) |
|  | ABF | **Anode Baking Furnace (ABF)** |  | 2025-05-02 | 2027-04-29 |  |  |  |  |  |  |  |  |  |  |  |
|  | FTA | **Furnace Tending Assembly (FTA)** |  | 2025-07-14 | 2027-04-29 |  |  |  |  |  |  |  |  |  |  |  |
|  | PR-O | **Pre Ordering** |  | 2025-07-14 | 2025-11-13 |  |  |  |  |  |  |  |  |  |  |  |
| AS2800 |  | Request for Quotation (RFQ) | 3d | 2025-07-14 A | 2025-07-17 A | AS2630 FS+45d | 100% |  | 2025-07-14 | 2025-07-16 |  |  | 2Procurement | Furnace Tending Assembly (FTA) | 1PRO | Anode Baking Furnace (ABF) |
| AS3830 |  | PO issue | 55d | 2025-07-18 A | 2025-11-13 | AS2800 | 80% | 11d | 2025-08-13 | 2025-10-20 | 34d | 0d | 2Procurement | Furnace Tending Assembly (FTA) | 1PRO | Anode Baking Furnace (ABF) |
|  | PO-O | **Post Ordering** |  | 2025-11-14 | 2027-04-29 |  |  |  |  |  |  |  |  |  |  |  |
| AS6670 |  | Manufacturing clearance | 26d | 2025-11-14 | 2025-12-13 | AS3830 |  |  |  |  | 34d | 0d | 2Procurement | Furnace Tending Assembly (FTA) | 2PO | Anode Baking Furnace (ABF) |
| AS7110 |  | Manufacturing | 390d | 2025-12-15 | 2027-03-30 | AS6670 |  |  |  |  | 34d | 0d | 2Procurement | Furnace Tending Assembly (FTA) | 2PO | Anode Baking Furnace (ABF) |
| AS7420 |  | Delivery at site - FTA | 26d | 2027-03-31 | 2027-04-29 | AS7110 |  |  |  |  | 34d | 0d | 2Procurement | Furnace Tending Assembly (FTA) | 2PO | Anode Baking Furnace (ABF) |

| ID | WBS | Activity | Duration | Start | Finish | Predecessors | Complete | Remaining | Planned start | Planned finish | Total float | Free float | Text1 | Text2 | Text3 | Text4 |
| --- | --- | --- | --- | --- | --- | --- | --- | --- | --- | --- | --- | --- | --- | --- | --- | --- |
|  | RL | **Refractory Lining** |  | 2025-09-06 | 2026-12-11 |  |  |  |  |  |  |  |  |  |  |  |
|  | PR-O | **Pre Ordering** |  | 2025-09-06 | 2025-11-29 |  |  |  |  |  |  |  |  |  |  |  |
| AS3170 |  | Request for Quotation (RFQ) | 3d | 2025-09-06 A | 2025-09-06 A | AS1640 FS+49d | 100% |  | 2025-11-03 | 2025-11-06 |  |  | 2Procurement | Refractory Lining | 1PRO | Anode Baking Furnace (ABF) |
| AS4440 |  | PO issue | 79d | 2025-09-08 A | 2025-11-29 | AS3170 | 68% | 25d | 2025-11-07 | 2026-02-09 | 153d | 0d | 2Procurement | Refractory Lining | 1PRO | Anode Baking Furnace (ABF) |
|  | PO-O | **Post Ordering** |  | 2025-12-01 | 2026-12-11 |  |  |  |  |  |  |  |  |  |  |  |
| AS7330 |  | Manufacturing clearance | 1d | 2025-12-01 | 2025-12-01 | AS4440, AS4610 |  |  |  |  | 153d | 0d | 2Procurement | Refractory Lining | 2PO | Anode Baking Furnace (ABF) |
| AS7480 |  | Manufacturing | 156d | 2025-12-02 | 2026-06-05 | AS7330 |  |  |  |  | 153d | 0d | 2Procurement | Refractory Lining | 2PO | Anode Baking Furnace (ABF) |
| AS7560 |  | Delivery at site - Refractory | 156d | 2026-06-06 | 2026-12-11 | AS7480 |  |  |  |  | 153d | 133d | 2Procurement | Refractory Lining | 2PO | Anode Baking Furnace (ABF) |
|  | RL1 | **Refractory Lining installation** |  | 2025-11-07 | 2026-04-17 |  |  |  |  |  |  |  |  |  |  |  |
|  | PR-O | **Pre Ordering** |  | 2025-11-07 | 2026-02-14 |  |  |  |  |  |  |  |  |  |  |  |
| AS13721 |  | Request for Quotation (RFQ) | 3d | 2025-11-07 | 2025-11-10 | AS1640 FS+52d |  |  |  |  | 220d | 0d | 2Procurement | Refractory Lining | 1PRO | Anode Baking Furnace (ABF) |
| AS13731 |  | PO issue | 81d | 2025-11-11 | 2026-02-14 | AS13721 |  |  |  |  | 220d | 0d | 2Procurement | Refractory Lining | 1PRO | Anode Baking Furnace (ABF) |
|  | PO-O | **Post Ordering** |  | 2026-02-16 | 2026-04-17 |  |  |  |  |  |  |  |  |  |  |  |
| AS13741 |  | Mobilization at site | 52d | 2026-02-16 | 2026-04-17 | AS13731 |  |  |  |  | 220d | 200d | 2Procurement | Refractory Lining | 2PO | Anode Baking Furnace (ABF) |
|  | FCS | **Firing Control System** |  | 2025-05-02 | 2027-02-02 |  |  |  |  |  |  |  |  |  |  |  |
|  | PR-O | **Pre Ordering** |  | 2025-05-02 | 2025-12-20 |  |  |  |  |  |  |  |  |  |  |  |
| AS2380 |  | Request for Quotation (RFQ) | 10d | 2025-05-02 A | 2025-05-21 A | AS2631 | 100% |  | 2025-05-02 | 2025-05-13 |  |  | 2Procurement | Firing Control System | 1PRO | Anode Baking Furnace (ABF) |
| AS3050 |  | PO issue | 98d | 2025-05-22 A | 2025-12-20 | AS2380 | 56% | 43d | 2025-05-14 | 2025-09-08 | 30d | 0d | 2Procurement | Firing Control System | 1PRO | Anode Baking Furnace (ABF) |
|  | PO-O | **Post Ordering** |  | 2025-12-22 | 2027-02-02 |  |  |  |  |  |  |  |  |  |  |  |
| AS6240 |  | Manufacturing clearance | 26d | 2025-12-22 | 2026-01-21 | AS3050 |  |  |  |  | 30d | 0d | 2Procurement | Firing Control System | 2PO | Anode Baking Furnace (ABF) |
| AS6680 |  | Manufacturing | 286d | 2026-01-22 | 2027-01-01 | AS6240 |  |  |  |  | 30d | 0d | 2Procurement | Firing Control System | 2PO | Anode Baking Furnace (ABF) |
| AS7120 |  | Delivery at site - FCS | 26d | 2027-01-02 | 2027-02-02 | AS6680 |  |  |  |  | 30d | 0d | 2Procurement | Firing Control System | 2PO | Anode Baking Furnace (ABF) |
|  | CT3 | **Cooling Tower-3 (addition in existing facilities)** |  | 2026-02-09 | 2027-03-27 |  |  |  |  |  |  |  |  |  |  |  |
|  | PR-O | **Pre Ordering** |  | 2026-02-09 | 2026-06-16 |  |  |  |  |  |  |  |  |  |  |  |
| AS2390 |  | Request for Quotation (RFQ) | 10d | 2026-02-09 | 2026-02-19 | AS1340, AS1891 |  |  |  |  | 52d | 0d | 2Procurement | Cooling Tower-3 (addition in existing facilities) | 1PRO | Anode Baking Furnace (ABF) |
| AS3060 |  | PO issue | 98d | 2026-02-20 | 2026-06-16 | AS2390 |  |  |  |  | 52d | 0d | 2Procurement | Cooling Tower-3 (addition in existing facilities) | 1PRO | Anode Baking Furnace (ABF) |

| ID | WBS | Activity | Duration | Start | Finish | Predecessors | Complete | Remaining | Planned start | Planned finish | Total float | Free float | Text1 | Text2 | Text3 | Text4 |
| --- | --- | --- | --- | --- | --- | --- | --- | --- | --- | --- | --- | --- | --- | --- | --- | --- |
|  | PO-O | **Post Ordering** |  | 2026-06-17 | 2027-03-27 |  |  |  |  |  |  |  |  |  |  |  |
| AS6250 |  | Manufacturing clearance | 26d | 2026-06-17 | 2026-07-17 | AS1891, AS3060 |  |  |  |  | 52d | 0d | 2Procurement | Cooling Tower-3 (addition in existing facilities) | 2PO | Anode Baking Furnace (ABF) |
| AS6690 |  | Manufacturing | 156d | 2026-07-18 | 2027-01-22 | AS6250 |  |  |  |  | 52d | 0d | 2Procurement | Cooling Tower-3 (addition in existing facilities) | 2PO | Anode Baking Furnace (ABF) |
| AS7130 |  | Delivery at site | 52d | 2027-01-23 | 2027-03-27 | AS6690 |  |  |  |  | 52d | 0d | 2Procurement | Cooling Tower-3 (addition in existing facilities) | 2PO | Anode Baking Furnace (ABF) |
|  | BM | **Building material supply** |  | 2026-01-10 | 2026-09-16 |  |  |  |  |  |  |  |  |  |  |  |
|  | PR-O | **Pre Ordering** |  |  |  |  |  |  |  |  |  |  |  |  |  |  |
|  | PO-O | **Post Ordering** |  | 2026-01-10 | 2026-09-16 |  |  |  |  |  |  |  |  |  |  |  |
| AS9370 |  | Manufacturing | 156d | 2026-01-10 | 2026-07-14 | AS5000 SS+25d |  |  |  |  | 20d | 0d | 2Procurement | Building material supply | 2PO | Anode Baking Furnace (ABF) |
| AS9550 |  | Delivery at site - Fab. str. | 156d | 2026-03-14 | 2026-09-16 | AS9370 SS+52d |  |  |  |  | 20d | 0d | 2Procurement | Building material supply | 2PO | Anode Baking Furnace (ABF) |
|  | RLS | **Rails** |  | 2025-08-29 | 2026-05-07 |  |  |  |  |  |  |  |  |  |  |  |
|  | PR-O | **Pre Ordering** |  | 2025-08-29 | 2026-02-03 |  |  |  |  |  |  |  |  |  |  |  |
| AS5720 |  | Request for Quotation (RFQ) | 2d | 2025-08-29 A | 2025-09-15 A | AS2720 | 100% |  | 2025-09-01 | 2025-09-02 |  |  | 2Procurement | Rails | 1PRO | Anode Baking Furnace (ABF) |
| AS5900 |  | PO issue | 77d | 2025-09-16 A | 2026-02-03 | AS5720 |  | 79d | 2025-09-16 | 2025-12-18 | 26d | 0d | 2Procurement | Rails | 1PRO | Anode Baking Furnace (ABF) |
|  | PO-O | **Post Ordering** |  | 2026-02-04 | 2026-05-07 |  |  |  |  |  |  |  |  |  |  |  |
| AS9280 |  | Manufacturing clearance | 1d | 2026-02-04 | 2026-02-04 | AS5900 |  |  |  |  | 26d | 0d | 2Procurement | Rails | 2PO | Anode Baking Furnace (ABF) |
| AS9380 |  | Manufacturing | 51d | 2026-02-05 | 2026-04-06 | AS9280 |  |  |  |  | 26d | 0d | 2Procurement | Rails | 2PO | Anode Baking Furnace (ABF) |
| AS9560 |  | Delivery at site-Rail | 26d | 2026-04-07 | 2026-05-07 | AS9380 |  |  |  |  | 26d | 6d | 2Procurement | Rails | 2PO | Anode Baking Furnace (ABF) |
|  | ES | **Electrical Systems** |  |  |  |  |  |  |  |  |  |  |  |  |  |  |
|  | PR-O | **Pre Ordering** |  |  |  |  |  |  |  |  |  |  |  |  |  |  |
|  | PO-O | **Post Ordering** |  |  |  |  |  |  |  |  |  |  |  |  |  |  |
|  | FTC | **Fume Treatment Centre (FTC)** |  | 2026-02-03 | 2027-04-16 |  |  |  |  |  |  |  |  |  |  |  |
|  | ITEMS | **FTC items** |  | 2026-02-03 | 2027-04-16 |  |  |  |  |  |  |  |  |  |  |  |
|  | PR-O | **Pre Ordering** |  |  |  |  |  |  |  |  |  |  |  |  |  |  |
|  | PO-O | **Post Ordering** |  | 2026-02-03 | 2027-04-16 |  |  |  |  |  |  |  |  |  |  |  |
| AS9110 |  | Manufacturing clearance | 26d | 2026-02-03 | 2026-03-05 | AS5590 SS+78d |  |  |  |  | 13d | 0d | 2Procurement | FTC items | 2PO | Fume Treatment Centre (FTC) |
| AS9160 |  | Manufacturing | 286d | 2026-03-06 | 2027-02-12 | AS9110 |  |  |  |  | 13d | 0d | 2Procurement | FTC items | 2PO | Fume Treatment Centre (FTC) |
| AS9290 |  | Delivery at site | 156d | 2026-10-12 | 2027-04-16 | AS9160 SS+182d |  |  |  |  | 13d | 0d | 2Procurement | FTC items | 2PO | Fume Treatment Centre (FTC) |

| ID | WBS | Activity | Duration | Start | Finish | Predecessors | Total float | Free float | Text1 | Text2 | Text3 | Text4 |
| --- | --- | --- | --- | --- | --- | --- | --- | --- | --- | --- | --- | --- |
|  | ES | **Electrical Systems** |  | 2026-05-07 | 2027-02-12 |  |  |  |  |  |  |  |
|  | PR-O | **Pre Ordering** |  |  |  |  |  |  |  |  |  |  |
|  | PO-O | **Post Ordering** |  | 2026-05-07 | 2027-02-12 |  |  |  |  |  |  |  |
| AS9120 |  | Manufacturing clearance | 26d | 2026-05-07 | 2026-06-05 | AS5590 | 87d | 0d | 2Procurement | Electrical Systems | 2PO | Fume Treatment Centre (FTC) |
| AS9170 |  | Manufacturing | 156d | 2026-06-06 | 2026-12-11 | AS9120 | 87d | 0d | 2Procurement | Electrical Systems | 2PO | Fume Treatment Centre (FTC) |
| AS9300 |  | Delivery at site | 52d | 2026-12-12 | 2027-02-12 | AS9170 | 87d | 37d | 2Procurement | Electrical Systems | 2PO | Fume Treatment Centre (FTC) |
|  | 1 | **Anode Handling system** |  | 2025-12-22 | 2027-01-01 |  |  |  |  |  |  |  |
|  | 1 | **Pre Ordering** |  |  |  |  |  |  |  |  |  |  |
|  | 2 | **Post Ordering** |  | 2025-12-22 | 2027-01-01 |  |  |  |  |  |  |  |
| A2310 |  | Manufacturing clearance | 26d | 2025-12-22 | 2026-01-21 | AS2051 | 148d | 0d | 2Procurement | Anode Handling system | 2PO | Anode Handling system |
| A2320 |  | Manufacturing | 260d | 2026-01-22 | 2026-12-01 | A2310 | 148d | 0d | 2Procurement | Anode Handling system | 2PO | Anode Handling system |
| A2330 |  | Delivery at site | 26d | 2026-12-02 | 2027-01-01 | A2320 | 148d | 31d | 2Procurement | Anode Handling system | 2PO | Anode Handling system |
|  | ARS | **Anode Rodding Shop** |  | 2025-08-13 | 2026-11-04 |  |  |  |  |  |  |  |
|  | BC | **Bath Cleaning Unit** |  | 2025-12-27 | 2026-11-04 |  |  |  |  |  |  |  |
|  | PR-O | **Pre Ordering** |  |  |  |  |  |  |  |  |  |  |
|  | PO-O | **Post Ordering** |  | 2025-12-27 | 2026-11-04 |  |  |  |  |  |  |  |
| AS6270 |  | Manufacturing clearance | 26d | 2025-12-27 | 2026-01-27 | AS1911 | 68d | 0d | 2Procurement | Bath Cleaning Unit | 2PO | Anode Rodding Shop |
| AS6710 |  | Manufacturing | 208d | 2026-01-28 | 2026-10-05 | AS6270 | 68d | 0d | 2Procurement | Bath Cleaning Unit | 2PO | Anode Rodding Shop |
| AS7150 |  | Delivery at site | 26d | 2026-10-06 | 2026-11-04 | AS6710 | 68d | 26d | 2Procurement | Bath Cleaning Unit | 2PO | Anode Rodding Shop |
|  | TSM | **Thimble stripping machine** |  | 2025-12-27 | 2026-11-04 |  |  |  |  |  |  |  |
|  | PR-O | **Pre Ordering** |  |  |  |  |  |  |  |  |  |  |
|  | PO-O | **Post Ordering** |  | 2025-12-27 | 2026-11-04 |  |  |  |  |  |  |  |
| AS6260 |  | Manufacturing clearance | 26d | 2025-12-27 | 2026-01-27 | AS1911 | 68d | 0d | 2Procurement | Thimble stripping machine | 2PO | Anode Rodding Shop |
| AS6700 |  | Manufacturing | 208d | 2026-01-28 | 2026-10-05 | AS6260 | 68d | 0d | 2Procurement | Thimble stripping machine | 2PO | Anode Rodding Shop |
| AS7140 |  | Delivery at site | 26d | 2026-10-06 | 2026-11-04 | AS6700 | 68d | 26d | 2Procurement | Thimble stripping machine | 2PO | Anode Rodding Shop |

| ID | WBS | Activity | Duration | Start | Finish | Predecessors | Complete | Remaining | Planned start | Planned finish | Total float | Free float | Text1 | Text2 | Text3 | Text4 | Notes |
| --- | --- | --- | --- | --- | --- | --- | --- | --- | --- | --- | --- | --- | --- | --- | --- | --- | --- |
|  | CM | **Anode Casting Unit** |  | 2025-12-27 | 2026-11-04 |  |  |  |  |  |  |  |  |  |  |  |  |
|  | PR-O | **Pre Ordering** |  |  |  |  |  |  |  |  |  |  |  |  |  |  |  |
|  | PO-O | **Post Ordering** |  | 2025-12-27 | 2026-11-04 |  |  |  |  |  |  |  |  |  |  |  |  |
| AS6290 |  | Manufacturing clearance | 26d | 2025-12-27 | 2026-01-27 | AS1911 |  |  |  |  | 68d | 0d | 2Procurement | Anode Casting Unit | 2PO | Anode Rodding Shop |  |
| AS6730 |  | Manufacturing | 208d | 2026-01-28 | 2026-10-05 | AS6290 |  |  |  |  | 68d | 0d | 2Procurement | Anode Casting Unit | 2PO | Anode Rodding Shop |  |
| AS7170 |  | Delivery at site | 26d | 2026-10-06 | 2026-11-04 | AS6730 |  |  |  |  | 68d | 26d | 2Procurement | Anode Casting Unit | 2PO | Anode Rodding Shop |  |
|  | IF | **Induction Furnace** |  | 2025-08-13 | 2026-11-03 |  |  |  |  |  |  |  |  |  |  |  |  |
|  | PR-O | **Pre Ordering** |  | 2025-08-13 | 2025-12-24 |  |  |  |  |  |  |  |  |  |  |  |  |
| A2370 |  | Request for Quotation (RFQ) | 10d | 2025-08-13 A | 2025-08-13 A | AS1839 | 100% |  | 2025-09-15 | 2025-09-26 |  |  |  |  |  |  | Part of ARS MR, floated separately. |
| A2380 |  | PO issue | 95d | 2025-08-14 A | 2025-12-24 | A2370 | 52% | 46d | 2025-09-27 | 2026-01-20 | 69d | 0d |  |  |  |  |  |
|  | PO-O | **Post Ordering** |  | 2025-12-26 | 2026-11-03 |  |  |  |  |  |  |  |  |  |  |  |  |
| AS6280 |  | Manufacturing clearance | 26d | 2025-12-26 | 2026-01-24 | A2380 |  |  |  |  | 69d | 0d | 2Procurement | Induction Furnace | 2PO | Anode Rodding Shop |  |
| AS6720 |  | Manufacturing | 208d | 2026-01-27 | 2026-10-03 | AS6280 |  |  |  |  | 69d | 0d | 2Procurement | Induction Furnace | 2PO | Anode Rodding Shop |  |
| AS7160 |  | Delivery at site | 26d | 2026-10-05 | 2026-11-03 | AS6720 |  |  |  |  | 69d | 27d | 2Procurement | Induction Furnace | 2PO | Anode Rodding Shop |  |
|  | OHCT | **Over head P&F conveyor & trolleys** |  | 2025-12-27 | 2026-11-04 |  |  |  |  |  |  |  |  |  |  |  |  |
|  | PR-O | **Pre Ordering** |  |  |  |  |  |  |  |  |  |  |  |  |  |  |  |
|  | PO-O | **Post Ordering** |  | 2025-12-27 | 2026-11-04 |  |  |  |  |  |  |  |  |  |  |  |  |
| AS6310 |  | Manufacturing clearance | 26d | 2025-12-27 | 2026-01-27 | AS1911 |  |  |  |  | 68d | 0d | 2Procurement | Over head P&F conveyor & trolleys | 2PO | Anode Rodding Shop |  |
| AS6750 |  | Manufacturing | 208d | 2026-01-28 | 2026-10-05 | AS6310 |  |  |  |  | 68d | 0d | 2Procurement | Over head P&F conveyor & trolleys | 2PO | Anode Rodding Shop |  |
| AS7190 |  | Delivery at site | 26d | 2026-10-06 | 2026-11-04 | AS6750 |  |  |  |  | 68d | 0d | 2Procurement | Over head P&F conveyor & trolleys | 2PO | Anode Rodding Shop |  |
|  | BM | **Building material supply - Anode Storage Shed** |  | 2026-01-28 | 2026-06-16 |  |  |  |  |  |  |  |  |  |  |  |  |
|  | PR-O | **Pre Ordering** |  |  |  |  |  |  |  |  |  |  |  |  |  |  |  |
|  | PO-O | **Post Ordering** |  | 2026-01-28 | 2026-06-16 |  |  |  |  |  |  |  |  |  |  |  |  |
| AS6320 |  | Manufacturing clearance | 1d | 2026-01-28 | 2026-01-28 | AS1971, AS5040 |  |  |  |  | 42d | 0d | 2Procurement | Building material supply - Anode Storage Shed | 2PO | Anode Rodding Shop |  |
| AS6760 |  | Manufacturing | 104d | 2026-01-29 | 2026-06-01 | AS6320 |  |  |  |  | 42d | 0d | 2Procurement | Building material supply - Anode Storage Shed | 2PO | Anode Rodding Shop |  |
| AS7200 |  | Delivery at site | 78d | 2026-03-17 | 2026-06-16 | AS6760 SS+39d |  |  |  |  | 42d | 0d | 2Procurement | Building material supply - Anode Storage Shed | 2PO | Anode Rodding Shop |  |

| ID | WBS | Activity | Duration | Start | Finish | Predecessors | Remaining | Planned start | Planned finish | Total float | Free float | Text1 | Text2 | Text3 | Text4 |
| --- | --- | --- | --- | --- | --- | --- | --- | --- | --- | --- | --- | --- | --- | --- | --- |
|  | ES | **Electrical Systems** |  | 2026-01-21 | 2026-10-29 |  |  |  |  |  |  |  |  |  |  |
|  | PR-O | **Pre Ordering** |  |  |  |  |  |  |  |  |  |  |  |  |  |
|  | PO-O | **Post Ordering** |  | 2026-01-21 | 2026-10-29 |  |  |  |  |  |  |  |  |  |  |
| AS6330 |  | Manufacturing clearance | 26d | 2026-01-21 | 2026-02-20 | AS1971 FS+60d |  |  |  | 73d | 0d | 2Procurement | Electrical Systems | 2PO | Anode Rodding Shop |
| AS6770 |  | Manufacturing | 156d | 2026-02-21 | 2026-08-26 | AS6330 |  |  |  | 73d | 0d | 2Procurement | Electrical Systems | 2PO | Anode Rodding Shop |
| AS7210 |  | Delivery at site | 52d | 2026-08-27 | 2026-10-29 | AS6770 |  |  |  | 73d | 5d | 2Procurement | Electrical Systems | 2PO | Anode Rodding Shop |
|  | UTI | **Utilities & Offsite activities** |  | 2025-07-12 | 2027-02-22 |  |  |  |  |  |  |  |  |  |  |
|  | PUMP | **Pumps for Sub soil drainage system** |  | 2025-11-18 | 2026-09-08 |  |  |  |  |  |  |  |  |  |  |
|  | PR-O | **Pre Ordering** |  | 2025-11-18 | 2026-03-05 |  |  |  |  |  |  |  |  |  |  |
| AS2480 |  | Request for Quotation (RFQ) | 11d | 2025-11-18 | 2025-11-29 | AS1130 FS+218d |  |  |  | 274d | 0d | 2Procurement | Pumps for Sub soil drainage system | 1PRO | Utilities & Offsite activities |
| AS3150 |  | PO issue | 79d | 2025-12-01 | 2026-03-05 | AS2480 |  |  |  | 274d | 0d | 2Procurement | Pumps for Sub soil drainage system | 1PRO | Utilities & Offsite activities |
|  | PO-O | **Post Ordering** |  | 2026-03-06 | 2026-09-08 |  |  |  |  |  |  |  |  |  |  |
| AS6340 |  | Manufacturing clearance | 26d | 2026-03-06 | 2026-04-04 | AS3150 |  |  |  | 274d | 0d | 2Procurement | Pumps for Sub soil drainage system | 2PO | Utilities & Offsite activities |
| AS6780 |  | Manufacturing | 104d | 2026-04-06 | 2026-08-06 | AS6340 |  |  |  | 274d | 0d | 2Procurement | Pumps for Sub soil drainage system | 2PO | Utilities & Offsite activities |
| AS7220 |  | Delivery at site | 26d | 2026-08-07 | 2026-09-08 | AS6780 |  |  |  | 274d | 15d | 2Procurement | Pumps for Sub soil drainage system | 2PO | Utilities & Offsite activities |
|  | FP | **Fire pump** |  | 2025-07-12 | 2026-08-21 |  |  |  |  |  |  |  |  |  |  |
|  | PR-O | **Pre Ordering** |  | 2025-07-12 | 2026-02-16 |  |  |  |  |  |  |  |  |  |  |
| AS2490 |  | Request for Quotation (RFQ) | 10d | 2025-07-12 A | 2025-11-12 | AS1820 FS+150d | 10d | 2025-10-25 | 2025-11-06 | 314d | 0d | 2Procurement | Fire pump | 1PRO | Utilities & Offsite activities |
| AS3160 |  | PO issue | 80d | 2025-11-13 | 2026-02-16 | AS2490 |  |  |  | 314d | 0d | 2Procurement | Fire pump | 1PRO | Utilities & Offsite activities |
|  | PO-O | **Post Ordering** |  | 2026-02-17 | 2026-08-21 |  |  |  |  |  |  |  |  |  |  |
| AS6350 |  | Manufacturing clearance | 26d | 2026-02-17 | 2026-03-19 | AS3160 |  |  |  | 314d | 0d | 2Procurement | Fire pump | 2PO | Utilities & Offsite activities |
| AS6790 |  | Manufacturing | 104d | 2026-03-20 | 2026-07-21 | AS6350 |  |  |  | 314d | 0d | 2Procurement | Fire pump | 2PO | Utilities & Offsite activities |
| AS7230 |  | Delivery at site | 26d | 2026-07-22 | 2026-08-21 | AS6790 |  |  |  | 314d | 83d | 2Procurement | Fire pump | 2PO | Utilities & Offsite activities |
|  | PIPES | **Pipes** |  | 2025-12-09 | 2026-08-18 |  |  |  |  |  |  |  |  |  |  |
|  | PR-O | **Pre Ordering** |  | 2025-12-09 | 2026-02-11 |  |  |  |  |  |  |  |  |  |  |
| AS2850 |  | Request for Quotation (RFQ) | 4d | 2025-12-09 | 2025-12-12 | AS1820 FS+237d |  |  |  | 66d | 0d | 2Procurement | Pipes | 1PRO | Utilities & Offsite activities |
| AS3860 |  | PO issue | 50d | 2025-12-13 | 2026-02-11 | AS2850 |  |  |  | 66d | 0d | 2Procurement | Pipes | 1PRO | Utilities & Offsite activities |

| ID | WBS | Activity | Duration | Start | Finish | Predecessors | Total float | Free float | Text1 | Text2 | Text3 | Text4 |
| --- | --- | --- | --- | --- | --- | --- | --- | --- | --- | --- | --- | --- |
|  | PO-O | **Post Ordering** |  | 2026-02-12 | 2026-08-18 |  |  |  |  |  |  |  |
| AS6880 |  | Manufacturing clearance | 1d | 2026-02-12 | 2026-02-12 | AS3860 | 66d | 0d | 2Procurement | Pipes | 2PO | Utilities & Offsite activities |
| AS7260 |  | Manufacturing | 156d | 2026-02-13 | 2026-08-18 | AS6880 | 66d | 0d | 2Procurement | Pipes | 2PO | Utilities & Offsite activities |
| AS7450 |  | Delivery at site | 52d | 2026-06-17 | 2026-08-18 | AS7260 SS+104d | 66d | 56d | 2Procurement | Pipes | 2PO | Utilities & Offsite activities |
|  | PFT | **Pipe fittings** |  | 2025-12-09 | 2026-08-18 |  |  |  |  |  |  |  |
|  | PR-O | **Pre Ordering** |  | 2025-12-09 | 2026-02-11 |  |  |  |  |  |  |  |
| AS2860 |  | Request for Quotation (RFQ) | 4d | 2025-12-09 | 2025-12-12 | AS2850 SS | 66d | 0d | 2Procurement | Pipe fittings | 1PRO | Utilities & Offsite activities |
| AS3870 |  | PO issue | 50d | 2025-12-13 | 2026-02-11 | AS2860 | 66d | 0d | 2Procurement | Pipe fittings | 1PRO | Utilities & Offsite activities |
|  | PO-O | **Post Ordering** |  | 2026-02-12 | 2026-08-18 |  |  |  |  |  |  |  |
| AS6890 |  | Manufacturing clearance | 1d | 2026-02-12 | 2026-02-12 | AS3870 | 66d | 0d | 2Procurement | Pipe fittings | 2PO | Utilities & Offsite activities |
| AS7270 |  | Manufacturing | 156d | 2026-02-13 | 2026-08-18 | AS6890 | 66d | 0d | 2Procurement | Pipe fittings | 2PO | Utilities & Offsite activities |
| AS7460 |  | Delivery at site | 52d | 2026-06-17 | 2026-08-18 | AS7270 SS+104d | 66d | 56d | 2Procurement | Pipe fittings | 2PO | Utilities & Offsite activities |
|  | VAL | **Valves** |  | 2025-12-09 | 2026-08-18 |  |  |  |  |  |  |  |
|  | PR-O | **Pre Ordering** |  | 2025-12-09 | 2026-02-11 |  |  |  |  |  |  |  |
| AS2870 |  | Request for Quotation (RFQ) | 4d | 2025-12-09 | 2025-12-12 | AS2860 SS | 66d | 0d | 2Procurement | Valves | 1PRO | Utilities & Offsite activities |
| AS3880 |  | PO issue | 50d | 2025-12-13 | 2026-02-11 | AS2870 | 66d | 0d | 2Procurement | Valves | 1PRO | Utilities & Offsite activities |
|  | PO-O | **Post Ordering** |  | 2026-02-12 | 2026-08-18 |  |  |  |  |  |  |  |
| AS6900 |  | Manufacturing clearance | 1d | 2026-02-12 | 2026-02-12 | AS3880 | 66d | 0d | 2Procurement | Valves | 2PO | Utilities & Offsite activities |
| AS7280 |  | Manufacturing | 156d | 2026-02-13 | 2026-08-18 | AS6900 | 66d | 0d | 2Procurement | Valves | 2PO | Utilities & Offsite activities |
| AS7470 |  | Delivery at site | 26d | 2026-06-17 | 2026-07-17 | AS7280 SS+104d | 66d | 56d | 2Procurement | Valves | 2PO | Utilities & Offsite activities |
|  | EMS | **Environment monitoring system for Pot room, GTC, FTC** |  | 2025-10-31 | 2027-01-16 |  |  |  |  |  |  |  |
|  | PR-O | **Pre Ordering** |  | 2025-10-31 | 2026-03-10 |  |  |  |  |  |  |  |
| AS2820 |  | Request for Quotation (RFQ) | 10d | 2025-10-31 | 2025-11-12 | AS2650 FS+130d | 184d | 0d | 2Procurement | Environment monitoring system for Pot room, GTC, FTC | 1PRO | Utilities & Offsite activities |
| AS3850 |  | PO issue | 98d | 2025-11-13 | 2026-03-10 | AS2820 | 184d | 0d | 2Procurement | Environment monitoring system for Pot room, GTC, FTC | 1PRO | Utilities & Offsite activities |

| ID | WBS | Activity | Duration | Start | Finish | Predecessors | Complete | Remaining | Planned start | Planned finish | Total float | Free float | Text1 | Text2 | Text3 | Text4 |
| --- | --- | --- | --- | --- | --- | --- | --- | --- | --- | --- | --- | --- | --- | --- | --- | --- |
|  | PO-O | **Post Ordering** |  | 2026-03-11 | 2027-01-16 |  |  |  |  |  |  |  |  |  |  |  |
| AS6810 |  | Manufacturing clearance | 26d | 2026-03-11 | 2026-04-09 | AS3850 |  |  |  |  | 184d | 0d | 2Procurement | Environment monitoring system for Pot room, GTC, FTC | 2PO | Utilities & Offsite activities |
| AS7250 |  | Manufacturing | 208d | 2026-04-10 | 2026-12-16 | AS6810 |  |  |  |  | 184d | 0d | 2Procurement | Environment monitoring system for Pot room, GTC, FTC | 2PO | Utilities & Offsite activities |
| AS7440 |  | Delivery at site | 26d | 2026-12-17 | 2027-01-16 | AS7250 |  |  |  |  | 184d | 0d | 2Procurement | Environment monitoring system for Pot room, GTC, FTC | 2PO | Utilities & Offsite activities |
|  | BM | **Building material supply** |  | 2026-01-16 | 2026-09-23 |  |  |  |  |  |  |  |  |  |  |  |
|  | PR-O | **Pre Ordering** |  |  |  |  |  |  |  |  |  |  |  |  |  |  |
|  | PO-O | **Post Ordering** |  | 2026-01-16 | 2026-09-23 |  |  |  |  |  |  |  |  |  |  |  |
| AS6140 |  | Manufacturing clearance | 26d | 2026-01-16 | 2026-02-16 | AS9140 |  |  |  |  | 10d | 0d | 2Procurement | Building material supply | 2PO | Utilities & Offsite activities |
| AS6420 |  | Manufacturing | 156d | 2026-02-17 | 2026-08-21 | AS6140 |  |  |  |  | 10d | 0d | 2Procurement | Building material supply | 2PO | Utilities & Offsite activities |
| AS6930 |  | Delivery at site | 130d | 2026-04-20 | 2026-09-23 | AS6420 SS+52d |  |  |  |  | 10d | 0d | 2Procurement | Building material supply | 2PO | Utilities & Offsite activities |
|  | STP | **Electrical Items** |  | 2026-02-12 | 2027-02-22 |  |  |  |  |  |  |  |  |  |  |  |
|  | PR-O | **Pre Ordering** |  |  |  |  |  |  |  |  |  |  |  |  |  |  |
|  | PO-O | **Post Ordering** |  | 2026-02-12 | 2027-02-22 |  |  |  |  |  |  |  |  |  |  |  |
| AS6150 |  | Manufacturing clearance | 26d | 2026-02-12 | 2026-03-14 | AS2041 |  |  |  |  | 149d | 0d | 2Procurement | Electrical Items | 2PO | Utilities & Offsite activities |
| AS6430 |  | Manufacturing | 208d | 2026-03-16 | 2026-11-20 | AS6150 |  |  |  |  | 149d | 0d | 2Procurement | Electrical Items | 2PO | Utilities & Offsite activities |
| AS6940 |  | Delivery at site - E&I | 78d | 2026-11-21 | 2027-02-22 | AS6430 |  |  |  |  | 149d | 33d | 2Procurement | Electrical Items | 2PO | Utilities & Offsite activities |
|  | STP1 | **DG set** |  | 2025-10-29 | 2027-01-06 |  |  |  |  |  |  |  |  |  |  |  |
|  | PR-O | **Pre Ordering** |  | 2025-10-29 | 2026-02-02 |  |  |  |  |  |  |  |  |  |  |  |
| A2390 |  | Request for Quotation (RFQ) | 3d | 2025-10-29 A | 2025-10-29 A | AS7750 FS+85d | 100% |  | 2025-10-28 | 2025-10-30 |  |  |  |  |  |  |
| A2400 |  | PO issue | 79d | 2025-10-30 A | 2026-02-02 | A2390 | 1% | 78d | 2025-10-31 | 2026-02-03 | 217d | 0d |  |  |  |  |
|  | PO-O | **Post Ordering** |  | 2026-02-03 | 2026-12-11 |  |  |  |  |  |  |  |  |  |  |  |
| AS13851 |  | Manufacturing clearance | 26d | 2026-02-03 | 2026-03-05 | A2400 |  |  |  |  | 217d | 0d | 2Procurement | Electrical Items | 2PO | Utilities & Offsite activities |
| AS13861 |  | Manufacturing | 208d | 2026-03-06 | 2026-11-11 | AS13851 |  |  |  |  | 217d | 0d | 2Procurement | Electrical Items | 2PO | Utilities & Offsite activities |
| AS13871 |  | Delivery at site - DG | 26d | 2026-11-12 | 2026-12-11 | AS13861 |  |  |  |  | 217d | 8d | 2Procurement | Electrical Items | 2PO | Utilities & Offsite activities |

| ID | WBS | Activity | Duration | Start | Finish | Predecessors | Total float | Free float | Text1 | Text2 | Text3 | Text4 |
| --- | --- | --- | --- | --- | --- | --- | --- | --- | --- | --- | --- | --- |
|  | STP1 | **Static Fire Fighting equipment** |  | 2025-11-24 | 2026-12-01 |  |  |  |  |  |  |  |
|  | PR-O | **Pre Ordering** |  | 2025-11-24 | 2026-01-21 |  |  |  |  |  |  |  |
| A2410 |  | Request for Quotation (RFQ) | 3d | 2025-11-24 | 2025-11-26 | AS7910 | 231d | 0d |  |  |  |  |
| A2420 |  | PO issue | 47d | 2025-11-27 | 2026-01-21 | A2410 | 231d | 0d |  |  |  |  |
|  | PO-O | **Post Ordering** |  | 2026-01-22 | 2026-12-01 |  |  |  |  |  |  |  |
| AS13881 |  | Manufacturing clearance | 26d | 2026-01-22 | 2026-02-21 | A2420 | 231d | 0d | 2Procurement | Electrical Items | 2PO | Utilities & Offsite activities |
| AS13891 |  | Manufacturing | 208d | 2026-02-23 | 2026-10-30 | AS13881 | 231d | 0d | 2Procurement | Electrical Items | 2PO | Utilities & Offsite activities |
| AS13901 |  | Delivery at site - Fire fighting | 26d | 2026-10-31 | 2026-12-01 | AS13891 | 231d | 0d | 2Procurement | Electrical Items | 2PO | Utilities & Offsite activities |
|  | STP11 | **HVAC** |  | 2025-11-21 | 2027-01-06 |  |  |  |  |  |  |  |
|  | PR-O | **Pre Ordering** |  | 2025-11-21 | 2026-02-26 |  |  |  |  |  |  |  |
| A2430 |  | Request for Quotation (RFQ) | 3d | 2025-11-21 | 2025-11-24 | AS8230 | 40d | 0d |  |  |  |  |
| A2440 |  | PO issue | 79d | 2025-11-25 | 2026-02-26 | A2430 | 40d | 0d |  |  |  |  |
|  | PO-O | **Post Ordering** |  | 2026-02-27 | 2027-01-06 |  |  |  |  |  |  |  |
| AS13911 |  | Manufacturing clearance | 26d | 2026-02-27 | 2026-03-30 | A2440 | 40d | 0d | 2Procurement | Electrical Items | 2PO | Utilities & Offsite activities |
| AS13921 |  | Manufacturing | 208d | 2026-03-31 | 2026-12-05 | AS13911 | 40d | 0d | 2Procurement | Electrical Items | 2PO | Utilities & Offsite activities |
| AS13931 |  | Delivery at site - HVAC | 26d | 2026-12-07 | 2027-01-06 | AS13921 | 40d | 0d | 2Procurement | Electrical Items | 2PO | Utilities & Offsite activities |
|  | STP111 | **Compressed Air System** |  | 2025-11-07 | 2026-12-21 |  |  |  |  |  |  |  |
|  | PR-O | **Pre Ordering** |  | 2025-11-07 | 2026-02-11 |  |  |  |  |  |  |  |
| A2450 |  | Request for Quotation (RFQ) | 1d | 2025-11-07 | 2025-11-07 | AS9690 FS+26d | 197d | 0d |  |  |  |  |
| A2460 |  | PO issue | 80d | 2025-11-08 | 2026-02-11 | A2450 | 197d | 0d |  |  |  |  |
|  | PO-O | **Post Ordering** |  | 2026-02-12 | 2026-12-21 |  |  |  |  |  |  |  |
| AS13941 |  | Manufacturing clearance | 26d | 2026-02-12 | 2026-03-14 | A2460 | 197d | 0d | 2Procurement | Electrical Items | 2PO | Utilities & Offsite activities |
| AS13951 |  | Manufacturing | 208d | 2026-03-16 | 2026-11-20 | AS13941 | 197d | 0d | 2Procurement | Electrical Items | 2PO | Utilities & Offsite activities |
| AS13961 |  | Delivery at site - HVAC | 26d | 2026-11-21 | 2026-12-21 | AS13951 | 197d | 133d | 2Procurement | Electrical Items | 2PO | Utilities & Offsite activities |

| ID | WBS | Activity | Duration | Start | Finish | Predecessors | Complete | Remaining | Planned start | Planned finish | Total float | Free float | Text1 | Text2 | Text3 | Text4 |
| --- | --- | --- | --- | --- | --- | --- | --- | --- | --- | --- | --- | --- | --- | --- | --- | --- |
|  | CON | **Construction** |  | 2025-08-19 | 2027-12-09 |  |  |  |  |  |  |  |  |  |  |  |
|  | AR | **Alumina Receiving** |  | 2025-08-25 | 2027-10-06 |  |  |  |  |  |  |  |  |  |  |  |
|  | AH | **Alumina handling (Connecting with existing) Silo-1 to Silo-3** |  | 2027-02-17 | 2027-10-06 |  |  |  |  |  |  |  |  |  |  |  |
|  | STR | **Structural** |  | 2027-02-17 | 2027-06-21 |  |  |  |  |  |  |  |  |  |  |  |
| AS9680 |  | Steel structure erection | 78d | 2027-02-17 | 2027-05-21 | AS9500, AS7290, AS5320 |  |  |  |  | 18d | 0d | 3Construction | Alumina handling (Connecting with existing) Silo-1 to Silo-3 | 2Str | Alumina Receiving |
| AS9681 |  | Sheeting works | 26d | 2027-05-22 | 2027-06-21 | AS9680, A1040 |  |  |  |  | 133d | 134d | 3Construction | Alumina handling (Connecting with existing) Silo-1 to Silo-3 | 2Str | Alumina Receiving |
|  | ME | **Mechanical** |  | 2027-05-22 | 2027-09-22 |  |  |  |  |  |  |  |  |  |  |  |
| AS10000 |  | Technological structure erection | 52d | 2027-05-22 | 2027-07-21 | AS9680 |  |  |  |  | 18d | 0d | 3Construction | Alumina handling (Connecting with existing) Silo-1 to Silo-3 | 3Mech | Alumina Receiving |
| AS10440 |  | Equipment erection | 52d | 2027-06-22 | 2027-08-20 | AS10000 SS+26d, AS6920, AS6960 |  |  |  |  | 29d | 0d | 3Construction | Alumina handling (Connecting with existing) Silo-1 to Silo-3 | 3Mech | Alumina Receiving |
| AS10680 |  | Utility & Piping | 26d | 2027-08-21 | 2027-09-22 | AS10440, AS3180 |  |  |  |  | 29d | 11d | 3Construction | Alumina handling (Connecting with existing) Silo-1 to Silo-3 | 3Mech | Alumina Receiving |
|  | EI | **Electrical & Instrumentation** |  | 2027-06-04 | 2027-10-06 |  |  |  |  |  |  |  |  |  |  |  |
| AS10690 |  | Electrical & Instrumentation works | 104d | 2027-06-04 | 2027-10-06 | AS4000, AS4010, AS6980, AS10000 SS+11d |  |  |  |  | 18d | 0d | 3Construction | Alumina handling (Connecting with existing) Silo-1 to Silo-3 | 4EI | Alumina Receiving |
|  | SILO3 | **Silo-3** |  | 2025-08-25 | 2027-08-27 |  |  |  |  |  |  |  |  |  |  |  |
|  | PIL | **Piling** |  | 2025-08-25 | 2026-02-17 |  |  |  |  |  |  |  |  |  |  |  |
| AS5769.01 |  | Mobilization to site | 52d | 2025-08-25 A | 2025-11-14 | AS1941 | 77% | 12d | 2025-09-15 | 2025-11-18 | 45d | 27d | 3Construction | Silo-3 | 1Civ | Alumina Receiving |
| AS5770 |  | Piling works | 52d | 2025-12-17 | 2026-02-17 | AS4840, AS1941, AS5769.01 |  |  |  |  | 18d | 0d | 3Construction | Silo-3 | 1Civ | Alumina Receiving |
|  | CIVIL | **Civil** |  | 2026-03-21 | 2027-02-16 |  |  |  |  |  |  |  |  |  |  |  |
| AS7290 |  | Foundation and concreting works | 276d | 2026-03-21 | 2027-02-16 | AS5730, AS7550, AS5770 FS+26d |  |  |  |  | 18d | 0d | 3Construction | Silo-3 | 1Civ | Alumina Receiving |
|  | STR | **Structural** |  | 2027-02-17 | 2027-05-21 |  |  |  |  |  |  |  |  |  |  |  |
| AS10950 |  | Steel structure erection | 78d | 2027-02-17 | 2027-05-21 | AS7290 |  |  |  |  | 49d | 0d | 3Construction | Silo-3 | 2Str | Alumina Receiving |
|  | ME | **Mechanical** |  | 2027-05-22 | 2027-08-20 |  |  |  |  |  |  |  |  |  |  |  |
| AS11080 |  | Equipment erection | 52d | 2027-05-22 | 2027-07-21 | AS10950, AS6950, AS6970 |  |  |  |  | 49d | 0d | 3Construction | Silo-3 | 3Mech | Alumina Receiving |
| AS11230 |  | Utility & Piping | 26d | 2027-07-22 | 2027-08-20 | AS11080, AS2031 |  |  |  |  | 49d | 0d | 3Construction | Silo-3 | 3Mech | Alumina Receiving |
|  | EI | **Electrical & Instrumentation** |  | 2027-07-29 | 2027-08-27 |  |  |  |  |  |  |  |  |  |  |  |
| AS11240 |  | Electrical & Instrumentation works | 26d | 2027-07-29 | 2027-08-27 | AS11080, AS4030, AS4040, AS6980, AS11230 SS+6d, AS2041 |  |  |  |  | 49d | 31d | 3Construction | Silo-3 | 4EI | Alumina Receiving |

| ID | WBS | Activity | Duration | Start | Finish | Predecessors | Complete | Remaining | Planned start | Planned finish | Total float | Free float | Text1 | Text2 | Text3 | Text4 | Notes |
| --- | --- | --- | --- | --- | --- | --- | --- | --- | --- | --- | --- | --- | --- | --- | --- | --- | --- |
|  | PB | **Potline building & Equipment** |  | 2025-08-19 | 2027-10-15 |  |  |  |  |  |  |  |  |  |  |  |  |
|  | PR-C | **Pot room C** |  | 2025-08-19 | 2027-09-28 |  |  |  |  |  |  |  |  |  |  |  |  |
|  | CIVIL | **Civil** |  | 2025-08-19 | 2027-04-14 |  |  |  |  |  |  |  |  |  |  |  |  |
| AS10819.01 |  | Area grading (210-207 Lvl) & Footing excavation for 18 pots | 25d | 2025-08-19 A | 2025-12-02 | AS1845, AS7540 FS+2d |  | 27d | 2025-09-15 | 2025-10-15 | 13d | 0d |  |  |  |  |  |
| AS10819 |  | Mobilization to site | 24d | 2025-08-23 A | 2025-09-22 A | AS1880 | 100% |  | 2025-09-01 | 2025-09-29 |  |  | 3Construction | Pot room C | 1Civ | Potline building & Equipment |  |
| AS10820 |  | Area grading (210-207 Lvl) | 175d | 2025-09-22 A | 2026-05-28 | AS7540, AS1922 SS+10d, AS5940, AS1930, AS1925 SS+26d, AS1918 SS+10d, AS10819 SS+20d |  | 175d | 2025-09-30 | 2026-04-28 | 86d | 0d | 3Construction | Pot room C | 1Civ | Potline building & Equipment |  |
| AS10821 |  | Footing excavation below 207 lvl | 191d | 2025-10-13 A | 2026-06-16 | AS10820 SS+17d, AS5940 |  | 191d | 2025-10-15 | 2026-06-01 | 86d | 73d | 3Construction | Pot room C | 1Civ | Potline building & Equipment |  |
| AS11380 |  | Foundation and concreting works C90-C85 | 71d | 2025-10-28 A | 2026-01-23 | AS9180 SS, AS9420 FS+26d, AS10819.01 SS+47d |  | 71d | 2025-10-16 | 2026-01-09 | 13d | 0d | 3Construction | Pot room C | 1Civ | Potline building & Equipment | As per L&T schedule considered. |
| AS11390 |  | Foundation and concreting works C73-C84 | 71d | 2025-10-28 A | 2026-01-23 | AS11380 SS, AS1924 |  | 71d | 2025-10-16 | 2026-01-09 | 13d | 0d | 3Construction | Pot room C | 1Civ | Potline building & Equipment | As per L&T schedule considered. |
| AS11340 |  | Sub Soil drainage system | 275d | 2025-12-01 | 2026-10-27 | AS5150, AS10819.01 SS+84d, AS10819 FS+5d, AS1940 SS+156d |  |  |  |  | 55d | 42d | 3Construction | Pot room C | 1Civ | Potline building & Equipment |  |
| AS12480 |  | FCN Foundation | 300d | 2026-01-24 | 2027-01-20 | AS11390 |  |  |  |  | 177d | 0d | 3Construction | Pot room C | 1Civ | Potline building & Equipment |  |
| AS12490 |  | GTC Duct Footings | 300d | 2026-01-24 | 2027-01-20 | AS12480 SS |  |  |  |  | 275d | 247d | 3Construction | Pot room C | 1Civ | Potline building & Equipment |  |
| AS11480 |  | Foundation and concreting works C61-C72 | 70d | 2026-01-28 | 2026-04-20 | AS11390 SS+76d, AS10820 SS+12d, AS10821 SS+12d, AS11340 SS+6d |  |  |  |  | 13d | 0d | 3Construction | Pot room C | 1Civ | Potline building & Equipment |  |
| AS11500 |  | Foundation and concreting works C49-C60 | 70d | 2026-01-28 | 2026-04-20 | AS11480 SS |  |  |  |  | 59d | 0d | 3Construction | Pot room C | 1Civ | Potline building & Equipment |  |
| AS11682 |  | Insulation of foundations | 300d | 2026-02-25 | 2027-02-20 | AS11380 FS+7d, AS13631, AS14011 FS+7d |  |  |  |  | 86d | 0d | 3Construction | Pot room C | 1Civ | Potline building & Equipment |  |
| AS11690 |  | Precast beam erection | 300d | 2026-03-06 | 2027-03-02 | AS11380 FS+10d, AS11682 SS+7d |  |  |  |  | 86d | 0d | 3Construction | Pot room C | 1Civ | Potline building & Equipment |  |
| AS11700 |  | Precast slab erection | 300d | 2026-03-20 | 2027-03-17 | AS11690 SS+12d |  |  |  |  | 110d | 24d | 3Construction | Pot room C | 1Civ | Potline building & Equipment |  |
| AS11650 |  | Foundation and concreting works C37-C48 | 73d | 2026-03-26 | 2026-06-19 | AS11500 SS+48d |  |  |  |  | 59d | 0d | 3Construction | Pot room C | 1Civ | Potline building & Equipment |  |
| AS11660 |  | Foundation and concreting works C25-C36 | 73d | 2026-03-26 | 2026-06-19 | AS11650 SS |  |  |  |  | 59d | 0d | 3Construction | Pot room C | 1Civ | Potline building & Equipment |  |
| AS11710 |  | Tending aisle slab | 300d | 2026-04-06 | 2027-04-02 | AS11690 SS+26d |  |  |  |  | 86d | 0d | 3Construction | Pot room C | 1Civ | Potline building & Equipment |  |
| AS11720 |  | Perforated wall | 300d | 2026-04-17 | 2027-04-14 | AS11710 SS+10d, AS11700 SS |  |  |  |  | 86d | 24d | 3Construction | Pot room C | 1Civ | Potline building & Equipment |  |
| AS11670 |  | Foundation and concreting works C13-C24 | 70d | 2026-07-27 | 2026-10-20 | AS11660 FS+30d |  |  |  |  | 59d | 0d | 3Construction | Pot room C | 1Civ | Potline building & Equipment |  |
| AS11680 |  | Foundation and concreting works C01-C12 | 70d | 2026-07-27 | 2026-10-20 | AS11670 SS |  |  |  |  | 120d | 0d | 3Construction | Pot room C | 1Civ | Potline building & Equipment |  |
|  | STR | **Structural** |  | 2026-02-06 | 2027-04-08 |  |  |  |  |  |  |  |  |  |  |  |  |
| AS10981 |  | Steel structure erection C85-C90 | 121d | 2026-02-06 | 2026-06-29 | AS11380, AS9510 SS+12d, AS14011 SS+4d |  |  |  |  | 22d | 0d | 3Construction | Pot room C | 2Str | Potline building & Equipment |  |
| AS11730 |  | Steel structure erection C73-C84 | 121d | 2026-02-06 | 2026-06-29 | AS11390, AS10981 SS |  |  |  |  | 22d | 5d | 3Construction | Pot room C | 2Str | Potline building & Equipment |  |
| AS11011 |  | Rail erection C85-C90 | 12d | 2026-04-24 | 2026-05-08 | AS10981 SS+58d, AS9520 SS, A1210 SS+6d, AS2031 |  |  |  |  | 48d | 0d | 3Construction | Pot room C | 2Str | Potline building & Equipment |  |
| AS11760 |  | Rail erection C73-C84 | 12d | 2026-04-24 | 2026-05-08 | AS11730 SS+58d, AS11011 SS |  |  |  |  | 48d | 0d | 3Construction | Pot room C | 2Str | Potline building & Equipment |  |
| AS10991 |  | Sheeting C85-C90 | 36d | 2026-04-25 | 2026-06-06 | AS10981 SS+61d, A1040 SS |  |  |  |  | 74d | 0d | 3Construction | Pot room C | 2Str | Potline building & Equipment |  |
| AS11740 |  | Sheeting C73-C84 | 36d | 2026-04-25 | 2026-06-06 | AS11730 SS+61d, AS10991 SS |  |  |  |  | 88d | 22d | 3Construction | Pot room C | 2Str | Potline building & Equipment |  |
| AS11770 |  | Steel structure erection C61-C72 | 121d | 2026-05-02 | 2026-09-24 | AS11480 FS+9d, AS11730 SS+62d |  |  |  |  | 13d | 0d | 3Construction | Pot room C | 2Str | Potline building & Equipment |  |
| AS11810 |  | Steel structure erection C49-C60 | 121d | 2026-05-02 | 2026-09-24 | AS11500, AS11770 SS |  |  |  |  | 82d | 0d | 3Construction | Pot room C | 2Str | Potline building & Equipment |  |
| AS11800 |  | Rail erection C61-C72 | 12d | 2026-06-11 | 2026-06-24 | AS11770 SS+34d, AS11760 |  |  |  |  | 113d | 0d | 3Construction | Pot room C | 2Str | Potline building & Equipment |  |
| AS11840 |  | Rail erection C49-C60 | 12d | 2026-06-11 | 2026-06-24 | AS11810 SS+34d, AS11800 SS |  |  |  |  | 167d | 52d | 3Construction | Pot room C | 2Str | Potline building & Equipment |  |
| AS11850 |  | Steel structure erection C37-C48 | 120d | 2026-07-01 | 2026-11-24 | AS11650, AS11810 SS+51d |  |  |  |  | 82d | 0d | 3Construction | Pot room C | 2Str | Potline building & Equipment |  |
| AS11890 |  | Steel structure erection C25-C36 | 120d | 2026-07-01 | 2026-11-24 | AS11660, AS11850 SS |  |  |  |  | 99d | 0d | 3Construction | Pot room C | 2Str | Potline building & Equipment |  |
| AS11001 |  | Roof ventilator C85-C90 | 10d | 2026-07-03 | 2026-07-14 | AS10991, A1260 SS+6d, A2360, AS10981 FS+3d |  |  |  |  | 52d | 0d | 3Construction | Pot room C | 2Str | Potline building & Equipment |  |
| AS11750 |  | Roof ventilator C73-C84 | 10d | 2026-07-03 | 2026-07-14 | AS11740, AS11001 SS |  |  |  |  | 66d | 32d | 3Construction | Pot room C | 2Str | Potline building & Equipment |  |
| AS11780 |  | Sheeting C61-C72 | 36d | 2026-07-15 | 2026-08-27 | AS11770 SS+63d, AS11740 |  |  |  |  | 101d | 0d | 3Construction | Pot room C | 2Str | Potline building & Equipment |  |
| AS11820 |  | Sheeting C49-C60 | 36d | 2026-07-15 | 2026-08-27 | AS11810 SS+61d, AS11780 SS |  |  |  |  | 122d | 13d | 3Construction | Pot room C | 2Str | Potline building & Equipment |  |
| AS11880 |  | Rail erection C37-C48 | 12d | 2026-08-27 | 2026-09-10 | AS11850 SS+47d, AS11840 |  |  |  |  | 140d | 0d | 3Construction | Pot room C | 2Str | Potline building & Equipment |  |
| AS11920 |  | Rail erection C25-C36 | 12d | 2026-08-27 | 2026-09-10 | AS11890 SS+45d, AS11880 SS |  |  |  |  | 174d | 88d | 3Construction | Pot room C | 2Str | Potline building & Equipment |  |
| AS11860 |  | Sheeting C37-C48 | 35d | 2026-09-14 | 2026-10-26 | AS11850 SS+61d, AS11820 |  |  |  |  | 109d | 0d | 3Construction | Pot room C | 2Str | Potline building & Equipment |  |
| AS11900 |  | Sheeting C25-C36 | 35d | 2026-09-14 | 2026-10-26 | AS11890 SS+61d, AS11860 SS |  |  |  |  | 147d | 27d | 3Construction | Pot room C | 2Str | Potline building & Equipment |  |
| AS11790 |  | Roof ventilator C61-C72 | 10d | 2026-09-29 | 2026-10-10 | AS11780, AS11750, AS11770 FS+3d |  |  |  |  | 76d | 0d | 3Construction | Pot room C | 2Str | Potline building & Equipment |  |
| AS11830 |  | Roof ventilator C49-C60 | 10d | 2026-09-29 | 2026-10-10 | AS11820, AS11790 SS |  |  |  |  | 104d | 32d | 3Construction | Pot room C | 2Str | Potline building & Equipment |  |
| AS11930 |  | Steel structure erection C13-C24 | 120d | 2026-10-31 | 2027-03-25 | AS11670 FS+9d, AS11890 SS+60d |  |  |  |  | 59d | 0d | 3Construction | Pot room C | 2Str | Potline building & Equipment |  |
| AS11970 |  | Steel structure erection C01-C12 | 120d | 2026-10-31 | 2027-03-25 | AS11680, AS11930 SS |  |  |  |  | 111d | 1d | 3Construction | Pot room C | 2Str | Potline building & Equipment |  |
| AS11870 |  | Roof ventilator C37-C48 | 10d | 2026-11-28 | 2026-12-09 | AS11860, AS11830, AS11850 FS+3d |  |  |  |  | 82d | 0d | 3Construction | Pot room C | 2Str | Potline building & Equipment |  |
| AS11910 |  | Roof ventilator C25-C36 | 10d | 2026-11-28 | 2026-12-09 | AS11900, AS11870 SS |  |  |  |  | 120d | 54d | 3Construction | Pot room C | 2Str | Potline building & Equipment |  |
| AS11960 |  | Rail erection C13-C24 | 12d | 2026-12-28 | 2027-01-09 | AS11930 SS+47d, AS11920 |  |  |  |  | 109d | 0d | 3Construction | Pot room C | 2Str | Potline building & Equipment |  |
| AS12000 |  | Rail erection C01-C12 | 12d | 2026-12-28 | 2027-01-09 | AS11970 SS+45d, AS11960 SS |  |  |  |  | 145d | 84d | 3Construction | Pot room C | 2Str | Potline building & Equipment |  |
| AS11940 |  | Sheeting C13-C24 | 36d | 2027-01-14 | 2027-02-25 | AS11930 SS+62d, AS11900 |  |  |  |  | 83d | 0d | 3Construction | Pot room C | 2Str | Potline building & Equipment |  |
| AS11980 |  | Sheeting C01-C12 | 36d | 2027-01-14 | 2027-02-25 | AS11970 SS+61d, AS11940 SS |  |  |  |  | 110d | 24d | 3Construction | Pot room C | 2Str | Potline building & Equipment |  |
| AS11950 |  | Roof ventilator C13-C24 | 10d | 2027-03-29 | 2027-04-08 | AS11940, AS11910, AS11930 FS+2d |  |  |  |  | 59d | 0d | 3Construction | Pot room C | 2Str | Potline building & Equipment |  |
| AS11990 |  | Roof ventilator C01-C12 | 10d | 2027-03-29 | 2027-04-08 | AS11980, AS11950 SS, A1600 |  |  |  |  | 86d | 25d | 3Construction | Pot room C | 2Str | Potline building & Equipment |  |

| ID | WBS | Activity | Duration | Start | Finish | Predecessors | Total float | Free float | Text1 | Text2 | Text3 | Text4 |
| --- | --- | --- | --- | --- | --- | --- | --- | --- | --- | --- | --- | --- |
|  | ME | **Mechanical** |  | 2026-05-09 | 2027-09-28 |  |  |  |  |  |  |  |
| AS11339 |  | EOT | 39d | 2026-05-09 | 2026-06-23 | AS11760, A1210 SS+12d, AS2031, AS7400 | 48d | 18d | 3Construction | Pot room C | 3Mech | Potline building & Equipment |
| AS11342 |  | Cathode Sealing | 312d | 2026-07-09 | 2027-07-20 | A1090 SS+26d, A2050 SS, A2300 | 45d | 7d | 3Construction | Pot room C | 3Mech | Potline building & Equipment |
| AS11341.1 |  | Pot shell C90-C85 | 18d | 2026-07-29 | 2026-08-19 | AS11339, AS11403.01 SS+11d, AS11011, A1180, AS13711 FS+18d | 30d | 0d | 3Construction | Pot room C | 3Mech | Potline building & Equipment |
| AS11343.01 |  | Pot Lining C90-C85 | 21d | 2026-08-01 | 2026-08-26 | AS11341.1 SS+3d, AS11342 SS+12d, AS11001, AS7340 SS+18d, AS13661, AS13791, AS13841 | 38d | 4d | 3Construction | Pot room C | 3Mech | Potline building & Equipment |
| AS11341.2 |  | Pot shell C79-C84 | 17d | 2026-08-20 | 2026-09-09 | AS11341.1, AS11403.02 SS+11d, AS11760 | 34d | 0d | 3Construction | Pot room C | 3Mech | Potline building & Equipment |
| AS11357 |  | FCN Installation | 307d | 2026-08-20 | 2027-08-23 | A1140, A1210, AS12480 SS+26d, AS11341.1, AS2031 | 30d | 31d | 3Construction | Pot room C | 3Mech | Potline building & Equipment |
| AS11343.02 |  | Pot Lining C79-C84 | 20d | 2026-08-24 | 2026-09-16 | AS11343.01 SS+14d, AS11341.2 SS+3d, AS11750 | 34d | 0d | 3Construction | Pot room C | 3Mech | Potline building & Equipment |
| AS11347 |  | Utility & Piping | 312d | 2026-09-08 | 2027-09-16 | AS3240, AS11770 SS+104d, A1210, AS2031, AS11100 SS | 10d | 0d | 3Construction | Pot room C | 3Mech | Potline building & Equipment |
| AS11341.3 |  | Pot shell C70-C78 | 27d | 2026-09-10 | 2026-10-13 | AS11341.2, AS11403.03 SS+10d, AS11760, AS11800 | 60d | 0d | 3Construction | Pot room C | 3Mech | Potline building & Equipment |
| AS11343.03 |  | Pot Lining C70-C78 | 30d | 2026-09-14 | 2026-10-20 | AS11343.02 SS+14d, AS11341.3 SS+3d, AS11750 | 72d | 13d | 3Construction | Pot room C | 3Mech | Potline building & Equipment |
| AS11344.01 |  | Pot Superstructure & accessories C85-C90 | 20d | 2026-09-18 | 2026-10-12 | AS11343.01, AS3733 SS+26d, AS9401 SS+26d, AS11343.02 | 34d | 0d | 3Construction | Pot room C | 3Mech | Potline building & Equipment |
| AS11344.02 |  | Pot Superstructure & accessories C79-C84 | 21d | 2026-10-10 | 2026-11-03 | AS11344.01 SS+18d, AS11343.02 SS+6d | 37d | 0d | 3Construction | Pot room C | 3Mech | Potline building & Equipment |
| AS11341.4 |  | Pot shell C61-C69 | 27d | 2026-10-14 | 2026-11-14 | AS11341.3, AS11403.04 SS+11d, AS11800 | 60d | 0d | 3Construction | Pot room C | 3Mech | Potline building & Equipment |
| AS11343.04 |  | Pot Lining C61-C69 | 30d | 2026-10-17 | 2026-11-21 | AS11343.03 SS+14d, AS11341.4 SS+3d, AS11790 | 71d | 13d | 3Construction | Pot room C | 3Mech | Potline building & Equipment |
| AS11355 |  | Pot Hoods | 284d | 2026-10-23 | 2027-09-28 | A1550 SS+12d, AS11344.01 | 25d | 26d | 3Construction | Pot room C | 3Mech | Potline building & Equipment |
| AS11344.03 |  | Pot Superstructure & accessories C70-C78 | 28d | 2026-11-03 | 2026-12-05 | AS11344.02 SS+20d, AS11343.03 SS+6d | 37d | 0d | 3Construction | Pot room C | 3Mech | Potline building & Equipment |
| AS11341.5 |  | Pot shell C52-C60 | 27d | 2026-11-16 | 2026-12-16 | AS11341.4, AS11403.05 SS+10d, AS11840 | 60d | 0d | 3Construction | Pot room C | 3Mech | Potline building & Equipment |
| AS11343.05 |  | Pot Lining C52-C60 | 30d | 2026-11-19 | 2026-12-23 | AS11343.04 SS+14d, AS11341.5 SS+3d, AS11830 | 72d | 13d | 3Construction | Pot room C | 3Mech | Potline building & Equipment |
| AS11344.04 |  | Pot Superstructure & accessories C61-C69 | 30d | 2026-12-04 | 2027-01-08 | AS11344.03 SS+26d, AS11343.04 SS+6d | 37d | 0d | 3Construction | Pot room C | 3Mech | Potline building & Equipment |
| AS11341.6 |  | Pot shell C43-C51 | 27d | 2026-12-17 | 2027-01-18 | AS11341.5, AS11403.06 SS+11d, AS11840, AS11880 | 60d | 0d | 3Construction | Pot room C | 3Mech | Potline building & Equipment |
| AS11343.06 |  | Pot Lining C43-C51 | 30d | 2026-12-21 | 2027-01-25 | AS11343.05 SS+14d, AS11341.6 SS+3d, AS11830, AS11870 | 73d | 13d | 3Construction | Pot room C | 3Mech | Potline building & Equipment |
| AS11344.05 |  | Pot Superstructure & accessories C52-C60 | 30d | 2027-01-07 | 2027-02-11 | AS11344.04 SS+28d, AS11343.05 SS+6d | 37d | 0d | 3Construction | Pot room C | 3Mech | Potline building & Equipment |
| AS11341.7 |  | Pot shell C37-C42 | 18d | 2027-01-19 | 2027-02-09 | AS11341.6, AS11403.07 SS+11d, AS11880 | 60d | 0d | 3Construction | Pot room C | 3Mech | Potline building & Equipment |
| AS11343.07 |  | Pot Lining C37-C42 | 21d | 2027-01-22 | 2027-02-16 | AS11343.06 SS+14d, AS11341.7 SS+3d, AS11870 | 70d | 4d | 3Construction | Pot room C | 3Mech | Potline building & Equipment |
| AS11341.8 |  | Pot shell C31-C36 | 17d | 2027-02-10 | 2027-03-02 | AS11341.7, AS11403.08 SS+11d, AS11920 | 60d | 0d | 3Construction | Pot room C | 3Mech | Potline building & Equipment |
| AS11344.06 |  | Pot Superstructure & accessories C43-C51 | 28d | 2027-02-10 | 2027-03-16 | AS11344.05 SS+28d, AS11343.06 SS+6d | 37d | 0d | 3Construction | Pot room C | 3Mech | Potline building & Equipment |
| AS11343.08 |  | Pot Lining C31-C36 | 20d | 2027-02-13 | 2027-03-09 | AS11343.07 SS+14d, AS11341.8 SS+3d, AS11910 | 66d | 3d | 3Construction | Pot room C | 3Mech | Potline building & Equipment |
| AS11341.9 |  | Pot shell C25-C30 | 17d | 2027-03-03 | 2027-03-23 | AS11341.8, AS11403.09 SS+10d, AS11920 | 60d | 0d | 3Construction | Pot room C | 3Mech | Potline building & Equipment |
| AS11343.09 |  | Pot Lining C25-C30 | 20d | 2027-03-06 | 2027-03-30 | AS11343.08 SS+14d, AS11341.9 SS+3d, AS11910 | 63d | 4d | 3Construction | Pot room C | 3Mech | Potline building & Equipment |
| AS11344.07 |  | Pot Superstructure & accessories C37-C42 | 19d | 2027-03-16 | 2027-04-06 | AS11344.06 SS+27d, AS11343.07 SS+6d | 37d | 0d | 3Construction | Pot room C | 3Mech | Potline building & Equipment |
| AS11341.91 |  | Pot shell C19-C24 | 18d | 2027-03-24 | 2027-04-13 | AS11341.9, AS11403.10 SS+10d, AS11960 | 60d | 0d | 3Construction | Pot room C | 3Mech | Potline building & Equipment |
| AS11343.10 |  | Pot Lining C19-C24 | 21d | 2027-03-29 | 2027-04-21 | AS11343.09 SS+14d, AS11341.91 SS+3d, AS11950 SS | 59d | 3d | 3Construction | Pot room C | 3Mech | Potline building & Equipment |
| AS11344.08 |  | Pot Superstructure & accessories C31-C36 | 20d | 2027-04-05 | 2027-04-27 | AS11344.07 SS+17d, AS11343.08 SS+6d | 37d | 0d | 3Construction | Pot room C | 3Mech | Potline building & Equipment |
| AS11341.92 |  | Pot shell C13-C18 | 18d | 2027-04-14 | 2027-05-05 | AS11341.91, AS11403.11 SS+11d, AS11960 | 61d | 0d | 3Construction | Pot room C | 3Mech | Potline building & Equipment |
| AS11343.11 |  | Pot Lining C13-C18 | 21d | 2027-04-17 | 2027-05-12 | AS11343.10 SS+14d, AS11341.92 SS+3d, AS11950 | 61d | 4d | 3Construction | Pot room C | 3Mech | Potline building & Equipment |
| AS11345 |  | PTA Assembly and Erection (1) | 39d | 2027-04-26 | 2027-06-10 | AS7380 SS+26d, AS11590, A1210, AS12760, AS11560, AS13581 | 15d | 5d | 3Construction | Pot room C | 3Mech | Potline building & Equipment |
| AS11344.09 |  | Pot Superstructure & accessories C25-C30 | 20d | 2027-04-27 | 2027-05-20 | AS11344.08 SS+19d, AS11343.09 SS+6d | 37d | 0d | 3Construction | Pot room C | 3Mech | Potline building & Equipment |
| AS11341.93 |  | Pot shell C07-C12 | 18d | 2027-05-06 | 2027-05-26 | AS11341.92, AS11403.12 SS+11d, AS12000 | 61d | 0d | 3Construction | Pot room C | 3Mech | Potline building & Equipment |
| AS11343.12 |  | Pot Lining C07-C12 | 21d | 2027-05-10 | 2027-06-02 | AS11343.11 SS+14d, AS11341.93 SS+3d, AS11990 | 61d | 4d | 3Construction | Pot room C | 3Mech | Potline building & Equipment |
| AS11344.10 |  | Pot Superstructure & accessories C19-C24 | 20d | 2027-05-19 | 2027-06-10 | AS11344.09 SS+18d, AS11343.10 | 37d | 0d | 3Construction | Pot room C | 3Mech | Potline building & Equipment |
| AS11367 |  | HDPS Connections | 90d | 2027-05-20 | 2027-09-02 | AS9431 SS+62d, AS11011, AS11344.01 | 22d | 23d | 3Construction | Pot room C | 3Mech | Potline building & Equipment |
| AS11341.94 |  | Pot shell C01-C06 | 18d | 2027-05-27 | 2027-06-16 | AS11341.93, AS11403.13 SS+11d, AS12000 | 62d | 0d | 3Construction | Pot room C | 3Mech | Potline building & Equipment |
| AS11343.13 |  | Pot Lining C01-C06 | 21d | 2027-05-31 | 2027-06-23 | AS11343.12 SS+14d, AS11341.94 SS+3d, AS11990 | 62d | 25d | 3Construction | Pot room C | 3Mech | Potline building & Equipment |
| AS11346 |  | PTA Assembly and Erection (2) | 39d | 2027-06-02 | 2027-07-16 | AS11345 SS+26d, AS7380 | 10d | 0d | 3Construction | Pot room C | 3Mech | Potline building & Equipment |
| AS11344.11 |  | Pot Superstructure & accessories C13-C18 | 20d | 2027-06-10 | 2027-07-02 | AS11344.10 SS+19d, AS11343.11 | 37d | 0d | 3Construction | Pot room C | 3Mech | Potline building & Equipment |
| AS11344.12 |  | Pot Superstructure & accessories C07-C12 | 20d | 2027-07-01 | 2027-07-23 | AS11344.11 SS+18d, AS11343.12 | 37d | 0d | 3Construction | Pot room C | 3Mech | Potline building & Equipment |
| AS11344.13 |  | Pot Superstructure & accessories C01-C06 | 20d | 2027-07-23 | 2027-08-14 | AS11344.12 SS+19d, AS11343.13, A1550 | 37d | 38d | 3Construction | Pot room C | 3Mech | Potline building & Equipment |

| ID | WBS | Activity | Duration | Start | Finish | Predecessors | Remaining | Planned start | Planned finish | Total float | Free float | Text1 | Text2 | Text3 | Text4 | Notes |
| --- | --- | --- | --- | --- | --- | --- | --- | --- | --- | --- | --- | --- | --- | --- | --- | --- |
|  | EI | **Electrical & Instrumentation** |  | 2026-02-20 | 2027-09-16 |  |  |  |  |  |  |  |  |  |  |  |
| AS11401 |  | Bus bar Prototype | 78d | 2026-02-20 | 2026-05-23 | AS9411 SS, A1200, AS2080, AS2091 |  |  |  | 9d | 0d | 3Construction | Pot room C | 4EI | Potline building & Equipment |  |
| AS11401.01 |  | Bus Bar Supply | 351d | 2026-05-25 | 2027-07-20 | AS11401 |  |  |  | 30d | 0d | 3Construction | Pot room C | 4EI | Potline building & Equipment |  |
| AS11402 |  | Anode Stem bracket fabrication | 104d | 2026-06-26 | 2026-10-30 | A1400, A1450, A1500, A1200 |  |  |  | 76d | 34d | 3Construction | Pot room C | 4EI | Potline building & Equipment |  |
| AS11403.01 |  | Bus bar erection C85-C90 | 18d | 2026-07-15 | 2026-08-05 | AS11380, AS11401.01 SS+44d, AS11011, AS11339, AS13711 FS+18d |  |  |  | 30d | 0d | 3Construction | Pot room C | 4EI | Potline building & Equipment |  |
| AS11403.02 |  | Bus bar erection C79-C84 | 18d | 2026-08-06 | 2026-08-27 | AS11390, AS11403.01, AS11760 |  |  |  | 34d | 0d | 3Construction | Pot room C | 4EI | Potline building & Equipment |  |
| AS11403.03 |  | Bus bar erection C70-C78 | 26d | 2026-08-29 | 2026-09-29 | AS11390, AS11480, AS11403.02, AS11760, AS11800 |  |  |  | 60d | 0d | 3Construction | Pot room C | 4EI | Potline building & Equipment |  |
| AS11400 |  | Electrical & Instrumentation works | 312d | 2026-09-08 | 2027-09-16 | AS11347 SS, AS4060, AS4070, AS9972 SS+26d, AS2041 |  |  |  | 10d | 11d | 3Construction | Pot room C | 4EI | Potline building & Equipment |  |
| AS11403.04 |  | Bus bar erection C61-C69 | 28d | 2026-09-30 | 2026-11-02 | AS11480, AS11403.03, AS11800 |  |  |  | 60d | 0d | 3Construction | Pot room C | 4EI | Potline building & Equipment |  |
| AS11403.05 |  | Bus bar erection C52-C60 | 26d | 2026-11-03 | 2026-12-03 | AS11500, AS11403.04, AS11840 |  |  |  | 60d | 0d | 3Construction | Pot room C | 4EI | Potline building & Equipment |  |
| AS11403.06 |  | Bus bar erection C43-C51 | 27d | 2026-12-04 | 2027-01-05 | AS11500, AS11650, AS11403.05, AS11840, AS11880 SS |  |  |  | 60d | 0d | 3Construction | Pot room C | 4EI | Potline building & Equipment |  |
| AS11403.07 |  | Bus bar erection C37-C42 | 18d | 2027-01-06 | 2027-01-27 | AS11650, AS11403.06, AS11880 |  |  |  | 60d | 0d | 3Construction | Pot room C | 4EI | Potline building & Equipment |  |
| AS11403.08 |  | Bus bar erection C31-C36 | 18d | 2027-01-28 | 2027-02-17 | AS11660, AS11403.07, AS11920 |  |  |  | 60d | 0d | 3Construction | Pot room C | 4EI | Potline building & Equipment |  |
| AS11403.09 |  | Bus bar erection C25-C30 | 17d | 2027-02-18 | 2027-03-10 | AS11660, AS11403.08, AS11920 |  |  |  | 60d | 0d | 3Construction | Pot room C | 4EI | Potline building & Equipment |  |
| AS11403.10 |  | Bus bar erection C19-C24 | 17d | 2027-03-11 | 2027-03-31 | AS11670, AS11403.09, AS11960 |  |  |  | 60d | 0d | 3Construction | Pot room C | 4EI | Potline building & Equipment |  |
| AS11412 |  | Pot local control panels | 87d | 2027-03-31 | 2027-07-10 | AS3793 |  |  |  | 67d | 68d | 3Construction | Pot room C | 4EI | Potline building & Equipment |  |
| AS11403.11 |  | Bus bar erection C13-C18 | 18d | 2027-04-01 | 2027-04-21 | AS11670, AS11403.10, AS11960 |  |  |  | 61d | 0d | 3Construction | Pot room C | 4EI | Potline building & Equipment |  |
| AS11403.12 |  | Bus bar erection C07-C12 | 18d | 2027-04-22 | 2027-05-13 | AS11680, AS11403.11, AS12000 |  |  |  | 61d | 0d | 3Construction | Pot room C | 4EI | Potline building & Equipment |  |
| AS11403.13 |  | Bus bar erection C01-C06 | 18d | 2027-05-14 | 2027-06-03 | AS11680, AS11403.12, AS12000, AS11720 |  |  |  | 62d | 0d | 3Construction | Pot room C | 4EI | Potline building & Equipment |  |
|  | PR- D | **Pot room D** |  | 2025-10-11 | 2027-10-15 |  |  |  |  |  |  |  |  |  |  |  |
|  | CIVIL | **Civil** |  | 2025-10-11 | 2027-08-03 |  |  |  |  |  |  |  |  |  |  |  |
| AS12009 |  | Area grading (210-207 Lvl) | 104d | 2025-10-11 A | 2026-03-05 | AS10819 FS+24d | 104d | 2025-10-31 | 2026-03-05 | -1d | 0d | 3Construction | Pot room D | 1Civ | Potline building & Equipment |  |
| AS12010 |  | Footing excavation below 207 lvl | 234d | 2025-11-12 | 2026-08-18 | AS12009 SS+25d |  |  |  | -1d | 0d | 3Construction | Pot room D | 1Civ | Potline building & Equipment |  |
| AS12030 |  | Foundation and concreting works D85-D90 | 70d | 2025-11-15 | 2026-02-06 | AS12010 SS+3d |  |  |  | -1d | 0d | 3Construction | Pot room D | 1Civ | Potline building & Equipment | As per L&T schedule considered. |
| AS12040 |  | Foundation and concreting works D73-D84 | 70d | 2025-11-15 | 2026-02-06 | AS12030 SS |  |  |  | 37d | 0d | 3Construction | Pot room D | 1Civ | Potline building & Equipment | As per L&T schedule considered. |
| AS12020 |  | Sub Soil drainage system | 260d | 2025-11-21 | 2026-09-29 | AS10819, AS12009 SS+33d |  |  |  | 111d | 69d | 3Construction | Pot room D | 1Civ | Potline building & Equipment |  |
| AS12600 |  | FCN Foundation | 300d | 2026-02-07 | 2027-02-03 | AS12040 |  |  |  | 183d | 0d | 3Construction | Pot room D | 1Civ | Potline building & Equipment |  |
| AS12610 |  | GTC Duct foundation | 300d | 2026-02-07 | 2027-02-03 | AS12600 SS |  |  |  | 264d | 236d | 3Construction | Pot room D | 1Civ | Potline building & Equipment |  |
| AS12050 |  | Foundation and concreting works D61-D72 | 70d | 2026-02-24 | 2026-05-18 | AS12040 FS+14d, AS12020 SS+10d |  |  |  | 42d | 0d | 3Construction | Pot room D | 1Civ | Potline building & Equipment |  |
| AS12060 |  | Foundation and concreting works D49-D60 | 70d | 2026-02-24 | 2026-05-18 | AS12050 SS |  |  |  | 42d | 0d | 3Construction | Pot room D | 1Civ | Potline building & Equipment |  |
| AS12110 |  | Insulation of foundations | 300d | 2026-02-25 | 2027-02-20 | AS12030 FS+7d, AS12100 FF+12d, AS13631, AS14011 FS+7d |  |  |  | 28d | 0d | 3Construction | Pot room D | 1Civ | Potline building & Equipment |  |
| AS12120 |  | Precast beam erection | 300d | 2026-03-12 | 2027-03-08 | AS12030 FS+10d, AS12110 SS+12d |  |  |  | 28d | 0d | 3Construction | Pot room D | 1Civ | Potline building & Equipment |  |
| AS12130 |  | Precast slab erection | 300d | 2026-03-26 | 2027-03-23 | AS12120 SS+12d |  |  |  | 55d | 27d | 3Construction | Pot room D | 1Civ | Potline building & Equipment |  |
| AS12070 |  | Foundation and concreting works D37-D48 | 73d | 2026-04-01 | 2026-06-25 | AS12060 SS+30d |  |  |  | 42d | 0d | 3Construction | Pot room D | 1Civ | Potline building & Equipment |  |
| AS12080 |  | Foundation and concreting works D25-D36 | 73d | 2026-04-01 | 2026-06-25 | AS12070 SS |  |  |  | 42d | 0d | 3Construction | Pot room D | 1Civ | Potline building & Equipment |  |
| AS12140 |  | Tending aisle slab | 360d | 2026-04-11 | 2027-06-18 | AS12120 SS+26d |  |  |  | 28d | 0d | 3Construction | Pot room D | 1Civ | Potline building & Equipment |  |
| AS12150 |  | Perforated wall | 360d | 2026-05-28 | 2027-08-03 | AS12140 SS+39d, AS12130 SS+26d |  |  |  | 28d | 29d | 3Construction | Pot room D | 1Civ | Potline building & Equipment |  |
| AS12090 |  | Foundation and concreting works D13-D24 | 73d | 2026-10-26 | 2027-01-20 | AS12080 FS+99d |  |  |  | 42d | 0d | 3Construction | Pot room D | 1Civ | Potline building & Equipment |  |
| AS12100 |  | Foundation and concreting works D01-D12 | 73d | 2026-10-26 | 2027-01-20 | AS12090 SS, AS12009 |  |  |  | 42d | 2d | 3Construction | Pot room D | 1Civ | Potline building & Equipment |  |

| ID | WBS | Activity | Duration | Start | Finish | Predecessors | Total float | Free float | Text1 | Text2 | Text3 | Text4 |
| --- | --- | --- | --- | --- | --- | --- | --- | --- | --- | --- | --- | --- |
|  | STR | **Structural** |  | 2026-03-25 | 2027-04-01 |  |  |  |  |  |  |  |
| AS12160 |  | Steel structure erection D85-D90 | 94d | 2026-03-25 | 2026-07-13 | AS12030 FS+38d, AS14011 FS+7d | -1d | 0d | 3Construction | Pot room D | 2Str | Potline building & Equipment |
| AS12200 |  | Steel structure erection D73-D84 | 94d | 2026-03-25 | 2026-07-13 | AS12160 SS, AS12040 | -1d | 0d | 3Construction | Pot room D | 2Str | Potline building & Equipment |
| AS12190 |  | Rail erection D90-D85 | 13d | 2026-06-01 | 2026-06-15 | AS12160 SS+57d, A1210 SS+7d, AS9520 SS+6d, AS2031 | -1d | 0d | 3Construction | Pot room D | 2Str | Potline building & Equipment |
| AS12230 |  | Rail erection D73-D84 | 13d | 2026-06-01 | 2026-06-15 | AS12200 SS+57d, AS12190 SS | -1d | 0d | 3Construction | Pot room D | 2Str | Potline building & Equipment |
| AS12170 |  | Sheeting D90-D85 | 30d | 2026-06-11 | 2026-07-15 | AS12160 SS+66d | 19d | 0d | 3Construction | Pot room D | 2Str | Potline building & Equipment |
| AS12210 |  | Sheeting D73-D84 | 30d | 2026-06-11 | 2026-07-15 | AS12200 SS+66d, AS12170 SS | 21d | 2d | 3Construction | Pot room D | 2Str | Potline building & Equipment |
| AS12240 |  | Steel structure erection D61-D72 | 90d | 2026-06-25 | 2026-10-13 | AS12200 SS+78d, AS12050 | 41d | 0d | 3Construction | Pot room D | 2Str | Potline building & Equipment |
| AS12280 |  | Steel structure erection D49-D60 | 90d | 2026-06-25 | 2026-10-13 | AS12240 SS, AS12060 | 54d | 0d | 3Construction | Pot room D | 2Str | Potline building & Equipment |
| AS12180 |  | Roof ventilator D90-D85 | 10d | 2026-07-20 | 2026-07-30 | AS12170 FS+2d, A1260 SS+6d, A2360 | 19d | 0d | 3Construction | Pot room D | 2Str | Potline building & Equipment |
| AS12220 |  | Roof ventilator D73-D84 | 10d | 2026-07-20 | 2026-07-30 | AS12210, AS12180 SS | 19d |  | 3Construction | Pot room D | 2Str | Potline building & Equipment |
| AS12270 |  | Rail erection D61-D72 | 12d | 2026-08-17 | 2026-08-31 | AS12240 SS+43d, AS12230 | 66d | 0d | 3Construction | Pot room D | 2Str | Potline building & Equipment |
| AS12310 |  | Rail erection D49-D60 | 12d | 2026-08-17 | 2026-08-31 | AS12280 SS+43d, AS12270 SS | 102d | 37d | 3Construction | Pot room D | 2Str | Potline building & Equipment |
| AS12320 |  | Steel structure erection D37-D48 | 92d | 2026-08-25 | 2026-12-14 | AS12280 SS+50d, AS12070 | 54d | 0d | 3Construction | Pot room D | 2Str | Potline building & Equipment |
| AS12360 |  | Steel structure erection D25-D36 | 92d | 2026-08-25 | 2026-12-14 | AS12320 SS, AS12080 | 60d | 0d | 3Construction | Pot room D | 2Str | Potline building & Equipment |
| AS12250 |  | Sheeting D61-D72 | 28d | 2026-09-11 | 2026-10-15 | AS12240 SS+64d, AS12210 | 41d | 0d | 3Construction | Pot room D | 2Str | Potline building & Equipment |
| AS12290 |  | Sheeting D49-D60 | 28d | 2026-09-11 | 2026-10-15 | AS12280 SS+64d, AS12250 SS | 59d | 1d | 3Construction | Pot room D | 2Str | Potline building & Equipment |
| AS12350 |  | Rail erection D37-D48 | 13d | 2026-10-16 | 2026-10-30 | AS12320 SS+42d, AS12310 | 86d | 0d | 3Construction | Pot room D | 2Str | Potline building & Equipment |
| AS12390 |  | Rail erection D25-D36 | 13d | 2026-10-16 | 2026-10-30 | AS12360 SS+42d, AS12350 SS | 139d | 77d | 3Construction | Pot room D | 2Str | Potline building & Equipment |
| AS12260 |  | Roof ventilator D61-D72 | 10d | 2026-10-17 | 2026-10-28 | AS12250 FS+1d, AS12220 | 41d | 0d | 3Construction | Pot room D | 2Str | Potline building & Equipment |
| AS12300 |  | Roof ventilator D49-D60 | 10d | 2026-10-17 | 2026-10-28 | AS12290, AS12260 SS | 58d | 17d | 3Construction | Pot room D | 2Str | Potline building & Equipment |
| AS12330 |  | Sheeting D37-D48 | 30d | 2026-11-11 | 2026-12-15 | AS12320 SS+63d, AS12290 | 54d | 0d | 3Construction | Pot room D | 2Str | Potline building & Equipment |
| AS12370 |  | Sheeting D25-D36 | 30d | 2026-11-11 | 2026-12-15 | AS12360 SS+63d, AS12330 SS | 83d | 2d | 3Construction | Pot room D | 2Str | Potline building & Equipment |
| AS12400 |  | Steel structure erection D13-D24 | 90d | 2026-11-28 | 2027-03-17 | AS12360 SS+78d, AS12090 SS+26d | 60d | 0d | 3Construction | Pot room D | 2Str | Potline building & Equipment |
| AS12440 |  | Steel structure erection D01-D12 | 90d | 2026-11-28 | 2027-03-17 | AS12400 SS, AS12100 SS+26d | 92d | 0d | 3Construction | Pot room D | 2Str | Potline building & Equipment |
| AS12340 |  | Roof ventilator D37-D48 | 10d | 2026-12-18 | 2026-12-30 | AS12330 FS+2d, AS12300 | 54d | 0d | 3Construction | Pot room D | 2Str | Potline building & Equipment |
| AS12380 |  | Roof ventilator D25-D36 | 10d | 2026-12-18 | 2026-12-30 | AS12370, AS12340 SS | 81d | 37d | 3Construction | Pot room D | 2Str | Potline building & Equipment |
| AS12430 |  | Rail erection D13-D24 | 12d | 2027-01-16 | 2027-01-30 | AS12400 SS+41d, AS12390 SS | 89d | 0d | 3Construction | Pot room D | 2Str | Potline building & Equipment |
| AS12470 |  | Rail erection D01-D12 | 12d | 2027-01-16 | 2027-01-30 | AS12440 SS+41d, AS12430 SS | 138d | 85d | 3Construction | Pot room D | 2Str | Potline building & Equipment |
| AS12410 |  | Sheeting D13-D24 | 27d | 2027-02-15 | 2027-03-19 | AS12400 SS+65d, AS12370 | 60d | 0d | 3Construction | Pot room D | 2Str | Potline building & Equipment |
| AS12450 |  | Sheeting D01-D12 | 27d | 2027-02-15 | 2027-03-19 | AS12440 SS+65d, AS12410 SS | 95d | 1d | 3Construction | Pot room D | 2Str | Potline building & Equipment |
| AS12420 |  | Roof ventilator D13-D24 | 10d | 2027-03-22 | 2027-04-01 | AS12410 FS+1d, AS12380 | 60d | 0d | 3Construction | Pot room D | 2Str | Potline building & Equipment |
| AS12460 |  | Roof ventilator D01-D12 | 10d | 2027-03-22 | 2027-04-01 | AS12450, AS12420 SS, A1600 | 94d | 49d | 3Construction | Pot room D | 2Str | Potline building & Equipment |

| ID | WBS | Activity | Duration | Start | Finish | Predecessors | Total float | Free float | Text1 | Text2 | Text3 | Text4 |
| --- | --- | --- | --- | --- | --- | --- | --- | --- | --- | --- | --- | --- |
|  | ME | **Mechanical** |  | 2026-06-16 | 2027-10-15 |  |  |  |  |  |  |  |
| AS11350 |  | EOT | 39d | 2026-06-16 | 2026-07-31 | AS7400, AS12190, AS12230, AS2031, AS13371 SS | -1d | 0d | 3Construction | Pot room D | 3Mech | Potline building & Equipment |
| AS11352 |  | Cathode Sealing | 312d | 2026-07-09 | 2027-07-20 | A1090 SS+26d, A2050 SS, A2300 | 11d |  | 3Construction | Pot room D | 3Mech | Potline building & Equipment |
| AS11351 |  | Pot shell D85-D90 | 17d | 2026-08-20 | 2026-09-09 | AS11350, AS9391 SS+26d, A1180, AS11421.01 SS+11d | -1d | 0d | 3Construction | Pot room D | 3Mech | Potline building & Equipment |
| AS11353 |  | Pot Lining D85-D90 | 21d | 2026-08-24 | 2026-09-18 | AS11351 SS+3d, AS7340 SS+26d, AS11352 SS+26d, AS12180, AS12220, AS13661, AS13791, AS13841 | 0d | 1d | 3Construction | Pot room D | 3Mech | Potline building & Equipment |
| AS11410 |  | Utility & Piping | 312d | 2026-09-08 | 2027-09-16 | AS3240, AS12240 SS, AS2031, AS11100 SS | 10d | 11d | 3Construction | Pot room D | 3Mech | Potline building & Equipment |
| AS11351.01 |  | Pot shell D79-D84 | 18d | 2026-09-10 | 2026-10-01 | AS11421.02 SS+3d, AS11351 | -1d | 0d | 3Construction | Pot room D | 3Mech | Potline building & Equipment |
| AS11353.02 |  | Pot Lining D79-D84 | 21d | 2026-09-14 | 2026-10-09 | AS11351.01 SS+3d, AS12220, AS11353 SS+16d | -1d | 0d | 3Construction | Pot room D | 3Mech | Potline building & Equipment |
| AS11430 |  | FCN Installation | 290d | 2026-09-22 | 2027-09-03 | AS11351 SS+26d, A1140, AS12600 SS+26d, AS2031 | 21d | 22d | 3Construction | Pot room D | 3Mech | Potline building & Equipment |
| AS11351.02 |  | Pot shell D73-D78 | 19d | 2026-10-03 | 2026-10-24 | AS11351.01, AS11421.03 SS+3d | 32d | 0d | 3Construction | Pot room D | 3Mech | Potline building & Equipment |
| AS11353.03 |  | Pot Lining D73-D78 | 22d | 2026-10-07 | 2026-10-31 | AS11351.02 SS+3d, AS11353.02 SS+18d | 41d | 0d | 3Construction | Pot room D | 3Mech | Potline building & Equipment |
| AS11354 |  | Pot Superstructure & accessories D85-D90 | 25d | 2026-10-10 | 2026-11-09 | AS3733 SS+6d, AS9401 SS+6d, AS11353, AS11353.02 | -1d | 0d | 3Construction | Pot room D | 3Mech | Potline building & Equipment |
| AS11351.03 |  | Pot shell D67-D72 | 17d | 2026-10-26 | 2026-11-14 | AS11351.02, AS11421.04 SS | 32d | 0d | 3Construction | Pot room D | 3Mech | Potline building & Equipment |
| AS11353.04 |  | Pot Lining D67-D72 | 20d | 2026-10-29 | 2026-11-21 | AS11351.03 SS+3d, AS12260, AS11353.03 SS+19d | 41d | 0d | 3Construction | Pot room D | 3Mech | Potline building & Equipment |
| AS11354.01 |  | Pot Superstructure & accessories D79-D84 | 25d | 2026-11-09 | 2026-12-07 | AS11354 SS+24d, AS11353.02 SS+3d | -1d | 0d | 3Construction | Pot room D | 3Mech | Potline building & Equipment |
| AS11365 |  | Pot Hoods | 284d | 2026-11-10 | 2027-10-15 | A1550 SS+12d, AS11354 | 11d | 12d | 3Construction | Pot room D | 3Mech | Potline building & Equipment |
| AS11351.04 |  | Pot shell D61-D66 | 18d | 2026-11-16 | 2026-12-05 | AS11351.03, AS11421.05 SS+3d | 32d | 0d | 3Construction | Pot room D | 3Mech | Potline building & Equipment |
| AS11353.05 |  | Pot Lining D61-D66 | 21d | 2026-11-19 | 2026-12-12 | AS11351.04 SS+3d, AS12300, AS11353.04 SS+17d | 41d | 0d | 3Construction | Pot room D | 3Mech | Potline building & Equipment |
| AS11351.05 |  | Pot shell D52-D60 | 27d | 2026-12-07 | 2027-01-07 | AS11351.04, AS11421.06 SS+10d | 32d | 0d | 3Construction | Pot room D | 3Mech | Potline building & Equipment |
| AS11354.02 |  | Pot Superstructure & accessories D73-D78 | 25d | 2026-12-07 | 2027-01-05 | AS11354.01 SS+24d, AS11353.03 SS+6d | -1d | 0d | 3Construction | Pot room D | 3Mech | Potline building & Equipment |
| AS11353.06 |  | Pot Lining D52-D60 | 30d | 2026-12-10 | 2027-01-14 | AS11351.05 SS+3d, AS12300, AS11353.05 SS+18d | 44d | 0d | 3Construction | Pot room D | 3Mech | Potline building & Equipment |
| AS11354.03 |  | Pot Superstructure & accessories D67-D72 | 25d | 2027-01-05 | 2027-02-03 | AS11354.02 SS+24d, AS11353.04 SS+12d | -1d | 0d | 3Construction | Pot room D | 3Mech | Potline building & Equipment |
| AS11351.06 |  | Pot shell D43-D51 | 27d | 2027-01-08 | 2027-02-09 | AS11351.05, AS11421.07 SS+3d | 32d | 0d | 3Construction | Pot room D | 3Mech | Potline building & Equipment |
| AS11353.07 |  | Pot Lining D43-D51 | 30d | 2027-01-12 | 2027-02-16 | AS11351.06 SS+3d, AS12340, AS11353.06 SS+27d | 44d | 0d | 3Construction | Pot room D | 3Mech | Potline building & Equipment |
| AS11354.04 |  | Pot Superstructure & accessories D61-D66 | 20d | 2027-02-03 | 2027-02-25 | AS11354.03 SS+24d, AS11353.05 | -1d | 0d | 3Construction | Pot room D | 3Mech | Potline building & Equipment |
| AS11351.07 |  | Pot shell D34-D42 | 26d | 2027-02-10 | 2027-03-12 | AS11351.06, AS11421.08 SS+3d | 32d | 0d | 3Construction | Pot room D | 3Mech | Potline building & Equipment |
| AS11353.08 |  | Pot Lining D34-D42 | 28d | 2027-02-13 | 2027-03-19 | AS11351.07 SS+3d, AS12380, AS11353.07 SS+27d | 44d | 0d | 3Construction | Pot room D | 3Mech | Potline building & Equipment |
| AS11354.05 |  | Pot Superstructure & accessories D52-D60 | 28d | 2027-02-24 | 2027-03-30 | AS11354.04 SS+18d, AS11353.06 SS+14d | -1d | 0d | 3Construction | Pot room D | 3Mech | Potline building & Equipment |
| AS11351.08 |  | Pot shell D25-D33 | 26d | 2027-03-13 | 2027-04-13 | AS11351.07, AS11421.09 SS+3d | 32d | 0d | 3Construction | Pot room D | 3Mech | Potline building & Equipment |
| AS11353.09 |  | Pot Lining D25-D33 | 30d | 2027-03-17 | 2027-04-20 | AS11351.08 SS+2d, AS12380, AS11353.08 SS+25d | 44d | 12d | 3Construction | Pot room D | 3Mech | Potline building & Equipment |
| AS11354.06 |  | Pot Superstructure & accessories D43-D51 | 29d | 2027-03-29 | 2027-04-30 | AS11354.05 SS+26d, AS11353.07 SS+6d | -1d | 0d | 3Construction | Pot room D | 3Mech | Potline building & Equipment |
| AS11351.09 |  | Pot shell D19-D24 | 18d | 2027-04-14 | 2027-05-05 | AS11351.08, AS11421.10 SS+3d | 32d | 0d | 3Construction | Pot room D | 3Mech | Potline building & Equipment |
| AS11354.07 |  | Pot Superstructure & accessories D34-D42 | 29d | 2027-04-30 | 2027-06-03 | AS11354.06 SS+28d, AS11353.08 SS+18d | -1d | 0d | 3Construction | Pot room D | 3Mech | Potline building & Equipment |
| AS11351.10 |  | Pot shell D13-D18 | 18d | 2027-05-06 | 2027-05-26 | AS11351.09, AS11421.11 SS+3d | 37d | 0d | 3Construction | Pot room D | 3Mech | Potline building & Equipment |
| AS11353.10 |  | Pot Lining D19-D24 | 18d | 2027-05-06 | 2027-05-26 | AS11351.09, AS12420, AS11353.09 | 32d | 0d | 3Construction | Pot room D | 3Mech | Potline building & Equipment |
| AS11353.11 |  | Pot Lining D13-D18 | 21d | 2027-05-10 | 2027-06-02 | AS11351.10 SS+3d, AS12420, AS11353.10 SS+3d | 37d | 0d | 3Construction | Pot room D | 3Mech | Potline building & Equipment |
| AS11470 |  | HDPS Connections | 90d | 2027-05-20 | 2027-09-02 | AS11351 SS, AS9431 SS+62d | 22d | 23d | 3Construction | Pot room D | 3Mech | Potline building & Equipment |
| AS11351.11 |  | Pot shell D07-D12 | 18d | 2027-05-27 | 2027-06-16 | AS11351.10, AS11421.12 SS+3d | 45d | 0d | 3Construction | Pot room D | 3Mech | Potline building & Equipment |
| AS11353.12 |  | Pot Lining D07-D12 | 21d | 2027-05-31 | 2027-06-23 | AS11351.11 SS+3d, AS12460, AS11353.11 SS+18d | 45d | 0d | 3Construction | Pot room D | 3Mech | Potline building & Equipment |
| AS11354.08 |  | Pot Superstructure & accessories D25-D33 | 30d | 2027-06-02 | 2027-07-06 | AS11354.07 SS+27d, AS11353.09 SS+6d | -1d | 0d | 3Construction | Pot room D | 3Mech | Potline building & Equipment |
| AS11351.12 |  | Pot shell D01-D06 | 18d | 2027-06-17 | 2027-07-07 | AS11351.11, AS11421.13 SS+3d | 45d | 0d | 3Construction | Pot room D | 3Mech | Potline building & Equipment |
| AS11353.13 |  | Pot Lining D01-D06 | 21d | 2027-06-21 | 2027-07-14 | AS11351.12 SS+3d, AS12460, AS11353.12 SS+18d | 45d | 46d | 3Construction | Pot room D | 3Mech | Potline building & Equipment |
| AS11363 |  | PTA Assembly and erection (3) | 39d | 2027-07-02 | 2027-08-16 | AS11346 SS+26d | 10d | 0d | 3Construction | Pot room D | 3Mech | Potline building & Equipment |
| AS11354.09 |  | Pot Superstructure & accessories D16-D24 | 30d | 2027-07-05 | 2027-08-07 | AS11354.08 SS+28d, AS11353.10, AS11353.11 SS+10d | -1d | 0d | 3Construction | Pot room D | 3Mech | Potline building & Equipment |
| AS11364 |  | PTA Assembly and erection (4) | 39d | 2027-08-02 | 2027-09-16 | AS11363 SS+26d | 10d | 11d | 3Construction | Pot room D | 3Mech | Potline building & Equipment |
| AS11354.10 |  | Pot Superstructure & accessories D07-D15 | 28d | 2027-08-06 | 2027-09-08 | AS11354.09 SS+28d, AS11353.11, AS11353.12 SS+10d | -1d | 0d | 3Construction | Pot room D | 3Mech | Potline building & Equipment |
| AS11354.12 |  | Pot Superstructure & accessories D01-D06 | 19d | 2027-09-08 | 2027-09-30 | AS11353.13, AS11354.10 SS+27d, AS12150 | -1d | 0d | 3Construction | Pot room D | 3Mech | Potline building & Equipment |

| ID | WBS | Activity | Duration | Start | Finish | Predecessors | Total float | Free float | Text1 | Text2 | Text3 | Text4 |
| --- | --- | --- | --- | --- | --- | --- | --- | --- | --- | --- | --- | --- |
|  | EI | **Electrical & Instrumentation** |  | 2026-03-13 | 2027-07-29 |  |  |  |  |  |  |  |
| AS11419 |  | Electrical & Instrumentation works | 420d | 2026-03-13 | 2027-07-29 | AS4070, AS4060, AS9972 SS+12d, AS10981 SS+25d, AS2041 | 51d | 52d | 3Construction | Pot room D | 4EI | Potline building & Equipment |
| AS11420 |  | Bus Bar Supply | 351d | 2026-05-25 | 2027-07-20 | AS11401 | 9d | 10d | 3Construction | Pot room D | 4EI | Potline building & Equipment |
| AS11421.01 |  | Bus bar erection D85-D90 | 18d | 2026-08-06 | 2026-08-27 | AS11420 SS+52d, AS12030, AS12190, AS11350 FS+4d | -1d | 0d | 3Construction | Pot room D | 4EI | Potline building & Equipment |
| AS11421.02 |  | Bus bar erection D79-D84 | 17d | 2026-08-29 | 2026-09-18 | AS11421.01, AS12040, AS12230 | 6d | 0d | 3Construction | Pot room D | 4EI | Potline building & Equipment |
| AS11421.03 |  | Bus bar erection D73-D78 | 18d | 2026-09-19 | 2026-10-10 | AS11421.02, AS12040, AS12230 | 33d | 0d | 3Construction | Pot room D | 4EI | Potline building & Equipment |
| AS11421.04 |  | Bus bar erection D67-D72 | 19d | 2026-10-12 | 2026-11-02 | AS11421.03, AS12050, AS12270 | 33d | 0d | 3Construction | Pot room D | 4EI | Potline building & Equipment |
| AS11421.05 |  | Bus bar erection D61-D66 | 17d | 2026-11-03 | 2026-11-23 | AS11421.04, AS12050, AS12270 | 33d | 0d | 3Construction | Pot room D | 4EI | Potline building & Equipment |
| AS11421.06 |  | Bus bar erection D52-D60 | 27d | 2026-11-24 | 2026-12-24 | AS11421.05, AS12060, AS12310 | 33d | 0d | 3Construction | Pot room D | 4EI | Potline building & Equipment |
| AS11421.07 |  | Bus bar erection D43-D51 | 27d | 2026-12-26 | 2027-01-27 | AS11421.06, AS12060, AS12070, AS12310, AS12350 | 40d | 0d | 3Construction | Pot room D | 4EI | Potline building & Equipment |
| AS11421.08 |  | Bus bar erection D34-D42 | 26d | 2027-01-28 | 2027-02-27 | AS11421.07, AS12070, AS12080, AS12350 | 40d | 0d | 3Construction | Pot room D | 4EI | Potline building & Equipment |
| AS11421.09 |  | Bus bar erection D25-D33 | 26d | 2027-03-01 | 2027-03-31 | AS11421.08, AS12080, AS12390 | 40d | 0d | 3Construction | Pot room D | 4EI | Potline building & Equipment |
| AS11432 |  | Pot local control panels | 87d | 2027-03-31 | 2027-07-10 | AS3793, AS11354 SS+78d | 67d | 68d | 3Construction | Pot room D | 4EI | Potline building & Equipment |
| AS11421.10 |  | Bus bar erection D19-D24 | 18d | 2027-04-01 | 2027-04-21 | AS11421.09, AS12090, AS12430 | 40d | 0d | 3Construction | Pot room D | 4EI | Potline building & Equipment |
| AS11421.11 |  | Bus bar erection D13-D18 | 18d | 2027-04-22 | 2027-05-13 | AS11421.10, AS12090, AS12430 | 45d | 0d | 3Construction | Pot room D | 4EI | Potline building & Equipment |
| AS11421.12 |  | Bus bar erection D07-D12 | 18d | 2027-05-14 | 2027-06-03 | AS11421.11, AS12100, AS12470 | 53d | 0d | 3Construction | Pot room D | 4EI | Potline building & Equipment |
| AS11421.13 |  | Bus bar erection D01-D06 | 18d | 2027-06-04 | 2027-06-24 | AS11421.12, AS12100, AS12470 | 53d | 8d | 3Construction | Pot room D | 4EI | Potline building & Equipment |
|  | EP | **End Passage** |  | 2026-01-01 | 2027-06-10 |  |  |  |  |  |  |  |
|  | CIVIL | **Civil** |  | 2026-01-01 | 2027-01-27 |  |  |  |  |  |  |  |
| AS12500 |  | Foundation and concreting works (Infornt of C pot) | 156d | 2026-01-01 | 2026-07-04 | AS11380 SS+52d, AS1940.22 | 101d | 0d | 3Construction | End Passage | 1Civ | Potline building & Equipment |
| AS12510 |  | Foundation and concreting works (Infornt of D pot) | 156d | 2026-01-16 | 2026-07-21 | AS12030 SS+52d | 88d | 0d | 3Construction | End Passage | 1Civ | Potline building & Equipment |
| AS12760 |  | Foundation and concreting works (Between C & D) | 156d | 2026-07-22 | 2027-01-27 | AS12500, AS12510 | 88d | 0d | 3Construction | End Passage | 1Civ | Potline building & Equipment |
|  | STR | **Structural** |  | 2026-07-06 | 2027-04-19 |  |  |  |  |  |  |  |
| AS12770 |  | Steel structure erection (Infornt of C pot) | 60d | 2026-07-06 | 2026-09-16 | AS12500 | 106d | 13d | 3Construction | End Passage | 2Str | Potline building & Equipment |
| AS12940 |  | Steel structure erection (Infornt of D pot) | 60d | 2026-07-22 | 2026-10-03 | AS12510 | 93d | 0d | 3Construction | End Passage | 2Str | Potline building & Equipment |
| AS12950 |  | Steel structure erection (Between C & D) | 120d | 2026-11-26 | 2027-04-19 | AS12760 SS+104d | 111d | 0d | 3Construction | End Passage | 2Str | Potline building & Equipment |

| ID | WBS | Activity | Duration | Start | Finish | Predecessors | Total float | Free float | Text1 | Text2 | Text3 | Text4 |
| --- | --- | --- | --- | --- | --- | --- | --- | --- | --- | --- | --- | --- |
|  | ME | **Mechanical** |  | 2027-04-20 | 2027-05-20 |  |  |  |  |  |  |  |
| AS11630 |  | Utility & Piping | 26d | 2027-04-20 | 2027-05-20 | AS12770, AS12940, AS12950, AS2031 | 111d | 112d | 3Construction | End Passage | 3Mech | Potline building & Equipment |
|  | EI | **Electrical & Instrumentation** |  | 2026-07-06 | 2027-06-10 |  |  |  |  |  |  |  |
| AS12960 |  | Bus bar erection (Feed In) | 156d | 2026-07-06 | 2027-01-11 | AS12500 | 218d | 219d | 3Construction | End Passage | 4EI | Potline building & Equipment |
| AS12970 |  | Bus bar erection (Feed Out) | 156d | 2026-07-22 | 2027-01-27 | AS12510 | 205d | 206d | 3Construction | End Passage | 4EI | Potline building & Equipment |
| AS11640 |  | Electrical & Instrumentation works | 208d | 2026-10-05 | 2027-06-10 | AS9972 SS, AS12770, AS12940, AS2041 | 93d | 94d | 3Construction | End Passage | 4EI | Potline building & Equipment |
|  | CP | **Central Passage** |  | 2025-11-28 | 2027-05-31 |  |  |  |  |  |  |  |
|  | CIVIL | **Civil** |  | 2025-11-28 | 2026-11-25 |  |  |  |  |  |  |  |
| AS12980 |  | Foundation and concreting works (Infornt of C pot) | 156d | 2025-11-28 | 2026-06-02 | AS11380 SS+26d | 15d | 0d | 3Construction | Central Passage | 1Civ | Potline building & Equipment |
| AS12990 |  | Foundation and concreting works (Infornt of D pot) | 156d | 2026-01-16 | 2026-07-21 | AS12030 SS+52d | 101d | 0d | 3Construction | Central Passage | 1Civ | Potline building & Equipment |
| AS13000 |  | Foundation and concreting works (Between C & D) | 156d | 2026-05-21 | 2026-11-25 | AS12980 SS+104d, AS12990 SS+104d | 101d | 0d | 3Construction | Central Passage | 1Civ | Potline building & Equipment |
|  | STR | **Structural** |  | 2026-06-03 | 2026-12-26 |  |  |  |  |  |  |  |
| AS13010 |  | Steel structure erection (Infornt of C pot) | 52d | 2026-06-03 | 2026-08-03 | AS12980 | 15d | 0d | 3Construction | Central Passage | 2Str | Potline building & Equipment |
| AS13020 |  | Steel structure erection (Infornt of D pot) | 52d | 2026-07-22 | 2026-09-23 | AS12990 | 257d | 155d | 3Construction | Central Passage | 2Str | Potline building & Equipment |
| AS13030 |  | Steel structure erection (Between C & D) | 78d | 2026-09-24 | 2026-12-26 | AS13000 SS+104d | 257d | 155d | 3Construction | Central Passage | 2Str | Potline building & Equipment |
|  | ME | **Mechanical** |  | 2027-02-27 | 2027-05-31 |  |  |  |  |  |  |  |
| AS11560 |  | Equipment erection | 39d | 2027-02-27 | 2027-04-14 | AS7390, AS13000, AS2031 | 24d | 0d | 3Construction | Central Passage | 3Mech | Potline building & Equipment |
| AS11580 |  | Utility & Piping | 52d | 2027-03-31 | 2027-05-31 | AS11560 SS+26d, AS13030 SS, AS13020, AS13010, AS2031 | 102d | 103d | 3Construction | Central Passage | 3Mech | Potline building & Equipment |
|  | EI | **Electrical & Instrumentation** |  | 2026-06-03 | 2027-04-24 |  |  |  |  |  |  |  |
| AS11590 |  | Electrical & Instrumentation works | 270d | 2026-06-03 | 2027-04-24 | AS9972 SS, AS13010 SS, AS2041 | 15d | 0d | 3Construction | Central Passage | 4EI | Potline building & Equipment |
| AS13050 |  | Bus bar erection (Infornt of C pot) | 26d | 2026-06-03 | 2026-07-02 | AS12980 | 324d | 119d | 3Construction | Central Passage | 4EI | Potline building & Equipment |
| AS13060 |  | Bus bar erection (Infornt of D pot) | 26d | 2026-07-22 | 2026-08-21 | AS12990 | 283d | 78d | 3Construction | Central Passage | 4EI | Potline building & Equipment |
| AS13061 |  | Bus bar erection (Between C & D) | 52d | 2026-11-26 | 2027-01-27 | AS13000, AS13050, AS13060 | 205d | 206d | 3Construction | Central Passage | 4EI | Potline building & Equipment |
|  | MPB | **PTA Maintenance and PTA Parking bay** |  | 2026-02-18 | 2027-08-11 |  |  |  |  |  |  |  |
|  | CIVIL | **Civil** |  | 2026-02-18 | 2026-08-22 |  |  |  |  |  |  |  |
| AS11550 |  | Foundation and concreting works | 156d | 2026-02-18 | 2026-08-22 | AS5410, AS12990 SS | 100d | 0d | 3Construction | PTA Maintenance and PTA Parking bay | 1Civ | Potline building & Equipment |

| ID | WBS | Activity | Duration | Start | Finish | Predecessors | Remaining | Planned start | Planned finish | Total float | Free float | Text1 | Text2 | Text3 |
| --- | --- | --- | --- | --- | --- | --- | --- | --- | --- | --- | --- | --- | --- | --- |
|  | STR | **Structural** |  | 2026-08-24 | 2027-01-28 |  |  |  |  |  |  |  |  |  |
| AS11570 |  | Steel structure erection | 130d | 2026-08-24 | 2027-01-28 | AS11550, AS4870 FS+104d |  |  |  | 139d | 0d | 3Construction | PTA Maintenance and PTA Parking bay | 2Str |
|  | ME | **Mechanical** |  | 2027-01-29 | 2027-03-17 |  |  |  |  |  |  |  |  |  |
| AS11600 |  | Equipment erection | 39d | 2027-01-29 | 2027-03-17 | AS11570, AS2031 |  |  |  | 139d | 99d | 3Construction | PTA Maintenance and PTA Parking bay | 3Mech |
|  | EI | **Electrical & Instrumentation** |  | 2027-07-13 | 2027-08-11 |  |  |  |  |  |  |  |  |  |
| AS11620 |  | Electrical & Instrumentation works | 26d | 2027-07-13 | 2027-08-11 | AS4090, AS4100, AS9972, AS11090, AS11570 SS, AS11600, AS2041 |  |  |  | 40d | 41d | 3Construction | PTA Maintenance and PTA Parking bay | 4EI |
|  | SS | **PTA Sub-station** |  | 2026-03-16 | 2027-07-12 |  |  |  |  |  |  |  |  |  |
|  | CIVIL | **Civil** |  | 2026-03-16 | 2027-01-21 |  |  |  |  |  |  |  |  |  |
| AS9940 |  | Foundation and concreting works | 260d | 2026-03-16 | 2027-01-21 | AS9700 FS+52d, AS11550 SS, AS1981 FS+39d |  |  |  | 79d | 39d | 3Construction | PTA Sub-station | 1Civ |
|  | EI | **Electrical & Instrumentation** |  | 2027-01-07 | 2027-07-12 |  |  |  |  |  |  |  |  |  |
| AS11090 |  | Electrical & Instrumentation works | 156d | 2027-01-07 | 2027-07-12 | AS9940 SS+208d, AS9780 SS+78d, AS9790, AS13931 |  |  |  | 40d | 0d | 3Construction | PTA Sub-station | 4EI |
|  | PCR | **Process control room (addition in existing facilities)** |  | 2026-05-29 | 2027-04-29 |  |  |  |  |  |  |  |  |  |
|  | CIVIL | **Civil** |  | 2026-05-29 | 2026-06-27 |  |  |  |  |  |  |  |  |  |
| AS4650 |  | Foundation and concreting works | 26d | 2026-05-29 | 2026-06-27 | AS2100, AS4550 FS+52d |  |  |  | 354d | 226d | 3Construction | Process control room (addition in existing facilities) | 1Civ |
|  | EI | **Electrical & Instrumentation** |  | 2027-03-31 | 2027-04-29 |  |  |  |  |  |  |  |  |  |
| AS5260 |  | Electrical & Instrumentation works | 26d | 2027-03-31 | 2027-04-29 | AS4650, AS4790, AS3793, AS2041 |  |  |  | 128d | 129d | 3Construction | Process control room (addition in existing facilities) | 4EI |
|  | OU | **Other utilities (DG Shed, Rest Rooms)** |  | 2026-10-21 | 2027-03-26 |  |  |  |  |  |  |  |  |  |
|  | CIVIL | **Civil** |  | 2026-10-21 | 2026-12-21 |  |  |  |  |  |  |  |  |  |
| AS5370 |  | Foundation and concreting works DG Shed | 52d | 2026-10-21 | 2026-12-21 | AS4570, AS2880, AS4580, AS11680 |  |  |  | 209d | 0d | 3Construction | Other utilities (DG Shed, Rest Rooms) | 1Civ |
|  | 1 | **Structural** |  | 2026-12-22 | 2027-03-26 |  |  |  |  |  |  |  |  |  |
| A1270 |  | Steel structure erection | 78d | 2026-12-22 | 2027-03-26 | AS5370, A1290, AS9500 SS |  |  |  | 209d | 0d | 3Construction | Other utilities (DG Shed, Rest Rooms) | 2Str |
|  | EI | **Electrical & Instrumentation** |  | 2026-12-22 | 2027-01-21 |  |  |  |  |  |  |  |  |  |
| AS6440 |  | Electrical & Instrumentation works DG Shed | 26d | 2026-12-22 | 2027-01-21 | AS5370, AS2890, AS2900, AS2920, AS2930, AS9972, A1270 SS, AS2041, AS13871 |  |  |  | 209d | 210d | 3Construction | Other utilities (DG Shed, Rest Rooms) | 4EI |
|  | SSR | **Conversion sub-station (220 kV switchyard and Rectifier Substation)** |  | 2025-09-16 | 2027-10-30 |  |  |  |  |  |  |  |  |  |
|  | RG | **Rectifier Groups** |  | 2025-09-16 | 2027-10-05 |  |  |  |  |  |  |  |  |  |
|  | CIVIL | **Civil** |  | 2025-09-16 | 2027-02-11 |  |  |  |  |  |  |  |  |  |
| AS10050 |  | Area Grading (210 to 207) exculding Nallah area | 25d | 2025-09-16 A | 2025-11-29 | AS1923, AS1880 | 25d | 2025-09-30 | 2025-10-30 | 131d | 87d | 3Construction | Rectifier Group | 1Civ |
| AS10140 |  | Area Grading (210 to 207) in Nallah area | 25d | 2025-12-01 | 2025-12-30 | AS1923.01 |  |  |  | 131d | 87d | 3Construction | Rectifier Group | 1Civ |
| AS9570 |  | Foundation and concreting works | 277d | 2026-03-16 | 2027-02-11 | AS10050, AS10140 SS, AS7920 FS+74d, AS8040 |  |  |  | 44d | 45d | 3Construction | Rectifier Group | 1Civ |

Notes:
- AS11570: Text4: Potline building & Equipment
- AS11600: Text4: Potline building & Equipment
- AS11620: Text4: Potline building & Equipment
- AS9940: Text4: Potline building & Equipment
- AS11090: Text4: Potline building & Equipment
- AS4650: Text4: Potline building & Equipment
- AS5260: Text4: Potline building & Equipment
- AS5370: Text4: Potline building & Equipment
- A1270: Text4: Potline building & Equipment
- AS6440: Text4: Potline building & Equipment
- AS10050: Text4: Conversion sub-station (220 kV switchyard and Rectifier Substation)
- AS10140: Text4: Conversion sub-station (220 kV switchyard and Rectifier Substation)
- AS9570: Text4: Conversion sub-station (220 kV switchyard and Rectifier Substation)

| ID | WBS | Activity | Duration | Start | Finish | Predecessors | Total float | Free float | Text1 | Text2 | Text3 | Agency |
| --- | --- | --- | --- | --- | --- | --- | --- | --- | --- | --- | --- | --- |
|  | EI | **Electrical & Instrumentation** |  | 2027-04-08 | 2027-09-23 |  |  |  |  |  |  |  |
| AS10780 |  | Electrical & Instrumentation works - Rectifier Group | 142d | 2027-04-08 | 2027-09-23 | AS9570, AS11260 SS+51d, AS9010, AS9020, AS8980, AS8990 | -1d | 0d | 3Construction | Rectifier Group | 4EI |  |
|  | 1 | **Group 1** |  | 2027-04-14 | 2027-09-16 |  |  |  |  |  |  |  |
| A2790 |  | LCP installation | 5d | 2027-04-14 | 2027-04-19 | A3450 | 98d | 0d |  |  |  |  |
| A2800 |  | Rectifier installation | 9d | 2027-04-20 | 2027-04-29 | A2790 | 120d | 114d |  |  |  | GEV |
| A2870 |  | LV cable pulling | 10d | 2027-04-20 | 2027-04-30 | A2790 | 273d | 113d |  |  |  | GEV |
| A2810 |  | Rectifier Transformer Installation | 27d | 2027-05-29 | 2027-06-29 | A3290 FS+1d | 47d | 41d |  |  |  | GEV |
| A2820 |  | Regulating Transformer Installation | 28d | 2027-07-15 | 2027-08-16 | A3300 FS+1d | 6d | 0d |  |  |  | GEV |
| A2830 |  | Rectifier Transformer cooler installation | 6d | 2027-08-17 | 2027-08-23 | A2810, A2820 | 6d | 0d |  |  |  | GEV |
| A2840 |  | Regulating Transformer Cooler Installation | 5d | 2027-08-24 | 2027-08-30 | A2830 | 6d | 0d |  |  |  | GEV |
| A2850 |  | Oil treatment | 3d | 2027-08-31 | 2027-09-02 | A2840 | 6d | 0d |  |  |  | GEV |
| A2860 |  | Transformer tests | 7d | 2027-09-03 | 2027-09-10 | A2850 | 6d | 0d |  |  |  | GEV |
| A2880 |  | Rectifier AC & DC connections | 4d | 2027-09-13 | 2027-09-16 | A2860 FS+1d, A2870 | 160d | 161d |  |  |  | GEV |
|  | 2 | **Group 2** |  | 2027-04-20 | 2027-09-28 |  |  |  |  |  |  |  |
| A2890 |  | LCP installation | 6d | 2027-04-20 | 2027-04-26 | A3460, A2790 | 98d | 0d |  |  |  | GEV |
| A2900 |  | Rectifier installation | 10d | 2027-04-27 | 2027-05-08 | A2890 | 113d | 108d |  |  |  | GEV |
| A2910 |  | Rectifier Transformer Installation | 27d | 2027-05-29 | 2027-06-29 | A3310 FS+1d | 46d | 41d |  |  |  | GEV |
| A2920 |  | Regulating Transformer Installation | 28d | 2027-07-15 | 2027-08-16 | A3320 FS+1d | 5d | 0d |  |  |  | GEV |
| A2930 |  | Rectifier Transformer cooler installation | 6d | 2027-08-17 | 2027-08-23 | A2910, A2920 | 5d | 0d |  |  |  | GEV |
| A2940 |  | Regulating Transformer Cooler Installation | 5d | 2027-08-24 | 2027-08-30 | A2930 | 5d | 0d |  |  |  | GEV |
| A2950 |  | Oil treatment | 3d | 2027-08-31 | 2027-09-02 | A2940 | 5d | 0d |  |  |  | GEV |
| A2960 |  | Transformer tests | 9d | 2027-09-03 | 2027-09-13 | A2950 | 5d | 0d |  |  |  | GEV |
| A2970 |  | LV cable pulling | 6d | 2027-09-14 | 2027-09-21 | A2960 | 151d | 0d |  |  |  | GEV |
| A2980 |  | Rectifier AC & DC connections | 6d | 2027-09-22 | 2027-09-28 | A2970 | 151d | 152d |  |  |  | GEV |

Notes:
- AS10780: Text4: Conversion sub-station (220 kV switchyard and Rectifier Substation)

| ID | WBS | Activity | Duration | Start | Finish | Predecessors | Total float | Free float | Agency |
| --- | --- | --- | --- | --- | --- | --- | --- | --- | --- |
|  | 3 | **Group 3** |  | 2027-04-27 | 2027-09-29 |  |  |  |  |
| A2990 |  | LCP installation | 6d | 2027-04-27 | 2027-05-04 | A3470, A2890 | 98d | 0d | GEV |
| A3000 |  | Rectifier installation | 10d | 2027-05-05 | 2027-05-15 | A2990 | 109d | 102d | GEV |
| A3070 |  | LV cable pulling | 5d | 2027-05-05 | 2027-05-10 | A2990 | 257d | 107d | GEV |
| A3010 |  | Rectifier Transformer Installation | 28d | 2027-06-03 | 2027-07-05 | A3330 | 43d | 36d | GEV |
| A3020 |  | Regulating Transformer Installation | 28d | 2027-07-15 | 2027-08-16 | A3340 FS+1d | 7d | 0d | GEV |
| A3030 |  | Rectifier Transformer cooler installation | 6d | 2027-08-17 | 2027-08-23 | A3010, A3020 | 7d | 0d | GEV |
| A3040 |  | Regulating Transformer Cooler Installation | 5d | 2027-08-24 | 2027-08-30 | A3030 | 7d | 0d | GEV |
| A3050 |  | Oil treatment | 3d | 2027-08-31 | 2027-09-02 | A3040 | 7d | 0d | GEV |
| A3060 |  | Transformer tests | 9d | 2027-09-03 | 2027-09-13 | A3050 | 7d | 0d | GEV |
| A3080 |  | Rectifier AC & DC connections | 13d | 2027-09-14 | 2027-09-29 | A3060, A3070 | 150d | 151d | GEV |
|  | 4 | **Group 4** |  | 2027-05-05 | 2027-10-01 |  |  |  |  |
| A3090 |  | LCP installation | 6d | 2027-05-05 | 2027-05-11 | A3480, A2990 | 98d | 0d | GEV |
| A3100 |  | Rectifier installation | 10d | 2027-05-12 | 2027-05-22 | A3090 | 102d | 93d | GEV |
| A3110 |  | Rectifier Transformer Installation | 28d | 2027-06-03 | 2027-07-05 | A3350 | 45d | 36d | GEV |
| A3120 |  | Regulating Transformer Installation | 28d | 2027-07-15 | 2027-08-16 | A3360 FS+1d | 9d | 0d | GEV |
| A3130 |  | Rectifier Transformer cooler installation | 6d | 2027-08-17 | 2027-08-23 | A3110, A3120 | 9d | 0d | GEV |
| A3140 |  | Regulating Transformer Cooler Installation | 5d | 2027-08-24 | 2027-08-30 | A3130 | 9d | 0d | GEV |
| A3150 |  | Oil treatment | 3d | 2027-08-31 | 2027-09-02 | A3140 | 9d | 0d | GEV |
| A3160 |  | Transformer tests | 6d | 2027-09-03 | 2027-09-09 | A3150 | 9d | 0d | GEV |
| A3170 |  | LV cable pulling | 9d | 2027-09-10 | 2027-09-21 | A3160 | 148d | 0d | GEV |
| A3180 |  | Rectifier AC & DC connections | 9d | 2027-09-22 | 2027-10-01 | A3170 | 148d | 149d | GEV |
|  | 5 | **Group 5** |  | 2027-05-12 | 2027-10-05 |  |  |  |  |
| A3190 |  | LCP installation | 6d | 2027-05-12 | 2027-05-18 | A3490, A3090 | 98d | 0d | GEV |
| A3200 |  | Rectifier installation | 10d | 2027-05-19 | 2027-05-29 | A3190 | 98d | 87d | GEV |
| A3210 |  | Rectifier Transformer Installation | 28d | 2027-06-03 | 2027-07-05 | A3370 | 47d | 36d | GEV |
| A3220 |  | Regulating Transformer Installation | 28d | 2027-07-15 | 2027-08-16 | A3380 FS+1d | 11d | 0d | GEV |
| A3230 |  | Rectifier Transformer cooler installation | 6d | 2027-08-17 | 2027-08-23 | A3210, A3220 | 11d | 0d | GEV |
| A3240 |  | Regulating Transformer Cooler Installation | 5d | 2027-08-24 | 2027-08-30 | A3230 | 11d | 0d | GEV |
| A3250 |  | Oil treatment | 3d | 2027-08-31 | 2027-09-02 | A3240 | 11d | 0d | GEV |
| A3260 |  | Transformer tests | 6d | 2027-09-03 | 2027-09-09 | A3250 | 11d | 0d | GEV |
| A3270 |  | LV cable pulling | 11d | 2027-09-10 | 2027-09-23 | A3260 | 146d | 0d | GEV |
| A3280 |  | Rectifier AC & DC connections | 9d | 2027-09-24 | 2027-10-05 | A3270 | 146d | 147d | GEV |

| ID | WBS | Activity | Duration | Start | Finish | Predecessors | Total float | Free float | Text1 | Text3 | Agency |
| --- | --- | --- | --- | --- | --- | --- | --- | --- | --- | --- | --- |
|  | SS | **220 kV Sub-station** |  | 2025-12-15 | 2027-10-30 |  |  |  |  |  |  |
|  | CIVIL | **Civil** |  | 2025-12-15 | 2027-04-16 |  |  |  |  |  |  |
| AS1770 |  | Foundation and concreting works | 405d | 2025-12-15 | 2027-04-16 | AS8710, AS7940 FS+24d, AS1981 FS+26d | -1d | 0d | 3Construction | 1Civ |  |
|  | EI | **Electrical & Instrumentation** |  | 2027-02-13 | 2027-10-30 |  |  |  |  |  |  |
| AS8240 |  | Electrical & Instrumentation works-220 | 216d | 2027-02-13 | 2027-10-30 | AS1770 SS+353d, AS9010, AS9020, AS11250 | -1d | 0d | 3Construction | 4EI |  |
|  | 1 | **Auxiliaries** |  | 2027-05-08 | 2027-09-22 |  |  |  |  |  |  |
| A2520 |  | Transformer installation (55 MVA) | 51d | 2027-05-08 | 2027-07-06 | A2510 | 156d | 0d |  |  | GEV |
| A2530 |  | Oil treatment | 4d | 2027-07-07 | 2027-07-10 | A2520 | 156d | 0d |  |  | GEV |
| A2540 |  | Switchgear & cubicles installation | 61d | 2027-07-12 | 2027-09-22 | A2530 | 156d | 157d |  |  | GEV |
|  | SS1 | **Sub station(GIS)** |  | 2026-02-12 | 2027-04-14 |  |  |  |  |  |  |
|  | CIVIL | **Civil** |  | 2026-02-12 | 2027-01-13 |  |  |  |  |  |  |
| AS13201 |  | Foundation and concreting works | 279d | 2026-02-12 | 2027-01-13 | AS13071 FS+24d, AS13131, AS1880 | 136d | 0d | 3Construction | 1Civ |  |
|  | EI | **Electrical & Instrumentation** |  | 2027-01-14 | 2027-04-14 |  |  |  |  |  |  |
| AS13211 |  | Electrical & Instrumentation works | 74d | 2027-01-14 | 2027-04-13 | AS13201, AS13101, AS13111, AS13121, AS13091 | 136d | 137d | 3Construction | 4EI |  |
| AS13241 |  | GIS Installation | 47d | 2027-02-17 | 2027-04-14 | AS13281 FS+3d, AS13201 | 248d | 0d |  |  |  |
|  | SS11 | **Bus bar** |  | 2026-03-30 | 2027-07-26 |  |  |  |  |  |  |
|  | CIVIL | **Civil** |  | 2026-03-30 | 2027-02-25 |  |  |  |  |  |  |
| AS13221 |  | Foundation and concreting works | 277d | 2026-03-30 | 2027-02-25 | AS13141 FS+12d | 48d | 0d | 3Construction | 1Civ |  |
|  | EI | **Electrical & Instrumentation** |  | 2027-02-27 | 2027-07-26 |  |  |  |  |  |  |
| AS13231 |  | Electrical & Instrumentation works | 126d | 2027-02-27 | 2027-07-26 | AS13221, AS13151, AS13331 | 48d | 49d | 3Construction | 4EI |  |
|  | GTC | **Gas Treatment Center (GTC-3) & Alumina transportation from GTC-1 to GTC-3** |  | 2025-12-09 | 2027-08-25 |  |  |  |  |  |  |
|  | PGDT | **Pot gas dry treatment** |  | 2026-03-23 | 2027-08-25 |  |  |  |  |  |  |
|  | CIVIL | **Civil** |  | 2026-03-23 | 2026-09-18 |  |  |  |  |  |  |
| AS10670 |  | Foundation and concreting works | 150d | 2026-03-23 | 2026-09-18 | AS10040 FS+26d | 72d | 0d | 3Construction | 1Civ |  |

Notes:
- AS1770: Text2: 220 kV Sub-station / Text4: Conversion sub-station (220 kV switchyard and Rectifier Substation)
- AS8240: Text2: 220 kV Sub-station / Text4: Conversion sub-station (220 kV switchyard and Rectifier Substation)
- AS13201: Text2: Sub station(GIS) / Text4: Conversion sub-station (220 kV switchyard and Rectifier Substation)
- AS13211: Text2: Sub station(GIS) / Text4: Conversion sub-station (220 kV switchyard and Rectifier Substation)
- AS13221: Text2: Bus bar / Text4: Conversion sub-station (220 kV switchyard and Rectifier Substation)
- AS13231: Text2: Bus bar / Text4: Conversion sub-station (220 kV switchyard and Rectifier Substation)
- AS10670: Text2: Gas Treatment Center (GTC-3) & Alumina transportation from GTC-1 to GTC-3 / Text4: Gas Treatment Center (GTC-3) & Alumina transportation from GTC-1 to GTC-3

| ID | WBS | Activity | Duration | Start | Finish | Predecessors | Total float | Free float | Text1 | Text3 |
| --- | --- | --- | --- | --- | --- | --- | --- | --- | --- | --- |
|  | STR | **Structural** |  | 2026-07-24 | 2027-03-02 |  |  |  |  |  |
| AS11120 |  | Steel structure erection | 182d | 2026-07-24 | 2027-03-02 | AS10670 SS+104d, AS11070 SS+26d | 72d | 0d | 3Construction | 2Str |
|  | ME | **Mechanical** |  | 2026-12-19 | 2027-08-25 |  |  |  |  |  |
| AS11320 |  | Equipment erection | 209d | 2026-12-19 | 2027-08-25 | AS11120 SS+78d, AS10330, AS11170, AS11190, AS12490 SS+26d, AS12610 SS+26d | 28d | 0d | 3Construction | 3Mech |
| AS11360 |  | Utility & Piping | 157d | 2027-02-20 | 2027-08-25 | AS11320 SS+52d, AS7610 | 28d | 0d | 3Construction | 3Mech |
|  | EI | **Electrical & Instrumentation** |  | 2027-03-01 | 2027-08-25 |  |  |  |  |  |
| AS11370 |  | Electrical & Instrumentation works | 151d | 2027-03-01 | 2027-08-25 | AS11320 SS+26d, AS7970, AS7980, AS11200, AS11360 SS+6d, AS11330 SS | 28d | 0d | 3Construction | 4EI |
|  | AT | **Alumina transportation from GTC-1 (Connecting with existing) to GTC-3** |  | 2027-03-03 | 2027-05-18 |  |  |  |  |  |
|  | STR | **Structural** |  | 2027-03-03 | 2027-04-02 |  |  |  |  |  |
| AS8930 |  | Steel structure erection | 26d | 2027-03-03 | 2027-04-02 | AS7650, AS11120 | 102d | 0d | 3Construction | 2Str |
|  | ME | **Mechanical** |  | 2027-04-03 | 2027-05-04 |  |  |  |  |  |
| AS9580 |  | Equipment erection | 26d | 2027-04-03 | 2027-05-04 | AS8930 | 113d | 0d | 3Construction | 3Mech |
|  | EI | **Electrical & Instrumentation** |  | 2027-05-05 | 2027-05-18 |  |  |  |  |  |
| AS9890 |  | Electrical & Instrumentation works | 12d | 2027-05-05 | 2027-05-18 | AS9580, AS6830, AS6840 | 113d | 85d | 3Construction | 4EI |
|  | CHI | **Chimney** |  | 2025-12-09 | 2027-08-20 |  |  |  |  |  |
|  | CIVIL | **Civil** |  | 2025-12-09 | 2027-06-24 |  |  |  |  |  |
| AS8570 |  | Foundation and concreting works | 468d | 2025-12-09 | 2027-06-24 | AS7660 SS, AS7550 | 32d | 0d | 3Construction | 1Civ |
|  | ME | **Mechanical** |  | 2027-06-25 | 2027-07-24 |  |  |  |  |  |
| AS11460 |  | Equipment erection | 26d | 2027-06-25 | 2027-07-24 | AS8570, AS11180 | 32d | 0d | 3Construction | 3Mech |
|  | EI | **Electrical & Instrumentation** |  | 2027-07-26 | 2027-08-20 |  |  |  |  |  |
| AS11490 |  | Electrical & Instrumentation works | 23d | 2027-07-26 | 2027-08-20 | AS11460, AS6860, AS6870, AS11200 | 32d | 4d | 3Construction | 4EI |
|  | GTCSS | **GTC Sub-station** |  | 2025-12-13 | 2027-07-12 |  |  |  |  |  |
|  | CIVIL | **Civil** |  | 2025-12-13 | 2027-02-24 |  |  |  |  |  |
| AS7490 |  | Foundation and concreting works | 364d | 2025-12-13 | 2027-02-24 | AS5820, AS1981 | 77d | 11d | 3Construction | 1Civ |

Notes:
- AS11120: Text2: Gas Treatment Center (GTC-3) & Alumina transportation from GTC-1 to GTC-3 / Text4: Gas Treatment Center (GTC-3) & Alumina transportation from GTC-1 to GTC-3
- AS11320: Text2: Gas Treatment Center (GTC-3) & Alumina transportation from GTC-1 to GTC-3 / Text4: Gas Treatment Center (GTC-3) & Alumina transportation from GTC-1 to GTC-3
- AS11360: Text2: Gas Treatment Center (GTC-3) & Alumina transportation from GTC-1 to GTC-3 / Text4: Gas Treatment Center (GTC-3) & Alumina transportation from GTC-1 to GTC-3
- AS11370: Text2: Gas Treatment Center (GTC-3) & Alumina transportation from GTC-1 to GTC-3 / Text4: Gas Treatment Center (GTC-3) & Alumina transportation from GTC-1 to GTC-3
- AS8930: Text2: Alumina transportation from GTC-1 (Connecting with existing) to GTC-3 / Text4: Gas Treatment Center (GTC-3) & Alumina transportation from GTC-1 to GTC-3
- AS9580: Text2: Alumina transportation from GTC-1 (Connecting with existing) to GTC-3 / Text4: Gas Treatment Center (GTC-3) & Alumina transportation from GTC-1 to GTC-3
- AS9890: Text2: Alumina transportation from GTC-1 (Connecting with existing) to GTC-3 / Text4: Gas Treatment Center (GTC-3) & Alumina transportation from GTC-1 to GTC-3
- AS8570: Text2: Chimney / Text4: Gas Treatment Center (GTC-3) & Alumina transportation from GTC-1 to GTC-3
- AS11460: Text2: Chimney / Text4: Gas Treatment Center (GTC-3) & Alumina transportation from GTC-1 to GTC-3
- AS11490: Text2: Chimney / Text4: Gas Treatment Center (GTC-3) & Alumina transportation from GTC-1 to GTC-3
- AS7490: Text2: GTC Sub-station / Text4: Gas Treatment Center (GTC-3) & Alumina transportation from GTC-1 to GTC-3

| ID | WBS | Activity | Duration | Start | Finish | Predecessors | Total float | Free float | Text1 | Text2 | Text3 |
| --- | --- | --- | --- | --- | --- | --- | --- | --- | --- | --- | --- |
|  | EI | **Electrical & Instrumentation** |  | 2027-01-07 | 2027-07-12 |  |  |  |  |  |  |
| AS10460 |  | Electrical & Instrumentation works | 156d | 2027-01-07 | 2027-07-12 | AS7490 SS+312d, AS5920, AS5930, AS11160, AS11200, AS13931 | 66d | 38d | 3Construction | GTC Sub-station | 4EI |
|  | HDPS | **Hyper Density Phase System (HDPS)** |  | 2027-06-08 | 2027-08-03 |  |  |  |  |  |  |
|  | ME | **Mechanical** |  | 2027-06-08 | 2027-08-03 |  |  |  |  |  |  |
| AS9590 |  | Equipment erection | 49d | 2027-06-08 | 2027-08-03 | AS8930, AS9431, AS2031, AS11120 | 47d | 19d | 3Construction | Hyper Density Phase System (HDPS) | 3Mech |
|  | ACF | **Additional casting facilities** |  | 2025-12-01 | 2027-09-21 |  |  |  |  |  |  |
|  | CHS | **Cast house shed** |  | 2026-04-04 | 2027-09-21 |  |  |  |  |  |  |
|  | CIVIL | **Civil** |  | 2026-04-04 | 2027-01-11 |  |  |  |  |  |  |
| AS5959.01 |  | Shifting of Alloy shed | 26d | 2026-04-04 | 2026-05-05 | AS5980, AS1848, AS2061 | 69d | 0d | 3Construction | Cast house shed | 1Civ |
| AS6540 |  | Equipment foundation | 208d | 2026-04-16 | 2026-12-22 | AS6530 | 85d | 55d | 3Construction | Cast house shed | 1Civ |
| AS5960 |  | Foundation and concreting works | 208d | 2026-05-06 | 2027-01-11 | AS5420, AS7540, AS5959.01 | 69d | 39d | 3Construction | Cast house shed | 1Civ |
|  | STR | **Structural** |  | 2026-08-22 | 2027-07-01 |  |  |  |  |  |  |
| AS10110 |  | Steel structure erection | 260d | 2026-08-22 | 2027-07-01 | AS5960 SS+52d, AS9530 SS+26d, AS9540 SS | 30d | 0d | 3Construction | Cast house shed | 2Str |
|  | ME | **Mechanical** |  | 2027-03-01 | 2027-09-01 |  |  |  |  |  |  |
| AS11270 |  | Equipment erection | 156d | 2027-03-01 | 2027-09-01 | AS10110 SS+156d, AS3290, AS7060 SS+12d, AS7070 SS+12d, AS7410 SS+49d, AS6540, AS2031 | 30d | 0d | 3Construction | Cast house shed | 3Mech |
|  | EI | **Electrical & Instrumentation** |  | 2027-07-23 | 2027-09-21 |  |  |  |  |  |  |
| AS11450 |  | Electrical & Instrumentation works | 50d | 2027-07-23 | 2027-09-21 | AS11270 SS+122d, AS4120, AS4130, AS10160, AS2041 | 30d | 0d | 3Construction | Cast house shed | 4EI |
|  | CHCW | **Cast house cooling water** |  | 2026-04-23 | 2027-04-03 |  |  |  |  |  |  |
|  | CIVIL | **Civil** |  | 2026-04-23 | 2026-08-25 |  |  |  |  |  |  |
| AS5510 |  | Foundation and concreting works | 104d | 2026-04-23 | 2026-08-25 | AS4900, AS1891, AS7540 | 225d | 1d | 3Construction | Cast house cooling water | 1Civ |
|  | STR | **Structural** |  | 2026-08-27 | 2026-09-28 |  |  |  |  |  |  |
| AS8760 |  | Steel structure erection | 26d | 2026-08-27 | 2026-09-28 | AS5510, AS4910 FS+104d | 224d | 51d | 3Construction | Cast house cooling water | 2Str |
|  | ME | **Mechanical** |  | 2026-10-29 | 2027-04-03 |  |  |  |  |  |  |
| AS9490 |  | Equipment erection | 130d | 2026-10-29 | 2027-04-03 | AS8760 SS, AS7090 SS, AS5510 | 173d | 0d | 3Construction | Cast house cooling water | 3Mech |

Notes:
- AS10460: Text4: Gas Treatment Center (GTC-3) & Alumina transportation from GTC-1 to GTC-3
- AS9590: Text4: Gas Treatment Center (GTC-3) & Alumina transportation from GTC-1 to GTC-3
- AS5959.01: Text4: Additional casting facilities
- AS6540: Text4: Additional casting facilities
- AS5960: Text4: Additional casting facilities
- AS10110: Text4: Additional casting facilities
- AS11270: Text4: Additional casting facilities
- AS11450: Text4: Additional casting facilities
- AS5510: Text4: Additional casting facilities
- AS8760: Text4: Additional casting facilities
- AS9490: Text4: Additional casting facilities

| ID | WBS | Activity | Duration | Start | Finish | Predecessors | Total float | Free float | Text1 | Text3 | Text4 |
| --- | --- | --- | --- | --- | --- | --- | --- | --- | --- | --- | --- |
|  | EI | **Electrical & Instrumentation** |  | 2027-02-01 | 2027-04-03 |  |  |  |  |  |  |
| AS10840 |  | Electrical & Instrumentation works | 52d | 2027-02-01 | 2027-04-03 | AS9490 SS+78d, AS4150, AS4160 | 173d | 143d | 3Construction | 4EI | Additional casting facilities |
|  | CHCR | **Cast house control room (addition in existing facilities)** |  | 2026-02-07 | 2026-12-31 |  |  |  |  |  |  |
|  | CIVIL | **Civil** |  | 2026-02-07 | 2026-02-20 |  |  |  |  |  |  |
| AS9440 |  | Foundation and concreting works | 12d | 2026-02-07 | 2026-02-20 | AS8610 | 498d | 248d | 3Construction | 1Civ | Additional casting facilities |
|  | EI | **Electrical & Instrumentation** |  | 2026-12-17 | 2026-12-31 |  |  |  |  |  |  |
| AS9720 |  | Electrical & Instrumentation works | 12d | 2026-12-17 | 2026-12-31 | AS9440, AS8850, AS8860, AS10160, AS2041 | 250d | 220d | 3Construction | 4EI | Additional casting facilities |
|  | CHSS | **Cast house sub station (addition in existing facilities)** |  | 2026-03-23 | 2027-01-16 |  |  |  |  |  |  |
|  | CIVIL | **Civil** |  | 2026-03-23 | 2026-04-04 |  |  |  |  |  |  |
| AS9900 |  | Foundation and concreting works | 12d | 2026-03-23 | 2026-04-04 | AS9470 | 448d | 212d | 3Construction | 1Civ | Additional casting facilities |
|  | EI | **Electrical & Instrumentation** |  | 2026-12-17 | 2027-01-16 |  |  |  |  |  |  |
| AS9950 |  | Electrical & Instrumentation works | 26d | 2026-12-17 | 2027-01-16 | AS9900, AS9660, AS9670, AS10160, AS2041 | 236d | 206d | 3Construction | 4EI | Additional casting facilities |
|  | LTTC | **Ladle & Tapping tube cleaning (addition in existing facilities)** |  | 2026-02-14 | 2027-03-05 |  |  |  |  |  |  |
|  | CIVIL | **Civil** |  | 2026-02-14 | 2026-07-18 |  |  |  |  |  |  |
| AS5970 |  | Foundation and concreting works | 130d | 2026-02-14 | 2026-07-18 | AS5430, AS7540, AS2011 | 282d | 80d | 3Construction | 1Civ | Additional casting facilities |
|  | STR | **Structural** |  | 2026-08-22 | 2027-01-27 |  |  |  |  |  |  |
| AS9910 |  | Steel structure erection | 130d | 2026-08-22 | 2027-01-27 | AS5970 SS+78d, AS4930 FS+104d, AS9540 SS, AS9530 SS+7d | 202d | 5d | 3Construction | 2Str | Additional casting facilities |
|  | ME | **Mechanical** |  | 2026-12-02 | 2027-03-05 |  |  |  |  |  |  |
| AS10790 |  | Equipment erection | 78d | 2026-12-02 | 2027-03-05 | AS9910 SS+78d, AS3360, AS13421 | 197d | 0d | 3Construction | 3Mech | Additional casting facilities |
|  | EI | **Electrical & Instrumentation** |  | 2027-01-02 | 2027-03-05 |  |  |  |  |  |  |
| AS11010 |  | Electrical & Instrumentation works | 52d | 2027-01-02 | 2027-03-05 | AS10790 SS+26d, AS4180, AS4190, AS10160 SS, AS2041 | 197d | 167d | 3Construction | 4EI | Additional casting facilities |
|  | RAS | **Relocation of existing Alloy shed** |  | 2025-12-01 | 2026-11-14 |  |  |  |  |  |  |
|  | CIVIL | **Civil** |  | 2025-12-01 | 2026-04-03 |  |  |  |  |  |  |
| AS5980 |  | Foundation and concreting works | 104d | 2025-12-01 | 2026-04-03 | AS5440, AS7540 | 69d | 0d | 3Construction | 1Civ | Additional casting facilities |

Notes:
- AS10840: Text2: Cast house cooling water
- AS9440: Text2: Cast house control room (addition in existing facilities)
- AS9720: Text2: Cast house control room (addition in existing facilities)
- AS9900: Text2: Cast house sub station (addition in existing facilities)
- AS9950: Text2: Cast house sub station (addition in existing facilities)
- AS5970: Text2: Ladle & Tapping tube cleaning (addition in existing facilities)
- AS9910: Text2: Ladle & Tapping tube cleaning (addition in existing facilities)
- AS10790: Text2: Ladle & Tapping tube cleaning (addition in existing facilities)
- AS11010: Text2: Ladle & Tapping tube cleaning (addition in existing facilities)
- AS5980: Text2: Relocation of existing Alloy shed

| ID | WBS | Activity | Duration | Start | Finish | Predecessors | Total float | Free float | Text1 | Text2 | Text3 | Text4 | Notes |
| --- | --- | --- | --- | --- | --- | --- | --- | --- | --- | --- | --- | --- | --- |
|  | STR | **Structural** |  | 2026-05-11 | 2026-09-11 |  |  |  |  |  |  |  |  |
| AS8260 |  | Steel structure erection | 104d | 2026-05-11 | 2026-09-11 | AS5980 SS+52d, AS4950 FS+104d | 289d | 0d | 3Construction | Relocation of existing Alloy shed | 2Str | Additional casting facilities |  |
|  | ME | **Mechanical** |  | 2026-08-11 | 2026-10-14 |  |  |  |  |  |  |  |  |
| AS8940 |  | Equipment erection | 52d | 2026-08-11 | 2026-10-14 | AS8260 SS+78d, AS2031 | 289d | 0d | 3Construction | Relocation of existing Alloy shed | 3Mech | Additional casting facilities |  |
|  | EI | **Electrical & Instrumentation** |  | 2026-10-15 | 2026-11-14 |  |  |  |  |  |  |  |  |
| AS9600 |  | Electrical & Instrumentation works | 26d | 2026-10-15 | 2026-11-14 | AS8940, AS4210, AS4220, AS2041 | 289d | 259d | 3Construction | Relocation of existing Alloy shed | 4EI | Additional casting facilities |  |
|  | RAS1 | **Coke Handling System** |  | 2026-04-10 | 2027-06-22 |  |  |  |  |  |  |  |  |
|  | CIVIL | **Civil** |  | 2026-04-10 | 2026-10-15 |  |  |  |  |  |  |  |  |
| AS13481 |  | Foundation and concreting works | 156d | 2026-04-10 | 2026-10-15 | AS5450, AS7600 | 106d | 0d | 3Construction | Coke Handling System | 1Civ | Coke Handling System |  |
|  | STR | **Structural** |  | 2026-10-16 | 2027-04-21 |  |  |  |  |  |  |  |  |
| AS13491 |  | Steel structure erection | 156d | 2026-10-16 | 2027-04-21 | AS13481, AS4970, AS13471 SS+26d | 106d | 0d | 3Construction | Coke Handling System | 2Str | Coke Handling System |  |
|  | ME | **Mechanical** |  | 2027-04-22 | 2027-05-22 |  |  |  |  |  |  |  |  |
| AS13501 |  | Equipment erection | 26d | 2027-04-22 | 2027-05-22 | AS13491, AS2210, AS3410, AS2031 | 106d | 0d | 3Construction | Coke Handling System | 3Mech | Coke Handling System |  |
|  | EI | **Electrical & Instrumentation** |  | 2027-05-24 | 2027-06-22 |  |  |  |  |  |  |  |  |
| AS13511 |  | Electrical & Instrumentation works | 26d | 2027-05-24 | 2027-06-22 | AS13501, AS4240, AS4230, AS4250, AS2041 | 106d | 0d | 3Construction | Coke Handling System | 4EI | Coke Handling System |  |
|  | GAP | **Green Anode Plant (GAP)** |  | 2025-12-26 | 2027-07-14 |  |  |  |  |  |  |  |  |
|  | MB | **GAP Main building** |  | 2026-01-30 | 2027-07-14 |  |  |  |  |  |  |  |  |
|  | CIVIL | **Civil** |  | 2026-01-30 | 2027-04-13 |  |  |  |  |  |  |  |  |
| AS1780 |  | Foundation and concreting works | 364d | 2026-01-30 | 2027-04-13 | AS7550, AS6050 SS+142d | 10d | 0d | 3Construction | GAP Main building | 1Civ | Green Anode Plant (GAP) | Start of test pile as per Fives 8 week plan |
|  | STR | **Structural** |  | 2026-09-05 | 2027-07-14 |  |  |  |  |  |  |  |  |
| AS8250 |  | Steel structure erection | 260d | 2026-09-05 | 2027-07-14 | AS1780 SS+182d, AS10990 SS+26d | 10d | 0d | 3Construction | GAP Main building | 2Str | Green Anode Plant (GAP) |  |
|  | ME | **Mechanical** |  | 2026-10-08 | 2027-07-14 |  |  |  |  |  |  |  |  |
| AS10630 |  | Equipment erection | 234d | 2026-10-08 | 2027-07-14 | AS8250 SS+26d, AS7670, AS10340 SS, AS10350 SS, AS11210 SS, AS10360, AS11300 SS, AS11140, AS11050 SS, AS11220 SS | 10d | 0d | 3Construction | GAP Main building | 3Mech | Green Anode Plant (GAP) |  |
|  | EI | **Electrical & Instrumentation** |  | 2026-11-09 | 2027-07-14 |  |  |  |  |  |  |  |  |
| AS11130 |  | Electrical & Instrumentation works | 208d | 2026-11-09 | 2027-07-14 | AS10630 SS+26d, AS7820, AS7830, AS11040 | 10d | 0d | 3Construction | GAP Main building | 4EI | Green Anode Plant (GAP) |  |

| ID | WBS | Activity | Duration | Start | Finish | Predecessors | Total float | Free float | Text1 | Text3 | Text4 |
| --- | --- | --- | --- | --- | --- | --- | --- | --- | --- | --- | --- |
|  | SS | **Sub-Station for GAP** |  | 2025-12-26 | 2027-06-22 |  |  |  |  |  |  |
|  | STR | **Civil** |  | 2025-12-26 | 2027-05-11 |  |  |  |  |  |  |
| AS1790 |  | Foundation and concreting works | 416d | 2025-12-26 | 2027-05-11 | AS8390 FS+12d, AS9210 SS | 29d | 0d | 3Construction | 1Civ | Green Anode Plant (GAP) |
|  | EI | **Electrical & Instrumentation** |  | 2026-10-16 | 2027-06-22 |  |  |  |  |  |  |
| AS1800 |  | Electrical & Instrumentation works | 208d | 2026-10-16 | 2027-06-22 | AS1790 SS+244d, AS8590, AS8600, AS11040 | 29d | 19d | 3Construction | 4EI | Green Anode Plant (GAP) |
|  | HTM | **Heat transfer medium (HTM) plant** |  | 2026-03-23 | 2027-05-21 |  |  |  |  |  |  |
|  | CIVIL | **Civil** |  | 2026-03-23 | 2026-11-20 |  |  |  |  |  |  |
| AS5310 |  | Foundation and concreting works | 202d | 2026-03-23 | 2026-11-20 | AS4530, AS1780 SS+43d | 56d | 0d | 3Construction | 1Civ | Green Anode Plant (GAP) |
|  | STR | **Structural** |  |  |  |  |  |  |  |  |  |
|  | ME | **Mechanical** |  | 2026-11-21 | 2027-05-21 |  |  |  |  |  |  |
| AS10870 |  | Equipment erection | 151d | 2026-11-21 | 2027-05-21 | AS7300, AS5310 | 56d | 0d | 3Construction | 3Mech | Green Anode Plant (GAP) |
|  | EI | **Electrical & Instrumentation** |  | 2027-01-21 | 2027-05-21 |  |  |  |  |  |  |
| AS11310 |  | Electrical & Instrumentation works | 100d | 2027-01-21 | 2027-05-21 | AS10870 SS+51d, AS7510, AS7520, AS11040 | 56d | 46d | 3Construction | 4EI | Green Anode Plant (GAP) |
|  | CT | **Cooling Tower-2 (addition in existing facilities)** |  | 2026-05-05 | 2027-04-22 |  |  |  |  |  |  |
|  | CIVIL | **Civil** |  | 2026-05-05 | 2026-10-08 |  |  |  |  |  |  |
| AS5520 |  | Foundation and concreting works | 130d | 2026-05-05 | 2026-10-08 | AS4980 | 113d | 33d | 3Construction | 1Civ | Green Anode Plant (GAP) |
|  | ME | **Mechanical** |  | 2026-11-18 | 2027-03-23 |  |  |  |  |  |  |
| AS8770 |  | Equipment erection | 104d | 2026-11-18 | 2027-03-23 | AS5520, AS7100 | 80d | 0d | 3Construction | 3Mech | Green Anode Plant (GAP) |
|  | EI | **Electrical & Instrumentation** |  | 2027-03-24 | 2027-04-22 |  |  |  |  |  |  |
| AS10480 |  | Electrical & Instrumentation works | 26d | 2027-03-24 | 2027-04-22 | AS8770, AS3440, AS4270, AS4280 | 80d | 70d | 3Construction | 4EI | Green Anode Plant (GAP) |
|  | CEF | **Connection with existing facilities (Pitch Tank, Butt Silo, Coke Silo)** |  | 2026-03-23 | 2026-07-23 |  |  |  |  |  |  |
|  | CIVIL | **Civil** |  | 2026-03-23 | 2026-04-21 |  |  |  |  |  |  |
| AS9310 |  | Foundation and concreting works | 26d | 2026-03-23 | 2026-04-21 | AS8730 FS+10d, AS8740, AS8750 | 305d | 0d | 3Construction | 1Civ | Green Anode Plant (GAP) |
|  | STR | **Structural** |  | 2026-04-22 | 2026-05-22 |  |  |  |  |  |  |
| AS9830 |  | Steel structure erection | 26d | 2026-04-22 | 2026-05-22 | AS9310 | 305d | 0d | 3Construction | 2Str | Green Anode Plant (GAP) |

Notes:
- AS1790: Text2: Sub-Station for GAP
- AS1800: Text2: Sub-Station for GAP
- AS5310: Text2: Heat transfer medium (HTM) plant
- AS10870: Text2: Heat transfer medium (HTM) plant
- AS11310: Text2: Heat transfer medium (HTM) plant
- AS5520: Text2: Cooling Tower-2 (addition in existing facilities)
- AS8770: Text2: Cooling Tower-2 (addition in existing facilities)
- AS10480: Text2: Cooling Tower-2 (addition in existing facilities)
- AS9310: Text2: Connection with existing facilities (Pitch Tank, Butt Silo, Coke Silo)
- AS9830: Text2: Connection with existing facilities (Pitch Tank, Butt Silo, Coke Silo)

| ID | WBS | Activity | Duration | Start | Finish | Predecessors | Total float | Free float | Text1 | Text3 | Text4 |
| --- | --- | --- | --- | --- | --- | --- | --- | --- | --- | --- | --- |
|  | ME | **Mechanical** |  | 2026-05-23 | 2026-06-22 |  |  |  |  |  |  |
| AS10010 |  | Equipment erection | 26d | 2026-05-23 | 2026-06-22 | AS9830 | 305d | 0d | 3Construction | 3Mech | Green Anode Plant (GAP) |
|  | EI | **Electrical & Instrumentation** |  | 2026-06-23 | 2026-07-23 |  |  |  |  |  |  |
| AS10450 |  | Electrical & Instrumentation works | 26d | 2026-06-23 | 2026-07-23 | AS10010, AS8320, AS8330, AS8340 | 305d | 295d | 3Construction | 4EI | Green Anode Plant (GAP) |
|  | ABF | **Anode Baking Furnace (ABF)** |  | 2025-11-11 | 2027-09-04 |  |  |  |  |  |  |
|  | ABFS | **ABF Shed Building structure** |  | 2025-11-11 | 2027-08-18 |  |  |  |  |  |  |
|  | CIVIL | **Civil** |  | 2025-11-11 | 2026-04-15 |  |  |  |  |  |  |
| AS5989.00 |  | Mobilization to site | 17d | 2025-11-11 | 2025-11-29 | AS1890 | 56d | 0d | 3Construction | 1Civ | Anode Baking Furnace (ABF) |
| AS5989.01 |  | Pilot Piling | 25d | 2025-12-01 | 2025-12-30 | AS5989.00 | 56d | 0d | 3Construction | 1Civ | Anode Baking Furnace (ABF) |
| AS5989.02 |  | Piling for building column foundation | 84d | 2025-12-01 | 2026-03-11 | AS5989.01 SS | 56d | 0d | 3Construction | 1Civ | Anode Baking Furnace (ABF) |
| AS5989.13 |  | Building column civil foundation works | 90d | 2025-12-30 | 2026-04-15 | AS5989.02 SS+24d | 56d | 36d | 3Construction | 1Civ | Anode Baking Furnace (ABF) |
|  | STR | **Structural** |  | 2026-04-14 | 2027-02-20 |  |  |  |  |  |  |
| AS8950 |  | Steel structure erection | 234d | 2026-04-14 | 2027-01-20 | AS9550 SS+26d, AS5989.13 SS+52d, AS9560 SS | 20d | 0d | 3Construction | 2Str | Anode Baking Furnace (ABF) |
| AS9270 |  | Sheeting works | 208d | 2026-06-15 | 2027-02-20 | AS8950 SS+52d | 94d | 74d | 3Construction | 2Str | Anode Baking Furnace (ABF) |
|  | ME | **Mechanical** |  | 2027-04-30 | 2027-05-31 |  |  |  |  |  |  |
| AS10940 |  | Equipment erection | 26d | 2027-04-30 | 2027-05-31 | AS8950 SS+130d, AS7420, AS3470, AS2031, AS13531 | 34d | 0d | 3Construction | 3Mech | Anode Baking Furnace (ABF) |
|  | EI | **Electrical & Instrumentation** |  | 2027-05-14 | 2027-08-18 |  |  |  |  |  |  |
| AS11110 |  | Electrical & Instrumentation works | 83d | 2027-05-14 | 2027-08-18 | AS10940 SS+11d, AS4300, AS4310, AS9300, AS2041 | 34d | 14d | 3Construction | 4EI | Anode Baking Furnace (ABF) |
|  | F | **Furnace** |  | 2026-01-05 | 2027-09-04 |  |  |  |  |  |  |
|  | CIVIL | **Civil** |  | 2026-01-05 | 2027-07-19 |  |  |  |  |  |  |
| AS1810 |  | Piling for Tub foundation | 34d | 2026-01-05 | 2026-02-13 | AS5740, AS5989.02 SS+29d | 165d | 145d | 3Construction | 1Civ | Anode Baking Furnace (ABF) |
| AS1950 |  | Preparation Ventilation vault (Precast) | 130d | 2026-01-29 | 2026-07-01 | AS5460 | 179d | 159d | 3Construction | 1Civ | Anode Baking Furnace (ABF) |
| AS1830 |  | Tub foundation works | 260d | 2026-08-06 | 2027-06-16 | AS1810, AS8950 SS+96d, AS5780 | 20d | 0d | 3Construction | 1Civ | Anode Baking Furnace (ABF) |
| AS1990 |  | Fixing of Ventilation vault | 195d | 2026-11-11 | 2027-07-01 | AS1830 SS+78d, AS1950 SS+78d | 20d | 0d | 3Construction | 1Civ | Anode Baking Furnace (ABF) |
| AS2120 |  | High Alumina Concreting works | 195d | 2026-11-28 | 2027-07-19 | AS1990 SS+15d | 20d | 0d | 3Construction | 1Civ | Anode Baking Furnace (ABF) |

Notes:
- AS10010: Text2: Connection with existing facilities (Pitch Tank, Butt Silo, Coke Silo)
- AS10450: Text2: Connection with existing facilities (Pitch Tank, Butt Silo, Coke Silo)
- AS5989.00: Text2: ABF Shed Building structure
- AS5989.01: Text2: ABF Shed Building structure
- AS5989.02: Text2: ABF Shed Building structure
- AS5989.13: Text2: ABF Shed Building structure
- AS8950: Text2: ABF Shed Building structure
- AS9270: Text2: ABF Shed Building structure
- AS10940: Text2: ABF Shed Building structure
- AS11110: Text2: ABF Shed Building structure
- AS1810: Text2: Furnace
- AS1950: Text2: Furnace
- AS1830: Text2: Furnace
- AS1990: Text2: Furnace
- AS2120: Text2: Furnace

| ID | WBS | Activity | Duration | Start | Finish | Predecessors | Total float | Free float | Text1 | Text2 | Text3 | Text4 |
| --- | --- | --- | --- | --- | --- | --- | --- | --- | --- | --- | --- | --- |
|  | STR | **Structural** |  | 2026-11-11 | 2027-07-01 |  |  |  |  |  |  |  |
| AS10090 |  | Steel structure erection | 195d | 2026-11-11 | 2027-07-01 | AS1830 SS+78d | 74d | 44d | 3Construction | Furnace | 2Str | Anode Baking Furnace (ABF) |
|  | ME | **Mechanical** |  | 2027-02-03 | 2027-08-21 |  |  |  |  |  |  |  |
| AS10640 |  | Equipment erection | 169d | 2027-02-03 | 2027-08-21 | AS10090 SS+26d, AS7120, AS4590, AS10100 SS+26d, AS2031 | 30d | 0d | 3Construction | Furnace | 3Mech | Anode Baking Furnace (ABF) |
|  | REF | **Refractory** |  | 2026-12-16 | 2027-09-04 |  |  |  |  |  |  |  |
| AS10100 |  | Refractory works | 220d | 2026-12-16 | 2027-09-04 | AS7560 SS+26d, AS2120 SS+15d, AS9270 SS+78d, AS13741 | 20d | 0d | 3Construction | Furnace | 5Refr | Anode Baking Furnace (ABF) |
|  | EI | **Electrical & Instrumentation** |  | 2027-05-08 | 2027-08-23 |  |  |  |  |  |  |  |
| AS11000 |  | Electrical & Instrumentation works | 92d | 2027-05-08 | 2027-08-23 | AS10640 SS+78d, AS4810, AS4820, AS9300, AS2041 | 30d | 10d | 3Construction | Furnace | 4EI | Anode Baking Furnace (ABF) |
|  | SS | **Sub-station for ABF** |  | 2025-11-14 | 2027-07-30 |  |  |  |  |  |  |  |
|  | CIVIL | **Civil** |  | 2025-11-14 | 2027-03-30 |  |  |  |  |  |  |  |
| AS9929 |  | Mobilization at site | 52d | 2025-11-14 | 2026-01-14 | AS1981 | 38d | 0d | 3Construction | Sub-station for ABF | 1Civ | Anode Baking Furnace (ABF) |
| AS9930 |  | Foundation and concreting works | 364d | 2026-01-15 | 2027-03-30 | AS9620 FS+9d, AS1940.12, AS9929 | 38d | 0d | 3Construction | Sub-station for ABF | 1Civ | Anode Baking Furnace (ABF) |
|  | EI | **Electrical & Instrumentation** |  | 2027-01-27 | 2027-07-30 |  |  |  |  |  |  |  |
| AS10810 |  | Electrical & Instrumentation works | 156d | 2027-01-27 | 2027-07-30 | AS9930 SS+312d, AS9740, AS9750, AS9300 SS, AS2041, AS13931 | 50d | 30d | 3Construction | Sub-station for ABF | 4EI | Anode Baking Furnace (ABF) |
|  | SDS | **Sub soil drainage system for ABF** |  | 2026-01-19 | 2026-02-18 |  |  |  |  |  |  |  |
|  | CIVIL | **Civil** |  | 2026-01-19 | 2026-02-18 |  |  |  |  |  |  |  |
| AS5780 |  | Foundation and concreting works | 26d | 2026-01-19 | 2026-02-18 | AS5360, AS1890 FS+58d | 161d | 141d | 3Construction | Sub soil drainage system for ABF | 1Civ | Anode Baking Furnace (ABF) |
|  | MCC | **MCC Room (addition in existing facilities)** |  | 2027-04-30 | 2027-06-30 |  |  |  |  |  |  |  |
|  | CIVIL | **Civil** |  | 2027-04-30 | 2027-05-31 |  |  |  |  |  |  |  |
| AS9880 |  | Foundation and concreting works | 26d | 2027-04-30 | 2027-05-31 | AS9640, AS5270 | 76d | 0d | 3Construction | MCC Room (addition in existing facilities) | 1Civ | Anode Baking Furnace (ABF) |
|  | EI | **Electrical & Instrumentation** |  | 2027-06-01 | 2027-06-30 |  |  |  |  |  |  |  |
| AS10080 |  | Electrical & Instrumentation works | 26d | 2027-06-01 | 2027-06-30 | AS9880, AS9840, AS2041 | 76d | 56d | 3Construction | MCC Room (addition in existing facilities) | 4EI | Anode Baking Furnace (ABF) |
|  | CTCAS | **Cooling Tower-3 (addition in existing facilities)** |  | 2026-04-20 | 2027-07-28 |  |  |  |  |  |  |  |
|  | CIVIL | **Civil** |  | 2026-04-20 | 2026-08-21 |  |  |  |  |  |  |  |
| AS5300 |  | Foundation and concreting works | 104d | 2026-04-20 | 2026-08-21 | AS4760, AS1891 | 179d | 127d | 3Construction | Cooling Tower-3 (addition in existing facilities) | 1Civ | Anode Baking Furnace (ABF) |

| ID | WBS | Activity | Duration | Start | Finish | Predecessors | Total float | Free float | Text1 | Text2 | Text3 | Notes |
| --- | --- | --- | --- | --- | --- | --- | --- | --- | --- | --- | --- | --- |
|  | ME | **Mechanical** |  | 2027-01-23 | 2027-07-28 |  |  |  |  |  |  |  |
| AS8380 |  | Equipment erection | 156d | 2027-01-23 | 2027-07-28 | AS5300, AS7130 SS | 52d | 0d | 3Construction | Cooling Tower-3 (addition in existing facilities) | 3Mech |  |
|  | EI | **Electrical & Instrumentation** |  | 2027-05-29 | 2027-07-28 |  |  |  |  |  |  |  |
| AS10860 |  | Electrical & Instrumentation works | 52d | 2027-05-29 | 2027-07-28 | AS8380 SS+104d, AS4770, AS2041 | 52d | 32d | 3Construction | Cooling Tower-3 (addition in existing facilities) | 4EI |  |
|  | FTC | **Fume Treatment Centre (FTC)** |  | 2026-04-18 | 2027-08-30 |  |  |  |  |  |  |  |
|  | CIVIL | **Civil** |  | 2026-04-18 | 2026-10-23 |  |  |  |  |  |  |  |
| AS10770 |  | Foundation and concreting works | 156d | 2026-04-18 | 2026-10-23 | AS10550 SS | 54d | 0d | 3Construction |  | 1Civ |  |
|  | STR | **Structural** |  | 2026-08-21 | 2026-12-24 |  |  |  |  |  |  |  |
| AS10980 |  | Steel structure erection | 104d | 2026-08-21 | 2026-12-24 | AS10770 SS+104d, AS10030 FS+104d | 80d | 67d | 3Construction |  | 2Str |  |
|  | ME | **Mechanical** |  | 2026-11-12 | 2027-07-17 |  |  |  |  |  |  |  |
| AS11150 |  | Equipment erection | 208d | 2026-11-12 | 2027-07-17 | AS9800, AS9290 SS+26d, AS10770 SS+130d, AS10980 SS | 13d | 0d | 3Construction |  | 3Mech |  |
|  | EI | **Electrical & Instrumentation** |  | 2027-02-25 | 2027-08-30 |  |  |  |  |  |  |  |
| AS11440 |  | Electrical & Instrumentation works-FTC | 156d | 2027-02-25 | 2027-08-30 | AS11150 SS+88d, AS9860, AS9870 | 13d | 0d | 3Construction |  | 4EI | Considering 22 months from LOI |
|  | AHS-ACS | **Green and baked anode handling and storage system & Anode cleaning system** |  | 2026-03-14 | 2027-05-13 |  |  |  |  |  |  |  |
|  | CIVIL | **Civil** |  | 2026-03-14 | 2026-11-19 |  |  |  |  |  |  |  |
| AS6000 |  | Foundation and concreting works | 208d | 2026-03-14 | 2026-11-19 | AS5470, AS1890, AS1940.01 | 132d | 15d | 3Construction |  | 1Civ |  |
|  | STR | **Structural** |  | 2026-08-03 | 2027-04-12 |  |  |  |  |  |  |  |
| AS9610 |  | Steel structure erection | 208d | 2026-08-03 | 2027-04-12 | AS6000 SS+104d, AS5020 FS+104d | 117d | 0d | 3Construction |  | 2Str |  |
|  | ME | **Mechanical** |  | 2027-02-09 | 2027-05-13 |  |  |  |  |  |  |  |
| AS10850 |  | Equipment erection | 78d | 2027-02-09 | 2027-05-13 | AS9610 SS+156d, AS3580, AS2031, A2330 | 117d | 0d | 3Construction |  | 3Mech |  |
|  | EI | **Electrical & Instrumentation** |  | 2027-03-12 | 2027-05-13 |  |  |  |  |  |  |  |
| AS11060 |  | Electrical & Instrumentation works | 52d | 2027-03-12 | 2027-05-13 | AS10850 SS+26d, AS4330, AS4340, AS2041 | 117d | 97d | 3Construction |  | 4EI |  |
|  | ARS | **Anode Rodding Shop** |  | 2025-12-13 | 2027-09-06 |  |  |  |  |  |  |  |
|  | AARS | **Anode Rodding Shop (addition in existing facilities)** |  | 2026-11-06 | 2027-09-06 |  |  |  |  |  |  |  |
|  | CIVIL | **Civil** |  | 2026-11-06 | 2026-12-05 |  |  |  |  |  |  |  |
| AS6010 |  | Foundation and concreting works - Pre Cleaning Station | 26d | 2026-11-06 | 2026-12-05 | AS4830, AS11530 | 42d | 0d | 3Construction | Anode Rodding Shop (addition in existing facilities) | 1Civ |  |
| AS7360 |  | Foundation and concreting works - Finishing Station | 26d | 2026-11-06 | 2026-12-05 | AS4830, AS11530 | 42d | 0d | 3Construction | Anode Rodding Shop (addition in existing facilities) | 1Civ |  |
| AS7370 |  | Readiness of foundation - Bath Conveying | 26d | 2026-11-06 | 2026-12-05 | AS4830, AS11530 | 42d | 0d | 3Construction | Anode Rodding Shop (addition in existing facilities) | 1Civ |  |
| AS8030 |  | Foundation and concreting works - Thimble Stripping unit | 26d | 2026-11-06 | 2026-12-05 | AS4830, AS11530 | 42d | 0d | 3Construction | Anode Rodding Shop (addition in existing facilities) | 1Civ |  |
| AS8690 |  | Foundation and concreting works - Baked Anode Conveyor | 26d | 2026-11-06 | 2026-12-05 | AS4830, AS11530 | 42d | 0d | 3Construction | Anode Rodding Shop (addition in existing facilities) | 1Civ |  |
| AS8820 |  | Foundation and concreting works - Rodding Bench | 26d | 2026-11-06 | 2026-12-05 | AS4830, AS11530 | 42d | 0d | 3Construction | Anode Rodding Shop (addition in existing facilities) | 1Civ |  |
| AS8830 |  | Readiness of foundation - Induction Furnace | 26d | 2026-11-06 | 2026-12-05 | AS4830, AS11530 | 42d | 0d | 3Construction | Anode Rodding Shop (addition in existing facilities) | 1Civ |  |

Notes:
- AS8380: Text4: Anode Baking Furnace (ABF)
- AS10860: Text4: Anode Baking Furnace (ABF)
- AS10770: Text4: Fume Treatment Centre (FTC)
- AS10980: Text4: Fume Treatment Centre (FTC)
- AS11150: Text4: Fume Treatment Centre (FTC)
- AS11440: Text4: Fume Treatment Centre (FTC)
- AS6000: Text4: Green and baked anode handling and storage system & Anode cleaning system
- AS9610: Text4: Green and baked anode handling and storage system & Anode cleaning system
- AS10850: Text4: Green and baked anode handling and storage system & Anode cleaning system
- AS11060: Text4: Green and baked anode handling and storage system & Anode cleaning system
- AS6010: Text4: Anode Rodding Shop
- AS7360: Text4: Anode Rodding Shop
- AS7370: Text4: Anode Rodding Shop
- AS8030: Text4: Anode Rodding Shop
- AS8690: Text4: Anode Rodding Shop
- AS8820: Text4: Anode Rodding Shop
- AS8830: Text4: Anode Rodding Shop

| ID | WBS | Activity | Duration | Start | Finish | Predecessors | Total float | Free float | Text1 | Text2 | Text3 | Text4 |
| --- | --- | --- | --- | --- | --- | --- | --- | --- | --- | --- | --- | --- |
|  | STR | **Structural** |  |  |  |  |  |  |  |  |  |  |
|  | ME | **Mechanical** |  | 2026-11-06 | 2027-09-03 |  |  |  |  |  |  |  |
| AS11520 |  | Equipment erection - Over head P&F Conveyors | 229d | 2026-11-06 | 2027-08-05 | AS7190 | 68d | 26d | 3Construction | Anode Rodding Shop (addition in existing facilities) | 3Mech | Anode Rodding Shop |
| AS10650 |  | Equipment erection - Bath Cleaning Unit | 227d | 2026-12-07 | 2027-09-03 | AS7150, AS3900, AS6010, AS7360, AS7370 | 42d | 0d | 3Construction | Anode Rodding Shop (addition in existing facilities) | 3Mech | Anode Rodding Shop |
| AS10920 |  | Equipment erection - Thimble Stripping unit | 227d | 2026-12-07 | 2027-09-03 | AS8030, AS7140 | 42d | 0d | 3Construction | Anode Rodding Shop (addition in existing facilities) | 3Mech | Anode Rodding Shop |
| AS10930 |  | Equipment erection - Anode Casting Unit | 227d | 2026-12-07 | 2027-09-03 | AS8690, AS8820, AS7170 | 42d | 0d | 3Construction | Anode Rodding Shop (addition in existing facilities) | 3Mech | Anode Rodding Shop |
| AS11510 |  | Equipment erection - Induction Furnace | 227d | 2026-12-07 | 2027-09-03 | AS8830, AS7160 | 42d | 0d | 3Construction | Anode Rodding Shop (addition in existing facilities) | 3Mech | Anode Rodding Shop |
|  | EI | **Electrical & Instrumentation** |  | 2026-12-07 | 2027-09-06 |  |  |  |  |  |  |  |
| AS11280 |  | Electrical & Instrumentation works | 229d | 2026-12-07 | 2027-09-06 | AS10650 SS, AS3920 SS, AS10920 SS, AS10930 SS, AS11510 SS, AS11520 SS, AS7210 | 42d | 0d | 3Construction | Anode Rodding Shop (addition in existing facilities) | 4EI | Anode Rodding Shop |
|  | RSCR | **Sub-station for ARS (addition in existing facilities)** |  | 2026-11-06 | 2026-12-05 |  |  |  |  |  |  |  |
|  | CIVIL | **Civil** |  | 2026-11-06 | 2026-12-05 |  |  |  |  |  |  |  |
| AS8530 |  | Foundation and concreting works ARS SS | 26d | 2026-11-06 | 2026-12-05 | AS7840, AS6010 SS | 271d | 0d | 3Construction | Rodded Anode Assembly storage shed | 1Civ | Anode Rodding Shop |
|  | EI | **Electrical & Instrumentation** |  | 2026-11-06 | 2026-12-05 |  |  |  |  |  |  |  |
| AS9150 |  | Electrical & Instrumentation works ARS SS | 26d | 2026-11-06 | 2026-12-05 | AS8530 SS, AS8520, AS7210 | 271d | 229d | 3Construction | Rodded Anode Assembly storage shed | 4EI | Anode Rodding Shop |
|  | AAST | **Rodded Anode Assembly storage shed** |  | 2025-12-13 | 2026-12-14 |  |  |  |  |  |  |  |
|  | CIVIL | **Civil** |  | 2025-12-13 | 2026-10-05 |  |  |  |  |  |  |  |
| AS6020 |  | Foundation and concreting works | 245d | 2025-12-13 | 2026-10-05 | AS5480, AS1971 FS+28d | 67d | 25d | 3Construction | Rodded Anode Assembly storage shed | 1Civ | Anode Rodding Shop |
|  | STR | **Structural** |  | 2026-03-17 | 2026-12-14 |  |  |  |  |  |  |  |
| AS10130 |  | Steel structure erection | 227d | 2026-03-17 | 2026-12-14 | AS6020 SS+52d, AS7200 SS | 42d | 0d | 3Construction | Rodded Anode Assembly storage shed | 2Str | Anode Rodding Shop |
|  | ME | **Mechanical** |  | 2026-06-17 | 2026-11-04 |  |  |  |  |  |  |  |
| AS10660 |  | Equipment erection | 52d | 2026-06-17 | 2026-08-18 | AS10130 SS+78d, AS2031 | 335d | 0d | 3Construction | Rodded Anode Assembly storage shed | 3Mech | Anode Rodding Shop |
| AS11530 |  | Inventory Build up (1200 nos) | 74d | 2026-08-06 | 2026-11-04 | AS10130 SS+120d, AS11402 SS | 42d | 0d | 3Construction | Rodded Anode Assembly storage shed | 3Mech | Anode Rodding Shop |
|  | EI | **Electrical & Instrumentation** |  | 2026-07-18 | 2026-09-19 |  |  |  |  |  |  |  |
| AS11290 |  | Electrical & Instrumentation works | 52d | 2026-07-18 | 2026-09-19 | AS10660 SS+26d, AS4360, AS4370, AS2041 | 335d | 293d | 3Construction | Rodded Anode Assembly storage shed | 4EI | Anode Rodding Shop |

| ID | WBS | Activity | Duration | Start | Finish | Predecessors | Total float | Free float | Text1 | Text2 | Text3 | Text4 |
| --- | --- | --- | --- | --- | --- | --- | --- | --- | --- | --- | --- | --- |
|  | UTI | **Utilities & Offsite activities** |  | 2026-01-02 | 2027-12-09 |  |  |  |  |  |  |  |
|  | DS-PH | **Sub soil drainage system & pump house** |  | 2026-03-11 | 2026-12-19 |  |  |  |  |  |  |  |
|  | CIVIL | **Civil** |  | 2026-03-11 | 2026-05-11 |  |  |  |  |  |  |  |
| AS6030 |  | Foundation and concreting works | 52d | 2026-03-11 | 2026-05-11 | AS5490 | 296d | 37d | 3Construction | Sub soil drainage system & pump house | 1Civ | Utilities & Offsite activities |
|  | STR | **Structural** |  | 2026-06-24 | 2026-09-26 |  |  |  |  |  |  |  |
| AS8270 |  | Steel structure erection | 78d | 2026-06-24 | 2026-09-26 | AS6030, AS5060 FS+104d | 259d | 0d | 3Construction | Sub soil drainage system & pump house | 2Str | Utilities & Offsite activities |
|  | ME | **Mechanical** |  | 2026-09-28 | 2026-11-28 |  |  |  |  |  |  |  |
| AS9920 |  | Equipment erection | 52d | 2026-09-28 | 2026-11-28 | AS8270, AS3630, AS7220, AS2031 | 259d | 0d | 3Construction | Sub soil drainage system & pump house | 3Mech | Utilities & Offsite activities |
|  | EI | **Electrical & Instrumentation** |  | 2026-11-30 | 2026-12-19 |  |  |  |  |  |  |  |
| AS10530 |  | Electrical & Instrumentation works | 18d | 2026-11-30 | 2026-12-19 | AS9920, AS4390, AS4400, AS2041 | 259d | 204d | 3Construction | Sub soil drainage system & pump house | 4EI | Utilities & Offsite activities |
|  | OHT | **Over head tank - Drinking water** |  | 2026-01-21 | 2027-02-22 |  |  |  |  |  |  |  |
|  | CIVIL | **Civil** |  | 2026-01-21 | 2026-11-30 |  |  |  |  |  |  |  |
| AS6390 |  | Foundation and concreting works | 260d | 2026-01-21 | 2026-11-30 | AS5600, AS1890 FS+60d | 206d | 0d | 3Construction | Over head tank - Drinking water | 1Civ | Utilities & Offsite activities |
|  | STR | **Structural** |  | 2026-12-01 | 2026-12-31 |  |  |  |  |  |  |  |
| AS10880 |  | Steel structure erection | 26d | 2026-12-01 | 2026-12-31 | AS6390, AS5170 FS+104d | 206d | 0d | 3Construction | Over head tank - Drinking water | 2Str | Utilities & Offsite activities |
|  | ME | **Mechanical** |  | 2027-01-01 | 2027-02-01 |  |  |  |  |  |  |  |
| AS10960 |  | Equipment erection | 26d | 2027-01-01 | 2027-02-01 | AS10880, AS3930, AS2031 | 206d | 0d | 3Construction | Over head tank - Drinking water | 3Mech | Utilities & Offsite activities |
|  | EI | **Electrical & Instrumentation** |  | 2027-02-02 | 2027-02-22 |  |  |  |  |  |  |  |
| AS11020 |  | Electrical & Instrumentation works | 18d | 2027-02-02 | 2027-02-22 | AS10960, AS4480, AS4490, AS2041 | 206d | 151d | 3Construction | Over head tank - Drinking water | 4EI | Utilities & Offsite activities |
|  | OHTCLW | **Over head tank - Clarified water** |  | 2026-01-21 | 2027-02-22 |  |  |  |  |  |  |  |
|  | CIVIL | **Civil** |  | 2026-01-21 | 2026-11-30 |  |  |  |  |  |  |  |
| AS6400 |  | Foundation and concreting works | 260d | 2026-01-21 | 2026-11-30 | AS5610, AS1890 FS+60d | 206d | 0d | 3Construction | Over head tank- clarified water | 1Civ | Utilities & Offsite activities |
|  | STR | **Structural** |  | 2026-12-01 | 2026-12-31 |  |  |  |  |  |  |  |
| AS10890 |  | Steel structure erection | 26d | 2026-12-01 | 2026-12-31 | AS6400, AS5190 FS+104d | 206d | 0d | 3Construction | Over head tank- clarified water | 2Str | Utilities & Offsite activities |

| ID | WBS | Activity | Duration | Start | Finish | Predecessors | Total float | Free float | Text1 | Text2 | Text3 | Text4 |
| --- | --- | --- | --- | --- | --- | --- | --- | --- | --- | --- | --- | --- |
|  | ME | **Mechanical** |  | 2027-01-01 | 2027-02-01 |  |  |  |  |  |  |  |
| AS10970 |  | Equipment erection | 26d | 2027-01-01 | 2027-02-01 | AS10890, AS3960, AS2031 | 206d | 0d | 3Construction | Over head tank- clarified water | 3Mech | Utilities & Offsite activities |
|  | EI | **Electrical & Instrumentation** |  | 2027-02-02 | 2027-02-22 |  |  |  |  |  |  |  |
| AS11030 |  | Electrical & Instrumentation works | 18d | 2027-02-02 | 2027-02-22 | AS10970, AS4510, AS4520, AS2041 | 206d | 151d | 3Construction | Over head tank- clarified water | 4EI | Utilities & Offsite activities |
|  | STD | **Storm water drainage system** |  | 2026-02-09 | 2026-08-12 |  |  |  |  |  |  |  |
|  | CIVIL | **Civil** |  | 2026-02-09 | 2026-06-11 |  |  |  |  |  |  |  |
| AS5530 |  | Foundation and concreting works | 104d | 2026-02-09 | 2026-06-11 | AS5070 | 365d | 0d | 3Construction | Storm water drainage system | 1Civ | Utilities & Offsite activities |
|  | ME | **Mechanical** |  | 2026-06-12 | 2026-08-12 |  |  |  |  |  |  |  |
| AS8780 |  | Equipment erection | 52d | 2026-06-12 | 2026-08-12 | AS5530, AS2031 | 365d | 310d | 3Construction | Storm water drainage system | 3Mech | Utilities & Offsite activities |
|  | FPS | **Fire pumphouse & Station (addition in existing facilities)** |  | 2026-04-22 | 2027-01-22 |  |  |  |  |  |  |  |
|  | CIVIL | **Civil** |  | 2026-04-22 | 2026-10-27 |  |  |  |  |  |  |  |
| AS7640 |  | Foundation and concreting works | 156d | 2026-04-22 | 2026-10-27 | AS6070 | 234d | 0d | 3Construction | Fire pumphouse & Station (addition in existing facilities) | 1Civ | Utilities & Offsite activities |
|  | STR | **Structural** |  | 2026-10-28 | 2026-11-27 |  |  |  |  |  |  |  |
| AS10540 |  | Steel structure erection | 26d | 2026-10-28 | 2026-11-27 | AS7640, AS5550 FS+104d | 234d | 3d | 3Construction | Fire pumphouse & Station (addition in existing facilities) | 2Str | Utilities & Offsite activities |
|  | ME | **Mechanical** |  | 2026-12-02 | 2027-01-01 |  |  |  |  |  |  |  |
| AS10700 |  | Equipment erection | 26d | 2026-12-02 | 2027-01-01 | AS10540, AS5100, AS7230, AS2031, AS13901 | 231d | 0d | 3Construction | Fire pumphouse & Station (addition in existing facilities) | 3Mech | Utilities & Offsite activities |
|  | EI | **Electrical & Instrumentation** |  | 2027-01-02 | 2027-01-22 |  |  |  |  |  |  |  |
| AS10800 |  | Electrical & Instrumentation works | 18d | 2027-01-02 | 2027-01-22 | AS10700, AS5210, AS5220, AS2041 | 231d | 176d | 3Construction | Fire pumphouse & Station (addition in existing facilities) | 4EI | Utilities & Offsite activities |
|  | PCR | **Pipe & Cable racks** |  | 2026-01-02 | 2027-04-15 |  |  |  |  |  |  |  |
|  | CIVIL | **Civil** |  | 2026-01-02 | 2026-09-08 |  |  |  |  |  |  |  |
| AS9960 |  | Foundation and concreting works | 208d | 2026-01-02 | 2026-09-08 | AS9760 | 35d | 0d | 3Construction | Pipe & Cable racks | 1Civ | Utilities & Offsite activities |
|  | STR | **Structural** |  | 2026-06-05 | 2026-12-10 |  |  |  |  |  |  |  |
| AS10830 |  | Steel structure erection | 156d | 2026-06-05 | 2026-12-10 | AS9960 SS+104d, AS9140 FS+104d, AS6930 SS+39d | 10d | 0d | 3Construction | Pipe & Cable racks | 2Str | Utilities & Offsite activities |
|  | ME | **Mechanical** |  | 2026-09-08 | 2027-02-11 |  |  |  |  |  |  |  |
| AS11100 |  | Piping works | 130d | 2026-09-08 | 2027-02-11 | AS10830 SS+78d, AS8350, AS7450 SS+12d, AS7460 SS+12d, AS7470 SS+12d, AS2031, AS2031.01 | 10d | 0d | 3Construction | Pipe & Cable racks | 3Mech | Utilities & Offsite activities |

| ID | WBS | Activity | Duration | Start | Finish | Predecessors | Total float | Free float | Text1 | Text3 | Text4 |
| --- | --- | --- | --- | --- | --- | --- | --- | --- | --- | --- | --- |
|  | EI | **Electrical & Instrumentation** |  | 2026-12-11 | 2027-04-15 |  |  |  |  |  |  |
| AS11330 |  | Electrical & Instrumentation works | 104d | 2026-12-11 | 2027-04-15 | AS8800, AS8810, AS2041, AS10830 | 93d | 65d | 3Construction | 4EI | Utilities & Offsite activities |
|  | EMS | **Environment monitoring system for Pot room, GTC, FTC** |  | 2026-04-30 | 2027-03-22 |  |  |  |  |  |  |
|  | CIVIL | **Civil** |  | 2026-04-30 | 2026-05-30 |  |  |  |  |  |  |
| AS6040 |  | Foundation and concreting works | 26d | 2026-04-30 | 2026-05-30 | AS5500 | 349d | 63d | 3Construction | 1Civ | Utilities & Offsite activities |
|  | STR | **Structural** |  | 2026-08-14 | 2026-09-15 |  |  |  |  |  |  |
| AS7570 |  | Steel structure erection | 26d | 2026-08-14 | 2026-09-15 | AS6040, AS5090 FS+104d | 286d | 102d | 3Construction | 2Str | Utilities & Offsite activities |
|  | ME | **Mechanical** |  | 2027-01-18 | 2027-02-17 |  |  |  |  |  |  |
| AS8280 |  | Equipment erection | 26d | 2027-01-18 | 2027-02-17 | AS7570, AS7440, AS2031 | 184d | 0d | 3Construction | 3Mech | Utilities & Offsite activities |
|  | ELE | **Electrical & Instrumentation** |  | 2027-02-18 | 2027-03-22 |  |  |  |  |  |  |
| AS8960 |  | Electrical & Instrumentation works | 26d | 2027-02-18 | 2027-03-22 | AS8280, AS4420, AS4430, AS2041 | 184d | 129d | 3Construction | 4EI | Utilities & Offsite activities |
|  | 1 | **Infrastructure** |  | 2026-12-31 | 2027-12-09 |  |  |  |  |  |  |
|  | 1 | **Civil** |  | 2026-12-31 | 2027-12-09 |  |  |  |  |  |  |
| A1150 |  | Drain | 260d | 2026-12-31 | 2027-11-09 | A1170, AS12440 SS+27d | 92d | 0d | 3Construction | 1Civ | Utilities & Offsite activities |
| A1160 |  | Road | 260d | 2027-02-01 | 2027-12-09 | A1150 SS+26d, A1170 | 92d | 0d | 3Construction | 1Civ | Utilities & Offsite activities |
|  | BR | **Blower Room (addition in existing facilities)** |  | 2027-03-31 | 2027-06-14 |  |  |  |  |  |  |
|  | CIVIL | **Civil** |  | 2027-03-31 | 2027-04-29 |  |  |  |  |  |  |
| AS5270 |  | Foundation and concreting works | 26d | 2027-03-31 | 2027-04-29 | AS4660, AS9930 | 38d | 0d | 3Construction | 1Civ | Utilities & Offsite activities |
|  | ME | **Mechanical** |  | 2027-04-30 | 2027-05-31 |  |  |  |  |  |  |
| AS5630 |  | Equipment erection | 26d | 2027-04-30 | 2027-05-31 | AS5270, AS2031 | 90d | 0d | 3Construction | 3Mech | Utilities & Offsite activities |
|  | EI | **Electrical & Instrumentation** |  | 2027-06-01 | 2027-06-14 |  |  |  |  |  |  |
| AS6360 |  | Electrical & Instrumentation works | 12d | 2027-06-01 | 2027-06-14 | AS5630, AS4670, AS9300, AS2041 | 90d | 70d | 3Construction | 4EI | Utilities & Offsite activities |
|  | CAS | **Compressed Air Station & Compressor Control Room (addition in existing facilities)** |  | 2027-04-30 | 2027-07-14 |  |  |  |  |  |  |
|  | CIVIL | **Civil** |  | 2027-04-30 | 2027-05-31 |  |  |  |  |  |  |
| AS5280 |  | Foundation and concreting works | 26d | 2027-04-30 | 2027-05-31 | AS4690, AS5270, AS4680 | 38d | 0d | 3Construction | 1Civ | Utilities & Offsite activities |

Notes:
- AS11330: Text2: Pipe & Cable racks
- AS6040: Text2: Environment monitoring system for Pot room, GTC, FTC
- AS7570: Text2: Environment monitoring system for Pot room, GTC, FTC
- AS8280: Text2: Environment monitoring system for Pot room, GTC, FTC
- AS8960: Text2: Environment monitoring system for Pot room, GTC, FTC
- A1150: Text2: Infrastructure
- A1160: Text2: Infrastructure
- AS5270: Text2: Blower Room (addition in existing facilities)
- AS5630: Text2: Blower Room (addition in existing facilities)
- AS6360: Text2: Blower Room (addition in existing facilities)
- AS5280: Text2: Compressed Air Station & Compressor Control Room (addition in existing facilities)

| ID | WBS | Activity | Duration | Start | Finish | Predecessors | Total float | Free float | Text1 | Text3 |
| --- | --- | --- | --- | --- | --- | --- | --- | --- | --- | --- |
|  | ME | **Mechanical** |  | 2027-06-01 | 2027-06-30 |  |  |  |  |  |
| AS5640 |  | Equipment erection | 26d | 2027-06-01 | 2027-06-30 | AS5280, AS13961 | 64d | 0d | 3Construction | 3Mech |
|  | EI | **Electrical & Instrumentation** |  | 2027-07-01 | 2027-07-14 |  |  |  |  |  |
| AS6370 |  | Electrical & Instrumentation works | 12d | 2027-07-01 | 2027-07-14 | AS5640, AS4700, AS4710, AS2041 | 64d | 44d | 3Construction | 4EI |
|  | ARAD | **Air Receiver & Air dryer (addition in existing facilities)** |  | 2027-06-01 | 2027-08-13 |  |  |  |  |  |
|  | CIVIL | **Civil** |  | 2027-06-01 | 2027-06-30 |  |  |  |  |  |
| AS5290 |  | Foundation and concreting works | 26d | 2027-06-01 | 2027-06-30 | AS4720, AS4730, AS5280 | 38d | 0d | 3Construction | 1Civ |
|  | ME | **Mechanical** |  | 2027-07-01 | 2027-07-30 |  |  |  |  |  |
| AS5650 |  | Equipment erection | 26d | 2027-07-01 | 2027-07-30 | AS5290, AS2031 | 38d | 0d | 3Construction | 3Mech |
|  | EI | **Electrical & Instrumentation** |  | 2027-07-31 | 2027-08-13 |  |  |  |  |  |
| AS6380 |  | Electrical & Instrumentation works | 12d | 2027-07-31 | 2027-08-13 | AS5650, AS4740, AS4750, AS2041 | 38d | 18d | 3Construction | 4EI |
|  | ARAD1 | **Natural Gas System** |  | 2026-01-02 | 2026-05-06 |  |  |  |  |  |
|  | CIVIL | **Civil** |  | 2026-01-02 | 2026-03-05 |  |  |  |  |  |
| AS13521 |  | Foundation and concreting works | 52d | 2026-01-02 | 2026-03-05 | AS9960 SS | 331d | 0d | 3Construction | 1Civ |
|  | ME | **Mechanical** |  | 2026-03-06 | 2026-05-06 |  |  |  |  |  |
| AS13531 |  | Equipment erection | 52d | 2026-03-06 | 2026-05-06 | AS13521 | 331d | 297d | 3Construction | 3Mech |
|  | EI | **Electrical & Instrumentation** |  |  |  |  |  |  |  |  |
|  | EP | **Electrical packages for Smelter (Lighting, Earthing, Fire Alarm & Telephone)** |  | 2027-02-01 | 2027-08-20 |  |  |  |  |  |
|  | LI | **Lighting** |  | 2027-02-01 | 2027-06-10 |  |  |  |  |  |
|  | CIV | **Civil** |  | 2027-02-01 | 2027-04-03 |  |  |  |  |  |
| AS9450 |  | Foundation and concreting works | 52d | 2027-02-01 | 2027-04-03 | AS8630, A1160 SS | 116d | 0d | 3Construction | 1Civ |
|  | EI | **Electrical & Instrumentation** |  | 2027-04-05 | 2027-06-10 |  |  |  |  |  |
| AS10470 |  | Electrical & Instrumentation works | 57d | 2027-04-05 | 2027-06-10 | AS9450, AS8910, AS8900, AS6940, AS2041 | 116d | 61d | 3Construction | 4EI |
|  | ERTH | **Earthing** |  | 2027-02-01 | 2027-06-04 |  |  |  |  |  |
|  | CIV | **Civil** |  | 2027-02-01 | 2027-04-03 |  |  |  |  |  |
| AS9460 |  | Foundation and concreting works | 52d | 2027-02-01 | 2027-04-03 | AS8650, AS9450 SS | 121d | 0d | 3Construction | 1Civ |

Notes:
- AS5640: Text2: Compressed Air Station & Compressor Control Room (addition in existing facilities) / Text4: Utilities & Offsite activities
- AS6370: Text2: Compressed Air Station & Compressor Control Room (addition in existing facilities) / Text4: Utilities & Offsite activities
- AS5290: Text2: Air Receiver & Air dryer (addition in existing facilities) / Text4: Utilities & Offsite activities
- AS5650: Text2: Air Receiver & Air dryer (addition in existing facilities) / Text4: Utilities & Offsite activities
- AS6380: Text2: Air Receiver & Air dryer (addition in existing facilities) / Text4: Utilities & Offsite activities
- AS13521: Text2: Natural Gas System / Text4: Utilities & Offsite activities
- AS13531: Text2: Natural Gas System / Text4: Utilities & Offsite activities
- AS9450: Text2: Lighting / Text4: Electrical packages for Smelter (Lighting, Earthing, Fire Alarm & Telephone)
- AS10470: Text2: Lighting / Text4: Electrical packages for Smelter (Lighting, Earthing, Fire Alarm & Telephone)
- AS9460: Text2: Earthing / Text4: Electrical packages for Smelter (Lighting, Earthing, Fire Alarm & Telephone)

| ID | WBS | Activity | Duration | Start | Finish | Predecessors | Total float | Free float | Text1 | Text2 | Text3 | Agency |
| --- | --- | --- | --- | --- | --- | --- | --- | --- | --- | --- | --- | --- |
|  | EI | **Electrical & Instrumentation** |  | 2027-04-05 | 2027-06-04 |  |  |  |  |  |  |  |
| AS10620 |  | Electrical & Instrumentation works | 52d | 2027-04-05 | 2027-06-04 | AS9460, AS8660, AS6940, AS2041 | 121d | 66d | 3Construction | Earthing | 4EI |  |
|  | FAT | **Fire Alarm & Telephone** |  | 2027-07-22 | 2027-08-20 |  |  |  |  |  |  |  |
|  | EI | **Electrical & Instrumentation** |  | 2027-07-22 | 2027-08-20 |  |  |  |  |  |  |  |
| AS8920 |  | Electrical & Instrumentation works | 26d | 2027-07-22 | 2027-08-20 | AS8000, AS8010, AS6940, AS2041, AS10810 SS, AS11090 FS+8d | 55d | 0d | 3Construction | Fire alarm & Telephone | 4EI |  |
|  | COM | **Commissioning** |  | 2027-04-15 | 2028-03-31 |  |  |  |  |  |  |  |
|  | CT | **Pre-requisites for cold trial** |  | 2027-04-15 | 2027-11-08 |  |  |  |  |  |  |  |
| AS1959.01 |  | Precom GIS | 9d | 2027-04-15 | 2027-04-24 | AS13241 | 248d | 0d |  |  |  | GEV |
| AS1959.02 |  | Comm GIS | 11d | 2027-04-27 | 2027-05-10 | AS1959.01 FS+1d | 248d | 49d |  |  |  | GEV |
| AS1964.1 |  | Readyness of Coke Handling System | 26d | 2027-06-23 | 2027-07-22 | AS13511 | 106d | 107d | 4Commissioning | Pre-requisites for cold trial |  |  |
| AS1959.03 |  | Precom Aux | 9d | 2027-07-07 | 2027-07-16 | AS1959.02, A2530 SS | 199d | 0d |  |  |  | GEV |
| AS1961 |  | Readyness of GAP | 78d | 2027-07-15 | 2027-10-16 | AS11130, AS1800, AS11310, AS10480, AS10450 | 10d | 0d | 4Commissioning | Pre-requisites for cold trial |  |  |
| AS1959.04 |  | Com Aux | 13d | 2027-07-17 | 2027-07-31 | AS1959.03 | 199d | 200d |  |  |  | GEV |
| AS1965 |  | Readyness of Utility system | 26d | 2027-08-21 | 2027-09-22 | AS8920, AS10620, AS10470, AS8960, AS11330, AS10800, AS8780, AS11030, AS11020, AS10530 | 55d | 56d | 4Commissioning | Pre-requisites for cold trial |  |  |
| AS1960 |  | Ready for Pre Operational Verification and hot gas of GTC | 49d | 2027-08-26 | 2027-10-25 | AS9590, AS10460, AS11490, AS9890, AS11370 | 28d | 0d | 4Commissioning | Pre-requisites for cold trial |  |  |
| AS1962 |  | Readyness of Anode Baking Furnace | 0d | 2027-09-06 | 2027-09-06 | AS11060, AS10860, AS10080, AS6380, AS6370, AS6360, AS10810, AS11000, AS11110, AS10100 | 20d | 7d | 4Commissioning | Pre-requisites for cold trial |  |  |
| AS1963 |  | Readyness of Anode Rodding Shop | 26d | 2027-09-07 | 2027-10-08 | AS11280, AS9150, AS11290 | 42d | 43d | 4Commissioning | Pre-requisites for cold trial |  |  |
| AS1959.38 |  | Precom group 4 | 10d | 2027-09-10 | 2027-09-22 | A3100, A3160 | 9d | 0d |  |  |  | GEV |
| AS1959.58 |  | Precom group 5 | 10d | 2027-09-10 | 2027-09-22 | A3200, A3260 | 11d | 0d |  |  |  | GEV |
| AS1959.05 |  | Precom group 1 | 9d | 2027-09-13 | 2027-09-23 | A2800, A2860 FS+1d | 6d | 0d |  |  |  | GEV |
| AS1959.07 |  | Precom group 2 | 9d | 2027-09-14 | 2027-09-24 | A2900, A2960 | 5d | 0d |  |  |  | GEV |
| AS1959.18 |  | Precom group 3 | 9d | 2027-09-14 | 2027-09-24 | A3000, A3060 | 7d | 0d |  |  |  | GEV |
| AS1964 |  | Readyness of Cast house | 26d | 2027-09-22 | 2027-10-22 | AS9600, AS11010, AS9950, AS9720, AS10840, AS11450 | 30d | 31d | 4Commissioning | Pre-requisites for cold trial |  |  |
| AS1959.48 |  | Comm group 4 | 18d | 2027-09-23 | 2027-10-14 | AS1959.38 | 9d | 0d |  |  |  | GEV |
| AS1959.68 |  | Cmom group 5 | 17d | 2027-09-23 | 2027-10-13 | AS1959.58 | 11d | 0d |  |  |  | GEV |
| AS1959 |  | Readyness of Rectifier | 30d | 2027-09-24 | 2027-10-30 | AS10780, AS13211, AS13231, AS8240 SS+186d | -1d | 0d | 4Commissioning | Pre-requisites for cold trial |  |  |
| AS1959.06 |  | Comm group 1 | 21d | 2027-09-24 | 2027-10-19 | AS1959.05 | 6d | 0d |  |  |  | GEV |
| AS1959.08 |  | Comm group 2 | 20d | 2027-09-27 | 2027-10-20 | AS1959.07 FS+1d | 5d | 0d |  |  |  | GEV |
| AS1959.28 |  | Comm group 3 | 18d | 2027-09-27 | 2027-10-18 | AS1959.18 FS+1d | 7d | 0d |  |  |  | GEV |
| AS1958 |  | Readyness of Pot line | 24d | 2027-10-01 | 2027-10-30 | AS11400, AS11419, AS11640, AS11590, AS11620, AS11090, AS5260, AS6440, AS11363, AS11345, AS11354, AS11346, AS11364, AS11432, AS11412, AS11357, AS11430, AS11367, AS11470, AS11344.01, AS11344.02, AS11344.03, AS11344.04, AS11344.05, AS11344.06, AS11344.07, AS11344.08, AS11344.09, AS11344.10, AS11344.11, AS11344.12, AS11344.13, AS13061, AS12960, AS12970, A1350, AS11354.01, AS11354.02, AS11354.03, AS11354.04, AS11354.05, AS11354.06, AS11354.07, AS11354.08, AS11354.09, AS11354.10, AS11354.12, A2200, A2150, AS11410, AS11630, AS11580 | -1d | 0d | 4Commissioning | Pre-requisites for cold trial |  |  |
| AS1957 |  | Readyness of Alumina Handling system | 26d | 2027-10-07 | 2027-11-08 | AS10690, AS11240, AS10680 | 18d | 19d | 4Commissioning | Pre-requisites for cold trial |  |  |

Notes:
- AS10620: Text4: Electrical packages for Smelter (Lighting, Earthing, Fire Alarm & Telephone)
- AS8920: Text4: Electrical packages for Smelter (Lighting, Earthing, Fire Alarm & Telephone)
- AS1964.1: Text4: Commissioning
- AS1961: Text4: Commissioning
- AS1965: Text4: Commissioning
- AS1960: Text4: Commissioning
- AS1962: Text4: Commissioning
- AS1963: Text4: Commissioning
- AS1964: Text4: Commissioning
- AS1959: Text4: Commissioning
- AS1958: Text4: Commissioning / Notes: C&S agency mobilization is delayed to catch up this delay, The durations for erection of the bus bar, pot shell, pot lining, and pot superstructure have been crashed.
- AS1957: Text4: Commissioning

| ID | WBS | Activity | Duration | Start | Finish | Predecessors | Total float | Free float | Text1 | Text2 | Text4 | Agency |
| --- | --- | --- | --- | --- | --- | --- | --- | --- | --- | --- | --- | --- |
|  | FMO | **Cold trail & First metal out** |  | 2027-09-14 | 2027-12-31 |  |  |  |  |  |  |  |
| AS1969.11 |  | ABF - Dry out Fire | 74d | 2027-09-14 | 2027-12-13 | AS1962, AS11440 FS+12d | 13d | 0d | 4Commissioning | Cold trail & First metal out | Commissioning |  |
| AS1969.06 |  | Short-circuit test Transformer-5 | 2d | 2027-10-14 | 2027-10-15 | AS1959.68 | 11d | 12d |  |  |  | GEV |
| AS1969.05 |  | Short-circuit test Transformer-4 | 3d | 2027-10-15 | 2027-10-18 | AS1959.48 | 9d | 10d |  |  |  | GEV |
| AS1969.31 |  | Production of green anodes in GAP | 25d | 2027-10-18 | 2027-11-17 | AS1961 | 10d | 11d | 4Commissioning | Cold trail & First metal out | Commissioning |  |
| AS1969.04 |  | Short-circuit test Transformer-3 | 2d | 2027-10-19 | 2027-10-20 | AS1959.28 | 7d | 8d |  |  |  | GEV |
| AS1969.02 |  | Short-circuit test Transformer-1 | 2d | 2027-10-20 | 2027-10-21 | AS1959.06 | 6d | 7d |  |  |  | GEV |
| AS1969.03 |  | Short-circuit test Transformer-2 | 2d | 2027-10-21 | 2027-10-22 | AS1959.08 | 5d | 6d |  |  |  | GEV |
| AS1969.21 |  | ABF - Production Fire | 18d | 2027-10-22 | 2027-11-13 | AS1969.11 SS+31d | 13d | 14d | 4Commissioning | Cold trail & First metal out | Commissioning |  |
| AS1969.01 |  | Short circuit test | 25d | 2027-11-01 | 2027-11-30 | AS1958, AS1959, AS8240, AS11355, AS11365, AS1969.02, AS1969.03, AS1969.04, AS1969.05, AS1969.06 | -1d | 0d | 4Commissioning | Cold trail & First metal out | Commissioning |  |
| AS1970 |  | Cold trial & First metal out | 26d | 2027-12-01 | 2027-12-31 | AS1961, AS1960, AS1957, AS1962, AS1963, AS1964, AS1965, AS1969.01, AS1969.21, A1650, A1700, A1800, A1850, A1900, A1950, A2000, A2100, A2250, AS1964.1, AS1969.31, AS5330, AS9681 | -1d | 0d | 4Commissioning | Cold trail & First metal out | Commissioning |  |
|  | APC | **All pot commissioing** |  | 2028-01-01 | 2028-03-31 |  |  |  |  |  |  |  |
| AS1980 |  | All pot commissioning | 75d | 2028-01-01 | 2028-03-31 | AS1970 | -1d | 0d | 4Commissioning | All pot commissioning | Commissioning |  |

Notes:
- AS1969.21: Notes: The production fire started mid of the dry out fire as adviced by project lead.
